# CCBMER Bulk File Handler Receiving

Schedule from MS Project, 2009-11-02 to 2010-04-13, A marks actual dates.

## Calendars

- Standard: Mon-Fri 08:00-12:00, 13:00-17:00; Sat-Sun off.

## Schedule

| ID | WBS | Task | Duration | Start | Finish | Predecessors | Complete | Remaining | Total slack | Free slack | Constraint |
| --- | --- | --- | --- | --- | --- | --- | --- | --- | --- | --- | --- |
| 1 | 1 | **Bulk File Handler Receiving** | 117d | 2009-11-02 08:00 A | 2010-04-13 17:00 |  | 1% | 115.57d | 131d |  |  |
| 2 | 1.1 | **Technical Specifications** | 39.5d | 2009-11-02 08:00 A | 2009-12-25 12:00 |  | 3% | 38.33d | 208.5d |  |  |
| 3 | 1.1.1 | Overview | 4h | 2009-11-02 08:00 | 2009-11-02 12:00 |  |  |  | 240.5d | 0d |  |
| 4 | 1.1.2 | **Maintain CCBMER World** | 6d | 2009-11-16 08:00 A | 2009-11-23 17:00 |  | 21% | 4.72d | 232d |  |  |
| 5 | 1.1.2.1 | **180 Tables** | 6d | 2009-11-16 08:00 | 2009-11-23 17:00 |  |  |  | 232d |  |  |
| 6 | 1.1.2.1.1 | cbm_cmd_tabl | 1h | 2009-11-20 09:00 | 2009-11-20 10:00 | 50 |  |  | 233.5d | 0d | start no earlier than 2009-11-20 08:00 |
| 7 | 1.1.2.1.2 | cbm_crea_tabl | 1h | 2009-11-20 10:00 | 2009-11-20 11:00 | 6 |  |  | 233.5d | 0d | start no earlier than 2009-11-20 08:00 |
| 8 | 1.1.2.1.3 | cbm_run_tabl | 1h | 2009-11-20 11:00 | 2009-11-20 12:00 | 7 |  |  | 233.5d |  | start no earlier than 2009-11-20 08:00 |
| 9 | 1.1.2.1.4 | **cbm_func_warn** | 1.12d | 2009-11-16 08:00 | 2009-11-17 09:00 |  |  |  | 236.88d |  |  |
| 10 | 1.1.2.1.4.1 | 170 Sequence | 1h | 2009-11-16 08:00 | 2009-11-16 09:00 |  |  |  | 236.88d | 0d | start no earlier than 2009-11-16 08:00 |
| 11 | 1.1.2.1.4.2 | 180 Table | 4h | 2009-11-16 09:00 | 2009-11-16 14:00 | 10 |  |  | 236.88d | 0d | start no earlier than 2009-11-16 08:00 |
| 12 | 1.1.2.1.4.3 | 210 Indexes | 1h | 2009-11-16 14:00 | 2009-11-16 15:00 | 11 |  |  | 236.88d | 0d | start no earlier than 2009-11-16 08:00 |
| 13 | 1.1.2.1.4.4 | 220 Constraints | 1h | 2009-11-16 15:00 | 2009-11-16 16:00 | 12 |  |  | 236.88d | 0d | start no earlier than 2009-11-16 08:00 |
| 14 | 1.1.2.1.4.5 | 280 Triggers | 1h | 2009-11-16 16:00 | 2009-11-16 17:00 | 13 |  |  | 236.88d | 0d | start no earlier than 2009-11-16 08:00 |
| 15 | 1.1.2.1.4.6 | 310 Schema Post Deployment | 1h | 2009-11-17 08:00 | 2009-11-17 09:00 | 14 |  |  | 236.88d |  | start no earlier than 2009-11-16 08:00 |
| 16 | 1.1.2.1.5 | **cbm_process_control** | 1.75d | 2009-11-16 08:00 | 2009-11-17 15:00 |  |  |  | 236.25d |  |  |
| 17 | 1.1.2.1.5.1 | 170 Sequence | 1h | 2009-11-16 08:00 | 2009-11-16 09:00 |  |  |  | 236.25d | 0d | start no earlier than 2009-11-16 08:00 |
| 18 | 1.1.2.1.5.2 | 180 Table | 4h | 2009-11-16 09:00 | 2009-11-16 14:00 | 17 |  |  | 236.25d | 0d | start no earlier than 2009-11-16 08:00 |
| 19 | 1.1.2.1.5.3 | 210 Indexes | 1h | 2009-11-16 14:00 | 2009-11-16 15:00 | 18 |  |  | 236.88d | 0d | start no earlier than 2009-11-16 08:00 |
| 20 | 1.1.2.1.5.4 | 220 Constraints | 1h | 2009-11-16 15:00 | 2009-11-16 16:00 | 19 |  |  | 236.88d | 0d | start no earlier than 2009-11-16 08:00 |
| 21 | 1.1.2.1.5.5 | 280 Triggers | 1h | 2009-11-16 16:00 | 2009-11-16 17:00 | 20 |  |  | 236.88d | 0.62d | start no earlier than 2009-11-16 08:00 |
| 22 | 1.1.2.1.5.6 | **310 Schema Post Deployment** | 0.12d | 2009-11-17 14:00 | 2009-11-17 15:00 | 21 |  |  | 236.25d |  |  |
| 23 | 1.1.2.1.5.6.1 | Forklift (FL) | 15min | 2009-11-17 14:00 | 2009-11-17 14:15 | 27 |  |  | 236.25d | 0d |  |
| 24 | 1.1.2.1.5.6.2 | Sorter (SO) | 15min | 2009-11-17 14:15 | 2009-11-17 14:30 | 23 |  |  | 236.25d | 0d |  |
| 25 | 1.1.2.1.5.6.3 | Cataloger (CT) | 15min | 2009-11-17 14:30 | 2009-11-17 14:45 | 24 |  |  | 236.25d | 0d |  |
| 26 | 1.1.2.1.5.6.4 | Stocker (ST) | 15min | 2009-11-17 14:45 | 2009-11-17 15:00 | 25 |  |  | 236.25d |  |  |

Notes:
- 2: III. ~ Overview of Technical Specifications of Overall System
- 3: III.A ~
- 23: What if there is more an one?
- 24: What if there is more an one?
- 25: What if there is more an one?
- 26: What if there is more an one?

| ID | WBS | Task | Duration | Start | Finish | Predecessors | Total slack | Free slack | Constraint |
| --- | --- | --- | --- | --- | --- | --- | --- | --- | --- |
| 27 | 1.1.2.1.5.7 | **cbm_process_control_audt** | 1d | 2009-11-16 14:00 | 2009-11-17 14:00 |  | 236.25d | 0d |  |
| 28 | 1.1.2.1.5.7.1 | 170 Sequence | 1h | 2009-11-16 14:00 | 2009-11-16 15:00 | 18 | 236.25d | 0d | start no earlier than 2009-09-16 08:00 |
| 29 | 1.1.2.1.5.7.2 | 180 Table | 4h | 2009-11-16 15:00 | 2009-11-17 10:00 | 28 | 236.25d | 0d |  |
| 30 | 1.1.2.1.5.7.3 | 210 Indexes | 1h | 2009-11-17 10:00 | 2009-11-17 11:00 | 29 | 236.25d | 0d |  |
| 31 | 1.1.2.1.5.7.4 | 220 Constraints | 1h | 2009-11-17 11:00 | 2009-11-17 12:00 | 30 | 236.25d | 0d |  |
| 32 | 1.1.2.1.5.7.5 | 280 Triggers | 1h | 2009-11-17 13:00 | 2009-11-17 14:00 | 31 | 236.25d |  |  |
| 33 | 1.1.2.1.6 | cbm_process_log | 1h | 2009-11-20 08:00 | 2009-11-20 09:00 |  | 233.88d |  | start no earlier than 2009-11-20 08:00 |
| 34 | 1.1.2.1.7 | **cbm_process_ref** | 6d | 2009-11-16 08:00 | 2009-11-23 17:00 |  | 232d |  |  |
| 35 | 1.1.2.1.7.1 | 170 Sequence | 1h | 2009-11-16 08:00 | 2009-11-16 09:00 |  | 236.38d | 0d | start no earlier than 2009-11-16 08:00 |
| 36 | 1.1.2.1.7.2 | 180 Table | 4h | 2009-11-16 09:00 | 2009-11-16 14:00 | 35 | 236.38d | 0d | start no earlier than 2009-11-16 08:00 |
| 37 | 1.1.2.1.7.3 | 210 Indexes | 1h | 2009-11-16 14:00 | 2009-11-16 15:00 | 36 | 236.88d | 0d | start no earlier than 2009-11-16 08:00 |
| 38 | 1.1.2.1.7.4 | 220 Constraints | 1h | 2009-11-16 15:00 | 2009-11-16 16:00 | 37 | 236.88d | 0d | start no earlier than 2009-11-16 08:00 |
| 39 | 1.1.2.1.7.5 | 280 Triggers | 1h | 2009-11-16 16:00 | 2009-11-16 17:00 | 38 | 236.88d | 0d | start no earlier than 2009-11-16 08:00 |
| 40 | 1.1.2.1.7.6 | 310 Schema Post Deployment | 1h | 2009-11-17 08:00 | 2009-11-17 09:00 | 39 | 236.88d |  | start no earlier than 2009-11-16 08:00 |
| 41 | 1.1.2.1.7.7 | **cbm_process_ref_audt** | 1d | 2009-11-23 08:00 | 2009-11-23 17:00 |  | 232d |  |  |
| 42 | 1.1.2.1.7.7.1 | 170 Sequence | 1h | 2009-11-23 08:00 | 2009-11-23 09:00 | 36 | 232d | 0d | start no earlier than 2009-11-23 08:00 |
| 43 | 1.1.2.1.7.7.2 | 180 Table | 4h | 2009-11-23 09:00 | 2009-11-23 14:00 | 42 | 232d | 0d |  |
| 44 | 1.1.2.1.7.7.3 | 210 Indexes | 1h | 2009-11-23 14:00 | 2009-11-23 15:00 | 43 | 232d | 0d |  |
| 45 | 1.1.2.1.7.7.4 | 220 Constraints | 1h | 2009-11-23 15:00 | 2009-11-23 16:00 | 44 | 232d | 0d |  |
| 46 | 1.1.2.1.7.7.5 | 280 Triggers | 1h | 2009-11-23 16:00 | 2009-11-23 17:00 | 45 | 232d |  |  |
| 47 | 1.1.2.1.8 | cbm_processes | 1h | 2009-11-20 08:00 | 2009-11-20 09:00 |  | 233.88d |  | start no earlier than 2009-11-20 08:00 |
| 48 | 1.1.2.1.9 | cbm_processes_hist | 1h | 2009-11-20 08:00 | 2009-11-20 09:00 |  | 233.88d |  | start no earlier than 2009-11-20 08:00 |
| 49 | 1.1.2.1.10 | cbm_tab_size_trk | 1h | 2009-11-20 08:00 | 2009-11-20 09:00 |  | 233.88d |  | start no earlier than 2009-11-20 08:00 |
| 50 | 1.1.2.1.11 | cbm_tabl_ref | 1h | 2009-11-20 08:00 | 2009-11-20 09:00 |  | 233.5d | 0d | start no earlier than 2009-11-20 08:00 |
| 51 | 1.1.2.1.12 | cbm_tabl_ref_audt | 1h | 2009-11-20 09:00 | 2009-11-20 10:00 | 50 | 233.75d |  | start no earlier than 2009-11-20 08:00 |

Notes:
- 47: Do we realy need this table? If we really need this can we just write a view using cbm_process_log?

| ID | WBS | Task | Duration | Start | Finish | Predecessors | Complete | Remaining | Total slack | Free slack | Constraint |
| --- | --- | --- | --- | --- | --- | --- | --- | --- | --- | --- | --- |
| 52 | 1.1.2.1.13 | **std_cbm_debug_tbl** | 1.12d | 2009-11-16 08:00 | 2009-11-17 09:00 |  |  |  | 236.88d |  |  |
| 53 | 1.1.2.1.13.1 | 170 Sequence | 1h | 2009-11-16 08:00 | 2009-11-16 09:00 |  |  |  | 236.88d | 0d | start no earlier than 2009-11-16 08:00 |
| 54 | 1.1.2.1.13.2 | 180 Table | 4h | 2009-11-16 09:00 | 2009-11-16 14:00 | 53 |  |  | 236.88d | 0d | start no earlier than 2009-11-16 08:00 |
| 55 | 1.1.2.1.13.3 | 210 Indexes | 1h | 2009-11-16 14:00 | 2009-11-16 15:00 | 54 |  |  | 236.88d | 0d | start no earlier than 2009-11-16 08:00 |
| 56 | 1.1.2.1.13.4 | 220 Constraints | 1h | 2009-11-16 15:00 | 2009-11-16 16:00 | 55 |  |  | 236.88d | 0d | start no earlier than 2009-11-16 08:00 |
| 57 | 1.1.2.1.13.5 | 280 Triggers | 1h | 2009-11-16 16:00 | 2009-11-16 17:00 | 56 |  |  | 236.88d | 0d | start no earlier than 2009-11-16 08:00 |
| 58 | 1.1.2.1.13.6 | 310 Schema Post Deployment | 1h | 2009-11-17 08:00 | 2009-11-17 09:00 | 57 |  |  | 236.88d |  | start no earlier than 2009-11-16 08:00 |
| 59 | 1.1.2.2 | **260 Functions** | 0.12d | 2009-11-23 08:00 A | 2009-11-23 09:00 A |  | 100% |  |  |  |  |
| 60 | 1.1.2.2.1 | cbm_get_prcss_cntrl_id | 1h | 2009-11-23 08:00 A | 2009-11-23 09:00 A |  | 100% |  |  |  | finish no earlier than 2009-09-15 17:00 |
| 61 | 1.1.2.2.2 | cbm_get_prcss_run_val | 1h | 2009-11-23 08:00 A | 2009-11-23 09:00 A |  | 100% |  |  |  | start no earlier than 2009-09-09 08:00 |
| 62 | 1.1.2.2.3 | run_today | 1h | 2009-11-23 08:00 A | 2009-11-23 09:00 A |  | 100% |  |  |  | finish no earlier than 2009-09-15 17:00 |
| 63 | 1.1.2.3 | **270 Procedures** | 0.38d | 2009-11-23 08:00 A | 2009-11-23 11:00 |  | 88% | 0.05d | 232.62d |  |  |
| 64 | 1.1.2.3.1 | **maintain_cbm_world** | 0.38d | 2009-11-23 08:00 A | 2009-11-23 11:00 |  | 88% | 0.05d | 232.62d |  |  |
| 65 | 1.1.2.3.1.1 | maintain_cbm_world | 2h | 2009-11-23 09:00 | 2009-11-23 11:00 | 59 |  |  | 232.62d |  |  |
| 66 | 1.1.2.3.1.2 | cbm_insupd_processlog | 2h | 2009-11-23 08:00 A | 2009-11-23 10:00 A | 59 | 100% |  |  |  | finish no earlier than 2009-09-15 17:00 |
| 67 | 1.1.2.3.1.3 | get_cbm_process_info | 2h | 2009-11-23 08:00 A | 2009-11-23 10:00 A | 59 | 100% |  |  |  | finish no earlier than 2009-09-15 17:00 |
| 68 | 1.1.2.3.1.4 | updt_cbm_processes | 2h | 2009-11-23 08:00 A | 2009-11-23 10:00 A | 59 | 100% |  |  |  | finish no earlier than 2009-09-15 17:00 |
| 69 | 1.1.2.3.1.5 | cbm_log_cleanup | 2h | 2009-11-23 08:00 A | 2009-11-23 10:00 A | 59 | 100% |  |  |  | finish no earlier than 2009-09-15 17:00 |
| 70 | 1.1.2.3.1.6 | cbm_debugtbl_cleanup | 2h | 2009-11-23 08:00 A | 2009-11-23 10:00 A | 59 | 100% |  |  |  | finish no earlier than 2009-09-15 17:00 |
| 71 | 1.1.2.3.1.7 | cleanup_weekly | 2h | 2009-11-23 08:00 A | 2009-11-23 10:00 A | 59 | 100% |  |  |  | finish no earlier than 2009-09-15 17:00 |
| 72 | 1.1.2.3.1.8 | table_size_tracking | 2h | 2009-11-23 08:00 A | 2009-11-23 10:00 A | 59 | 100% |  |  |  | finish no earlier than 2009-09-15 17:00 |
| 77 | 1.1.3 | **Component Definition** | 7.5d | 2009-11-02 08:00 | 2009-11-11 12:00 |  |  |  | 208.5d |  |  |
| 78 | 1.1.3.1 | **Directory Architecture** | 1d | 2009-11-02 13:00 | 2009-11-03 12:00 |  |  |  | 240.5d |  |  |
| 79 | 1.1.3.1.1 | Bulk Management Process Directory Architecture | 4h | 2009-11-02 13:00 | 2009-11-02 17:00 | 3 |  |  | 240.5d | 0d |  |
| 80 | 1.1.3.1.2 | Long Term Storage Directory and Maintenance | 4h | 2009-11-03 08:00 | 2009-11-03 12:00 | 79 |  |  | 240.5d | 0d |  |

Notes:
- 77: III.B ~ Definition of projected directory design to hold the bulk files. Backup methodology trade-offs, aging of files, roll off process are covered here.
- 78: III.B.1 ~ For each process that is built dynamically there is a template
- 79: III.B.1.a - This is the definition of the directory structure for the Bulk File Management System where each process has its on directory and has the knowledge of the directory where it should put the file when it's processing is complete.
- 80: III.B.1.b - Definition of the Long Term Storage and Directory structure. Included here will be a full discussion on the long term maintenance and aging of the files.

| ID | WBS | Task | Duration | Start | Finish | Predecessors | Total slack | Free slack |
| --- | --- | --- | --- | --- | --- | --- | --- | --- |
| 81 | 1.1.3.2 | **Template Definition** | 6d | 2009-11-03 13:00 | 2009-11-11 12:00 |  | 240.5d |  |
| 82 | 1.1.3.2.1 | **Forklift** | 1.5d | 2009-11-03 13:00 | 2009-11-04 17:00 |  | 240.5d |  |
| 83 | 1.1.3.2.1.1 | Library Functions (common) | 4h | 2009-11-03 13:00 | 2009-11-03 17:00 | 80 | 240.5d | 0d |
| 84 | 1.1.3.2.1.2 | Library Functions (unique) | 4h | 2009-11-04 08:00 | 2009-11-04 12:00 | 83 | 240.5d | 0d |
| 85 | 1.1.3.2.1.3 | Template defintion with detailed documentation | 4h | 2009-11-04 13:00 | 2009-11-04 17:00 | 84 | 240.5d | 0d |
| 86 | 1.1.3.2.2 | **Sorter** | 1.5d | 2009-11-05 08:00 | 2009-11-06 12:00 |  | 240.5d |  |
| 87 | 1.1.3.2.2.1 | Library Functions (common) | 4h | 2009-11-05 08:00 | 2009-11-05 12:00 | 85 | 240.5d | 0d |
| 88 | 1.1.3.2.2.2 | Library Functions (unique) | 4h | 2009-11-05 13:00 | 2009-11-05 17:00 | 87 | 240.5d | 0d |
| 89 | 1.1.3.2.2.3 | Template defintion with detailed documentation | 4h | 2009-11-06 08:00 | 2009-11-06 12:00 | 88 | 240.5d | 0d |
| 90 | 1.1.3.2.3 | **Cataloger** | 1.5d | 2009-11-06 13:00 | 2009-11-09 17:00 |  | 240.5d |  |
| 91 | 1.1.3.2.3.1 | Library Functions (common) | 4h | 2009-11-06 13:00 | 2009-11-06 17:00 | 89 | 240.5d | 0d |
| 92 | 1.1.3.2.3.2 | Library Functions (unique) | 4h | 2009-11-09 08:00 | 2009-11-09 12:00 | 91 | 240.5d | 0d |
| 93 | 1.1.3.2.3.3 | Template defintion with detailed documentation | 4h | 2009-11-09 13:00 | 2009-11-09 17:00 | 92 | 240.5d | 0d |
| 94 | 1.1.3.2.4 | **Stocker** | 1.5d | 2009-11-10 08:00 | 2009-11-11 12:00 |  | 240.5d |  |
| 95 | 1.1.3.2.4.1 | Library Functions (common) | 4h | 2009-11-10 08:00 | 2009-11-10 12:00 | 93 | 240.5d | 0d |
| 96 | 1.1.3.2.4.2 | Library Functions (unique) | 4h | 2009-11-10 13:00 | 2009-11-10 17:00 | 95 | 240.5d | 0d |
| 97 | 1.1.3.2.4.3 | Template defintion with detailed documentation | 4h | 2009-11-11 08:00 | 2009-11-11 12:00 | 96 | 240.5d |  |
| 98 | 1.1.3.3 | **Composer Defintion** | 7.5d | 2009-11-02 08:00 | 2009-11-11 12:00 |  | 208.5d |  |
| 99 | 1.1.3.3.1 | Control Tables | 4h | 2009-11-02 08:00 | 2009-11-02 12:00 |  | 208.5d | 0d |
| 100 | 1.1.3.3.2 | Library Modules | 4h | 2009-11-02 13:00 | 2009-11-02 17:00 | 99 | 208.5d | 0d |
| 101 | 1.1.3.3.3 | **Business Rule Manager** | 2.5d | 2009-11-03 08:00 | 2009-11-05 12:00 |  | 208.5d |  |
| 102 | 1.1.3.3.3.1 | GUID Definition | 4h | 2009-11-03 08:00 | 2009-11-03 12:00 | 100 | 208.5d | 0d |
| 103 | 1.1.3.3.3.2 | Control Table Interface | 4h | 2009-11-03 13:00 | 2009-11-03 17:00 | 102 | 208.5d | 0d |
| 104 | 1.1.3.3.3.3 | Business rule management for BRM | 4h | 2009-11-04 08:00 | 2009-11-04 12:00 | 103 | 208.5d | 0d |
| 105 | 1.1.3.3.3.4 | Test Procedures to test BRM | 4h | 2009-11-04 13:00 | 2009-11-04 17:00 | 104 | 208.5d | 0d |
| 106 | 1.1.3.3.3.5 | Documentation validation testing | 4h | 2009-11-05 08:00 | 2009-11-05 12:00 | 105 | 208.5d | 0d |

Notes:
- 81: III.B.2 ~ This template handles the different sources of incoming files
- 82: III.B.2.a ~ This template handles the re-direction of the files to the process that can actually tag the file within the CCBMWHER
- 83: III.B.2.a.i - Understand the common Library functions needed and identify them for this process
- 84: III.B.2.a.ii - Understand the unique functions that will be needed to create this process, defining the functions and the common library they should be placed. The functions should be defined, a test plan for the function, and the function development as
- 85: III.B.2.a.iii - This should be the complete template in the template format for a full defintion of each step and the calls and variables that need to be passed and recevied. This should include the common variable include file, plus the unique variables
- 86: III.B.2.b ~ This is the template for the processing that actually 1. rename the file 2. merge key data into the warehouse 3. create sub packages if needed
- 87: III.B.2.b.i - Understand the common Library functions needed and identify them for this process
- 88: III.B.2.b.ii - Understand the unique functions that will be needed to create this process, defining the functions and the common library they should be placed. The functions should be defined, a test plan for the function, and the function development as
- 89: III.B.2.b.iii - This should be the complete template in the template format for a full defintion of each step and the calls and variables that need to be passed and recevied. This should include the common variable include file, plus the unique variables
- 90: III.B.2.c ~ This template is the processing that takes the file(s) and moves them to long term storage.
- 91: III.B.2.c.i - Understand the common Library functions needed and identify them for this process
- 92: III.B.2.c.ii - Understand the unique functions that will be needed to create this process, defining the functions and the common library they should be placed. The functions should be defined, a test plan for the function, and the function development as
- 93: III.B.2.c.iii - This should be the complete template in the template format for a full defintion of each step and the calls and variables that need to be passed and recevied. This should include the common variable include file, plus the unique variables
- 94: III.B.2.d ~ This template is the process that retrieves various combination of files for transmission to the requestor.
- 95: III.B.2.d.i - Understand the common Library functions needed and identify them for this process
- 96: III.B.2.d.ii - Understand the unique functions that will be needed to create this process, defining the functions and the common library they should be placed. The functions should be defined, a test plan for the function, and the function development as
- 97: III.B.2.d.iii - This should be the complete template in the template format for a full defintion of each step and the calls and variables that need to be passed and recevied. This should include the common variable include file, plus the unique variables
- 98: III.B.3 ~ The control tables in the Oracle database are the business rules and code snippets that are used to define the code in the respective template.
- 99: III.B.3.a ~ The library modules are Perl (PM) libraries that provide the functions for the Composer and processes to do tasks. This allows for a single point of maintenance control for all the processes.
- 100: III.B.3.b ~ The business rule manager is the process that allows the functional management of the the business control rules for each of the build and processing processes.
- 101: III.B.3.c ~ This is the structure for the building of the composers for each area. It is a template for building the routines that build routines.
- 102: III.B.3.c.i - Define and build Screen(s) for interfacing with the control tables to manage the meta data for the application
- 103: III.B.3.c.ii - Oracle package to define the data management from the GUID in insert, update, and deleting(archiving) data in the metadata control tables
- 104: III.B.3.c.iii - Business rule defintion for managing the BRM within the system
- 105: III.B.3.c.iv - Test processes to fully test the BRM as it is being built , during testing, and deployment.
- 106: III.B.3.c.v - Documentation of the validiation testing

| ID | WBS | Task | Duration | Start | Finish | Predecessors | Total slack | Free slack |
| --- | --- | --- | --- | --- | --- | --- | --- | --- |
| 107 | 1.1.3.3.4 | **Composer Structure** | 2d | 2009-11-05 13:00 | 2009-11-09 12:00 |  | 208.5d |  |
| 108 | 1.1.3.3.4.1 | Library Functions (common) | 4h | 2009-11-05 13:00 | 2009-11-05 17:00 | 106 | 208.5d | 0d |
| 109 | 1.1.3.3.4.2 | Library Functions (unique) | 4h | 2009-11-06 08:00 | 2009-11-06 12:00 | 108 | 208.5d | 0d |
| 110 | 1.1.3.3.4.3 | Template defintion with detailed documentation | 4h | 2009-11-06 13:00 | 2009-11-06 17:00 | 109 | 208.5d | 0d |
| 111 | 1.1.3.3.4.4 | Business Rules for Composer Level | 4h | 2009-11-09 08:00 | 2009-11-09 12:00 | 110 | 208.5d | 0d |
| 112 | 1.1.3.3.5 | **Composer Builder** | 2d | 2009-11-09 13:00 | 2009-11-11 12:00 |  | 208.5d | 0d |
| 113 | 1.1.3.3.5.1 | Library Functions (common) | 4h | 2009-11-09 13:00 | 2009-11-09 17:00 | 111 | 208.5d | 0d |
| 114 | 1.1.3.3.5.2 | Library Functions (unique) | 4h | 2009-11-10 08:00 | 2009-11-10 12:00 | 113 | 208.5d | 0d |
| 115 | 1.1.3.3.5.3 | Template defintion with detailed documentation | 4h | 2009-11-10 13:00 | 2009-11-10 17:00 | 114 | 208.5d | 0d |
| 116 | 1.1.3.3.5.4 | Business Rules for Composer Builder | 4h | 2009-11-11 08:00 | 2009-11-11 12:00 | 115 | 208.5d |  |
| 117 | 1.1.4 | **Test Defintion** | 39.5d | 2009-11-02 08:00 | 2009-12-25 12:00 |  | 131d |  |
| 118 | 1.1.4.1 | **Library Module Tests** | 2.5d | 2009-11-11 13:00 | 2009-11-13 17:00 |  | 208.5d |  |
| 119 | 1.1.4.1.1 | Define test requirements for each function | 4h | 2009-11-11 13:00 | 2009-11-11 17:00 | 112 | 208.5d | 0d |
| 120 | 1.1.4.1.2 | Define in / out bound test | 4h | 2009-11-12 08:00 | 2009-11-12 12:00 | 119 | 208.5d | 0d |
| 121 | 1.1.4.1.3 | Define exception test | 4h | 2009-11-12 13:00 | 2009-11-12 17:00 | 120 | 208.5d | 0d |
| 122 | 1.1.4.1.4 | Define Null test | 4h | 2009-11-13 08:00 | 2009-11-13 12:00 | 121 | 208.5d | 0d |
| 123 | 1.1.4.1.5 | Define Query test | 4h | 2009-11-13 13:00 | 2009-11-13 17:00 | 122 | 208.5d | 0d |
| 124 | 1.1.4.2 | **Control Table Tests** | 2.5d | 2009-11-16 08:00 | 2009-11-18 12:00 |  | 208.5d |  |
| 125 | 1.1.4.2.1 | Define test requirements for each table | 4h | 2009-11-16 08:00 | 2009-11-16 12:00 | 123 | 208.5d | 0d |
| 126 | 1.1.4.2.2 | Define in / out bound test | 4h | 2009-11-16 13:00 | 2009-11-16 17:00 | 125 | 208.5d | 0d |
| 127 | 1.1.4.2.3 | Define exception test | 4h | 2009-11-17 08:00 | 2009-11-17 12:00 | 126 | 208.5d | 0d |
| 128 | 1.1.4.2.4 | Define Null test | 4h | 2009-11-17 13:00 | 2009-11-17 17:00 | 127 | 208.5d | 0d |
| 129 | 1.1.4.2.5 | Define Query test | 4h | 2009-11-18 08:00 | 2009-11-18 12:00 | 128 | 208.5d | 0d |
| 130 | 1.1.4.3 | **Business Rule Manager Test** | 4d | 2009-11-18 13:00 | 2009-11-24 12:00 |  | 208.5d |  |
| 131 | 1.1.4.3.1 | Define test requirements for each function | 4h | 2009-11-18 13:00 | 2009-11-18 17:00 | 129 | 208.5d | 0d |
| 132 | 1.1.4.3.2 | Define in / out bound test | 4h | 2009-11-19 08:00 | 2009-11-19 12:00 | 131 | 208.5d | 0d |
| 133 | 1.1.4.3.3 | Define exception test | 4h | 2009-11-19 13:00 | 2009-11-19 17:00 | 132 | 208.5d | 0d |
| 134 | 1.1.4.3.4 | Define Null test | 4h | 2009-11-20 08:00 | 2009-11-20 12:00 | 133 | 208.5d | 0d |
| 135 | 1.1.4.3.5 | Define Query test | 4h | 2009-11-20 13:00 | 2009-11-20 17:00 | 134 | 208.5d | 0d |
| 136 | 1.1.4.3.6 | Define test for control on each field on GUID | 4h | 2009-11-23 08:00 | 2009-11-23 12:00 | 135 | 208.5d | 0d |
| 137 | 1.1.4.3.7 | Define test for in and out of range for each field | 4h | 2009-11-23 13:00 | 2009-11-23 17:00 | 136 | 208.5d | 0d |
| 138 | 1.1.4.3.8 | Define test for each control button on form | 4h | 2009-11-24 08:00 | 2009-11-24 12:00 | 137 | 208.5d | 0d |

Notes:
- 107: III.B.3.d ~ This is a set of processes that build the processes for managing the data.
- 108: III.B.3.d.i - Understand the common Library functions needed and identify them for this process
- 109: III.B.3.d.ii - Understand the unique functions that will be needed to create this process, defining the functions and the common library they should be placed. The functions should be defined, a test plan for the function, and the function development as
- 110: III.B.3.d.iii - This should be the complete template in the template format for a full defintion of each step and the calls and variables that need to be passed and recevied. This should include the common variable include file, plus the unique variables
- 111: III.B.3.d.iv - This section should define the business rules for the composer of processes. Ensuring that the controlled flow meets the security and business rules necessary for metadata development.
- 112: III.B.3.e ~
- 113: III.B.3.e.i - Understand the common Library functions needed and identify them for this process
- 114: III.B.3.e.ii - Understand the unique functions that will be needed to create this process, defining the functions and the common library they should be placed. The functions should be defined, a test plan for the function, and the function development as
- 115: III.B.3.e.iii - This should be the complete template in the template format for a full defintion of each step and the calls and variables that need to be passed and recevied. This should include the common variable include file, plus the unique variables
- 116: III.B.3.e.iv - This section should define the business rules for the composer builder of composers. Ensuring that the controlled flow meets the security and business rules necessary for metadata development.
- 117: III.C ~ Tests plan to test each routine in the libraries to ensure that it functions as designed.
- 118: III.C.1 ~ Tests the data, constraints, and structure of the control tables to ensure they meets all requirements.
- 119: III.C.1.a - What is expected for each area
- 120: III.C.1.b - define a set of test with correct inputs and incorrect inputs
- 121: III.C.1.c - define test to return exception not defined above
- 122: III.C.1.d - define null test and response
- 123: III.C.1.e - define query test if appropriate
- 124: III.C.2 ~ The business rule manager test system is a complete test suite of data, form, and use.
- 125: III.C.2.a - What is expected for each area
- 126: III.C.2.b - define a set of test with correct inputs and incorrect inputs
- 127: III.C.2.c - define test to return exception not defined above
- 128: III.C.2.d - define null test and response
- 129: III.C.2.e - define query test if appropriate
- 130: III.C.3 ~ The warehouse manager test tests all the procedures and functions that are involved witht the Warehouse manager package.
- 131: III.C.3.a - What is expected for each area
- 132: III.C.3.b - define a set of test with correct inputs and incorrect inputs
- 133: III.C.3.c - define test to return exception not defined above
- 134: III.C.3.d - define null test and response
- 135: III.C.3.e - define query test if appropriate
- 136: III.C.3.f - define tests for each GUID field control
- 137: III.C.3.g - define tests for each GUID field control in and out of range
- 138: III.C.3.h - define test for each control button on screen

| ID | WBS | Task | Duration | Start | Finish | Predecessors | Total slack | Free slack |
| --- | --- | --- | --- | --- | --- | --- | --- | --- |
| 139 | 1.1.4.4 | **Warehouse Manager Test** | 4d | 2009-11-24 13:00 | 2009-11-30 12:00 |  | 208.5d |  |
| 140 | 1.1.4.4.1 | Define test requirements for each function or procedure in package | 4h | 2009-11-24 13:00 | 2009-11-24 17:00 | 138 | 208.5d | 0d |
| 141 | 1.1.4.4.2 | Define in / out bound test | 4h | 2009-11-25 08:00 | 2009-11-25 12:00 | 140 | 208.5d | 0d |
| 142 | 1.1.4.4.3 | Define exception test | 4h | 2009-11-25 13:00 | 2009-11-25 17:00 | 141 | 208.5d | 0d |
| 143 | 1.1.4.4.4 | Define Null test | 4h | 2009-11-26 08:00 | 2009-11-26 12:00 | 142 | 208.5d | 0d |
| 144 | 1.1.4.4.5 | Define Query test | 4h | 2009-11-26 13:00 | 2009-11-26 17:00 | 143 | 208.5d | 0d |
| 145 | 1.1.4.4.6 | Define test for each interaction between functions and procedures in package | 4h | 2009-11-27 08:00 | 2009-11-27 12:00 | 144 | 208.5d | 0d |
| 146 | 1.1.4.4.7 | Define test for each cursor or query to database | 4h | 2009-11-27 13:00 | 2009-11-27 17:00 | 145 | 208.5d | 0d |
| 147 | 1.1.4.4.8 | Define test for each exception defined in package | 4h | 2009-11-30 08:00 | 2009-11-30 12:00 | 146 | 208.5d | 0d |
| 148 | 1.1.4.5 | **Composer Test** | 5d | 2009-11-30 13:00 | 2009-12-07 12:00 |  | 208.5d |  |
| 149 | 1.1.4.5.1 | Define test requirements for each function | 4h | 2009-11-30 13:00 | 2009-11-30 17:00 | 147 | 208.5d | 0d |
| 150 | 1.1.4.5.2 | Define in / out bound test | 4h | 2009-12-01 08:00 | 2009-12-01 12:00 | 149 | 208.5d | 0d |
| 151 | 1.1.4.5.3 | Define exception test | 4h | 2009-12-01 13:00 | 2009-12-01 17:00 | 150 | 208.5d | 0d |
| 152 | 1.1.4.5.4 | Define Null test | 4h | 2009-12-02 08:00 | 2009-12-02 12:00 | 151 | 208.5d | 0d |
| 153 | 1.1.4.5.5 | Define Query test | 4h | 2009-12-02 13:00 | 2009-12-02 17:00 | 152 | 208.5d | 0d |
| 154 | 1.1.4.5.6 | Define create and compile tests for exception handling | 4h | 2009-12-03 08:00 | 2009-12-03 12:00 | 153 | 208.5d | 0d |
| 155 | 1.1.4.5.7 | Define tests for each exception and control | 4h | 2009-12-03 13:00 | 2009-12-03 17:00 | 154 | 208.5d | 0d |
| 156 | 1.1.4.5.8 | Define tests for execution of composer and execpted function | 4h | 2009-12-04 08:00 | 2009-12-04 12:00 | 155 | 208.5d | 0d |
| 157 | 1.1.4.5.9 | Define test for Perl Strict control | 4h | 2009-12-04 13:00 | 2009-12-04 17:00 | 156 | 208.5d | 0d |
| 158 | 1.1.4.5.10 | Define test for missing libraries | 4h | 2009-12-07 08:00 | 2009-12-07 12:00 | 157 | 208.5d | 0d |
| 159 | 1.1.4.6 | **Components Tests** | 14d | 2009-12-07 13:00 | 2009-12-25 12:00 |  | 208.5d |  |
| 160 | 1.1.4.6.1 | **For each component test timer control** | 2d | 2009-12-07 13:00 | 2009-12-09 12:00 |  | 208.5d |  |
| 161 | 1.1.4.6.1.1 | Forklift (FL) | 4h | 2009-12-07 13:00 | 2009-12-07 17:00 | 158 | 208.5d | 0d |
| 162 | 1.1.4.6.1.2 | Sorter (SO) | 4h | 2009-12-08 08:00 | 2009-12-08 12:00 | 161 | 208.5d | 0d |
| 163 | 1.1.4.6.1.3 | Cataloger (CT) | 4h | 2009-12-08 13:00 | 2009-12-08 17:00 | 162 | 208.5d | 0d |
| 164 | 1.1.4.6.1.4 | Stocker (ST) | 4h | 2009-12-09 08:00 | 2009-12-09 12:00 | 163 | 208.5d | 0d |

Notes:
- 139: III.C.4 ~ These tests are designed to handle the composition of the composers and the component builders
- 140: III.C.4.a - What is expected for each area
- 141: III.C.4.b - define a set of test with correct inputs and incorrect inputs
- 142: III.C.4.c - define test to return exception not defined above
- 143: III.C.4.d - define null test and response
- 144: III.C.4.e - define query test if appropriate
- 145: III.C.4.f - define functional interaction tests
- 146: III.C.4.g - define cursor and query tests
- 147: III.C.4.h - define tests to try each exception and expected error condition
- 148: III.C.5 ~ These tests are designed to test all the functionality of each of the components according to the business rules (meta data) that is defined in the control tables.
- 149: III.C.5.a - What is expected for each area
- 150: III.C.5.b - define a set of test with correct inputs and incorrect inputs
- 151: III.C.5.c - define test to return exception not defined above
- 152: III.C.5.d - define null test and response
- 153: III.C.5.e - define query test if appropriate
- 154: III.C.5.f - Define create and compile tests for exception handling
- 155: III.C.5.g - Define tests for each exception and control
- 156: III.C.5.h - Define tests for execution of composer and execpted function
- 157: III.C.5.i - Define test for Perl Strict control
- 158: III.C.5.j - Define test for missing libraries
- 159: III.C.6 ~ This is a suite of tests to test the Bulk warehouse management system from end to end.
- 160: III.C.6.a - This tests the sleep timer algorithm for responsiveness
- 161: III.C.6.a.i -
- 162: III.C.6.a.ii -
- 163: III.C.6.a.iii -
- 164: III.C.6.a.iv -

| ID | WBS | Task | Duration | Start | Finish | Predecessors | Total slack | Free slack |
| --- | --- | --- | --- | --- | --- | --- | --- | --- |
| 165 | 1.1.4.6.2 | **For each component test each move file** | 2d | 2009-12-09 13:00 | 2009-12-11 12:00 |  | 208.5d |  |
| 166 | 1.1.4.6.2.1 | Forklift (FL) | 4h | 2009-12-09 13:00 | 2009-12-09 17:00 | 164 | 208.5d | 0d |
| 167 | 1.1.4.6.2.2 | Sorter (SO) | 4h | 2009-12-10 08:00 | 2009-12-10 12:00 | 166 | 208.5d | 0d |
| 168 | 1.1.4.6.2.3 | Cataloger (CT) | 4h | 2009-12-10 13:00 | 2009-12-10 17:00 | 167 | 208.5d | 0d |
| 169 | 1.1.4.6.2.4 | Stocker (ST) | 4h | 2009-12-11 08:00 | 2009-12-11 12:00 | 168 | 208.5d | 0d |
| 170 | 1.1.4.6.3 | **For each component test each library call** | 2d | 2009-12-11 13:00 | 2009-12-15 12:00 |  | 208.5d |  |
| 171 | 1.1.4.6.3.1 | Forklift (FL) | 4h | 2009-12-11 13:00 | 2009-12-11 17:00 | 169 | 208.5d | 0d |
| 172 | 1.1.4.6.3.2 | Sorter (SO) | 4h | 2009-12-14 08:00 | 2009-12-14 12:00 | 171 | 208.5d | 0d |
| 173 | 1.1.4.6.3.3 | Cataloger (CT) | 4h | 2009-12-14 13:00 | 2009-12-14 17:00 | 172 | 208.5d | 0d |
| 174 | 1.1.4.6.3.4 | Stocker (ST) | 4h | 2009-12-15 08:00 | 2009-12-15 12:00 | 173 | 208.5d | 0d |
| 175 | 1.1.4.6.4 | **For each component test each database call** | 2d | 2009-12-15 13:00 | 2009-12-17 12:00 |  | 208.5d |  |
| 176 | 1.1.4.6.4.1 | Forklift (FL) | 4h | 2009-12-15 13:00 | 2009-12-15 17:00 | 174 | 208.5d | 0d |
| 177 | 1.1.4.6.4.2 | Sorter (SO) | 4h | 2009-12-16 08:00 | 2009-12-16 12:00 | 176 | 208.5d | 0d |
| 178 | 1.1.4.6.4.3 | Cataloger (CT) | 4h | 2009-12-16 13:00 | 2009-12-16 17:00 | 177 | 208.5d | 0d |
| 179 | 1.1.4.6.4.4 | Stocker (ST) | 4h | 2009-12-17 08:00 | 2009-12-17 12:00 | 178 | 208.5d | 0d |
| 180 | 1.1.4.6.5 | **For each component test each execute/system call** | 2d | 2009-12-17 13:00 | 2009-12-21 12:00 |  | 208.5d |  |
| 181 | 1.1.4.6.5.1 | Forklift (FL) | 4h | 2009-12-17 13:00 | 2009-12-17 17:00 | 179 | 208.5d | 0d |
| 182 | 1.1.4.6.5.2 | Sorter (SO) | 4h | 2009-12-18 08:00 | 2009-12-18 12:00 | 181 | 208.5d | 0d |
| 183 | 1.1.4.6.5.3 | Cataloger (CT) | 4h | 2009-12-18 13:00 | 2009-12-18 17:00 | 182 | 208.5d | 0d |
| 184 | 1.1.4.6.5.4 | Stocker (ST) | 4h | 2009-12-21 08:00 | 2009-12-21 12:00 | 183 | 208.5d | 0d |
| 185 | 1.1.4.6.6 | **For each component test compliation on creation** | 2d | 2009-12-21 13:00 | 2009-12-23 12:00 |  | 208.5d |  |
| 186 | 1.1.4.6.6.1 | Forklift (FL) | 4h | 2009-12-21 13:00 | 2009-12-21 17:00 | 184 | 208.5d | 0d |
| 187 | 1.1.4.6.6.2 | Sorter (SO) | 4h | 2009-12-22 08:00 | 2009-12-22 12:00 | 186 | 208.5d | 0d |
| 188 | 1.1.4.6.6.3 | Cataloger (CT) | 4h | 2009-12-22 13:00 | 2009-12-22 17:00 | 187 | 208.5d | 0d |
| 189 | 1.1.4.6.6.4 | Stocker (ST) | 4h | 2009-12-23 08:00 | 2009-12-23 12:00 | 188 | 208.5d | 0d |

Notes:
- 165: III.C.6.b - This tests the permissions and access for moving files the module is responsible to move records.
- 166: III.C.6.b.i -
- 167: III.C.6.b.ii -
- 168: III.C.6.b.iii -
- 169: III.C.6.b.iv -
- 170: III.C.6.c - This tests each library call within a module, there will be several of these calls and each should be tested
- 171: III.C.6.c.i - This tests each library call within a module, there will be several of these calls and each should be tested
- 172: III.C.6.c.ii - This tests each library call within a module, there will be several of these calls and each should be tested
- 173: III.C.6.c.iii - This tests each library call within a module, there will be several of these calls and each should be tested
- 174: III.C.6.c.iv - This tests each library call within a module, there will be several of these calls and each should be tested
- 175: III.C.6.d - Since most of the processes need to call the database to post or retrieve information in order to function, each call needs a test to ensure that the data passes cleanly.
- 176: III.C.6.d.i - Since most of the processes need to call the database to post or retrieve information in order to function, each call needs a test to ensure that the data passes cleanly.
- 177: III.C.6.d.ii - Since most of the processes need to call the database to post or retrieve information in order to function, each call needs a test to ensure that the data passes cleanly.
- 178: III.C.6.d.iii - Since most of the processes need to call the database to post or retrieve information in order to function, each call needs a test to ensure that the data passes cleanly.
- 179: III.C.6.d.iv - Since most of the processes need to call the database to post or retrieve information in order to function, each call needs a test to ensure that the data passes cleanly.
- 180: III.C.6.e - Since these modules will make calls to for commands to separate process each of these system calls will need to be tested.
- 181: III.C.6.e.i - Since these modules will make calls to for commands to separate process each of these system calls will need to be tested.
- 182: III.C.6.e.ii - Since these modules will make calls to for commands to separate process each of these system calls will need to be tested.
- 183: III.C.6.e.iii - Since these modules will make calls to for commands to separate process each of these system calls will need to be tested.
- 184: III.C.6.e.iv - Since these modules will make calls to for commands to separate process each of these system calls will need to be tested.
- 185: III.C.6.f - This tests when the process module is compiled or recompiled that all the permission that are needed are created and the compliation is correct. This will require the alteration of the control table data to test success and failure.
- 186: III.C.6.f.i - This tests when the process module is compiled or recompiled that all the permission that are needed are created and the compliation is correct. This will require the alteration of the control table data to test success and failure.
- 187: III.C.6.f.ii - This tests when the process module is compiled or recompiled that all the permission that are needed are created and the compliation is correct. This will require the alteration of the control table data to test success and failure.
- 188: III.C.6.f.iii - This tests when the process module is compiled or recompiled that all the permission that are needed are created and the compliation is correct. This will require the alteration of the control table data to test success and failure.
- 189: III.C.6.f.iv - This tests when the process module is compiled or recompiled that all the permission that are needed are created and the compliation is correct. This will require the alteration of the control table data to test success and failure.

| ID | WBS | Task | Duration | Start | Finish | Predecessors | Total slack | Free slack |
| --- | --- | --- | --- | --- | --- | --- | --- | --- |
| 190 | 1.1.4.6.7 | **For each component test file/directory permissions** | 2d | 2009-12-23 13:00 | 2009-12-25 12:00 |  | 208.5d |  |
| 191 | 1.1.4.6.7.1 | Forklift (FL) | 4h | 2009-12-23 13:00 | 2009-12-23 17:00 | 189 | 208.5d | 0d |
| 192 | 1.1.4.6.7.2 | Sorter (SO) | 4h | 2009-12-24 08:00 | 2009-12-24 12:00 | 191 | 208.5d | 0d |
| 193 | 1.1.4.6.7.3 | Cataloger (CT) | 4h | 2009-12-24 13:00 | 2009-12-24 17:00 | 192 | 208.5d | 0d |
| 194 | 1.1.4.6.7.4 | Stocker (ST) | 4h | 2009-12-25 08:00 | 2009-12-25 12:00 | 193 | 208.5d |  |
| 195 | 1.1.4.7 | **Integration Tests** | 3.5d | 2009-11-02 08:00 | 2009-11-05 12:00 |  | 131d |  |
| 196 | 1.1.4.7.1 | FL - SO | 4h | 2009-11-02 08:00 | 2009-11-02 12:00 |  | 131d | 0d |
| 197 | 1.1.4.7.2 | FL - WM | 4h | 2009-11-02 13:00 | 2009-11-02 17:00 | 196 | 131d | 0d |
| 198 | 1.1.4.7.3 | SO - CT | 4h | 2009-11-03 08:00 | 2009-11-03 12:00 | 197 | 131d | 0d |
| 199 | 1.1.4.7.4 | SO - WM | 4h | 2009-11-03 13:00 | 2009-11-03 17:00 | 198 | 131d | 0d |
| 200 | 1.1.4.7.5 | CT - ST | 4h | 2009-11-04 08:00 | 2009-11-04 12:00 | 199 | 131d | 0d |
| 201 | 1.1.4.7.6 | CT - WM | 4h | 2009-11-04 13:00 | 2009-11-04 17:00 | 200 | 131d | 0d |
| 202 | 1.1.4.7.7 | ST - WM | 4h | 2009-11-05 08:00 | 2009-11-05 12:00 | 201 | 131d | 0d |
| 203 | 1.1.5 | **Deployment Plan** | 11d | 2009-11-05 13:00 | 2009-11-20 12:00 |  | 131d |  |
| 204 | 1.1.5.1 | **Database Table and Metadata Deployment** | 5d | 2009-11-05 13:00 | 2009-11-12 12:00 |  | 131d |  |
| 205 | 1.1.5.1.1 | LOGSA Deployment Structure Setup | 4h | 2009-11-05 13:00 | 2009-11-05 17:00 | 202 | 131d | 0d |
| 206 | 1.1.5.1.2 | Scripts for Tables | 4h | 2009-11-06 08:00 | 2009-11-06 12:00 | 205 | 131d | 0d |
| 207 | 1.1.5.1.3 | Scripts for Packages | 4h | 2009-11-06 13:00 | 2009-11-06 17:00 | 206 | 131d | 0d |
| 208 | 1.1.5.1.4 | Scripts for Contraints | 4h | 2009-11-09 08:00 | 2009-11-09 12:00 | 207 | 131d | 0d |
| 209 | 1.1.5.1.5 | Scripts for Indexes | 4h | 2009-11-09 13:00 | 2009-11-09 17:00 | 208 | 131d | 0d |
| 210 | 1.1.5.1.6 | Scripts for views | 4h | 2009-11-10 08:00 | 2009-11-10 12:00 | 209 | 131d | 0d |
| 211 | 1.1.5.1.7 | Scripts for sequences | 4h | 2009-11-10 13:00 | 2009-11-10 17:00 | 210 | 131d | 0d |
| 212 | 1.1.5.1.8 | Scripts for synonyms | 4h | 2009-11-11 08:00 | 2009-11-11 12:00 | 211 | 131d | 0d |
| 213 | 1.1.5.1.9 | Scripts for data from each table | 4h | 2009-11-11 13:00 | 2009-11-11 17:00 | 212 | 131d | 0d |
| 214 | 1.1.5.1.10 | TBD Scripts | 4h | 2009-11-12 08:00 | 2009-11-12 12:00 | 213 | 131d | 0d |

Notes:
- 190: III.C.6.g - These tests should test all directory and file permissions needed by a process module to perform correctly.
- 191: III.C.6.g.i - These tests should test all directory and file permissions needed by a process module to perform correctly.
- 192: III.C.6.g.ii - These tests should test all directory and file permissions needed by a process module to perform correctly.
- 193: III.C.6.g.iii - These tests should test all directory and file permissions needed by a process module to perform correctly.
- 194: III.C.6.g.iv - These tests should test all directory and file permissions needed by a process module to perform correctly.
- 195: III.C.7 ~ This is the deployment plan that meets the specifications of LOGSA methodology and the needs of this project.
- 196: III.C.7.a - This is a suite of tests that test the FL to the SO for each file type process thread
- 197: III.C.7.b - This is a suite of tests that test the FL to the WM for each file type process thread
- 198: III.C.7.c - This is a suite of tests that test the SO to the CT for each file type process thread
- 199: III.C.7.d - This is a suite of tests that tests the SO to the WM for each file type process thread
- 200: III.C.7.e - This is a suite of tests that tests the CT to the ST for each file type process thread
- 201: III.C.7.f - This is a suite of tests that tests the CT to the WM for each file type process thread
- 202: III.C.7.g - This is a suite of tests that tests the ST to the WM for each file type process thread
- 203: III.D ~ This is a standard method of deployment within the LOGSA Oracle databases
- 204: III.D.1 ~ Since this is a n tier metadata based system the application deployment will be worked out with LOGSA current deployment teams.
- 205: III.D.1.a -
- 206: III.D.1.a.i - scripts to create tables
- 207: III.D.1.a.ii - scripts to create packages
- 208: III.D.1.a.iii - scripts to create constraints
- 209: III.D.1.a.iv - scripts to create indexes
- 210: III.D.1.a.v - scripts to create views
- 211: III.D.1.a.vi - scripts to create sequences
- 212: III.D.1.a.vii - scripts to create synonyms
- 213: III.D.1.a.viii - scripts to load metadata for each control table
- 214: III.D.1.a.ix -

| ID | WBS | Task | Duration | Start | Finish | Predecessors | Total slack | Free slack |
| --- | --- | --- | --- | --- | --- | --- | --- | --- |
| 215 | 1.1.5.2 | **Application Deployment** | 3.5d | 2009-11-12 13:00 | 2009-11-17 17:00 |  | 131d |  |
| 216 | 1.1.5.2.1 | Module Packaging | 4h | 2009-11-12 13:00 | 2009-11-12 17:00 | 214 | 131d | 0d |
| 217 | 1.1.5.2.2 | Metadata Packaging | 4h | 2009-11-13 08:00 | 2009-11-13 12:00 | 216 | 131d | 0d |
| 218 | 1.1.5.2.3 | Team Track Definition | 4h | 2009-11-13 13:00 | 2009-11-13 17:00 | 217 | 131d | 0d |
| 219 | 1.1.5.2.4 | Module VM Check in | 4h | 2009-11-16 08:00 | 2009-11-16 12:00 | 218 | 131d | 0d |
| 220 | 1.1.5.2.5 | Metadata Packaging VM Check in | 4h | 2009-11-16 13:00 | 2009-11-16 17:00 | 219 | 131d | 0d |
| 221 | 1.1.5.2.6 | Deployment Test Suite VM Check in | 4h | 2009-11-17 08:00 | 2009-11-17 12:00 | 220 | 131d | 0d |
| 222 | 1.1.5.2.7 | Documentation VM Check in | 4h | 2009-11-17 13:00 | 2009-11-17 17:00 | 221 | 131d | 0d |
| 223 | 1.1.5.3 | **In Place Deployment Test Suite** | 2.5d | 2009-11-18 08:00 | 2009-11-20 12:00 |  | 131d | 0d |
| 224 | 1.1.5.3.1 | Determine In Place Deployment Tests needed | 4h | 2009-11-18 08:00 | 2009-11-18 12:00 | 222 | 131d | 0d |
| 225 | 1.1.5.3.2 | Package Tests | 4h | 2009-11-18 13:00 | 2009-11-18 17:00 | 224 | 131d | 0d |
| 226 | 1.1.5.3.3 | Test the package of test | 4h | 2009-11-19 08:00 | 2009-11-19 12:00 | 225 | 131d | 0d |
| 227 | 1.1.5.3.4 | Document the steps to run the test | 4h | 2009-11-19 13:00 | 2009-11-19 17:00 | 226 | 131d | 0d |
| 228 | 1.1.5.3.5 | Create the Deployment Test Suite | 4h | 2009-11-20 08:00 | 2009-11-20 12:00 | 227 | 131d |  |
| 229 | 1.2 | **Technical Signoff** | 1d | 2009-11-20 13:00 | 2009-11-23 12:00 |  | 131d |  |
| 230 | 1.2.1 | Team | 4h | 2009-11-20 13:00 | 2009-11-20 17:00 | 223 | 131d | 0d |
| 231 | 1.2.2 | Management | 4h | 2009-11-23 08:00 | 2009-11-23 12:00 | 230 | 131d | 0d |
| 232 | 1.3 | **Development Cycle** | 91.5d | 2009-11-23 13:00 | 2010-03-30 17:00 |  | 131d |  |
| 233 | 1.3.1 | **Documentation** | 14.5d | 2009-11-23 13:00 | 2009-12-11 17:00 |  | 131d |  |
| 234 | 1.3.1.1 | **System Documentation** | 3.5d | 2009-11-23 13:00 | 2009-11-26 17:00 |  | 131d |  |
| 235 | 1.3.1.1.1 | Concept | 4h | 2009-11-23 13:00 | 2009-11-23 17:00 | 231 | 131d | 0d |
| 236 | 1.3.1.1.2 | Design Overview | 4h | 2009-11-24 08:00 | 2009-11-24 12:00 | 235 | 131d | 0d |
| 237 | 1.3.1.1.3 | Product Use | 4h | 2009-11-24 13:00 | 2009-11-24 17:00 | 236 | 131d | 0d |
| 238 | 1.3.1.1.4 | Control and Processing | 4h | 2009-11-25 08:00 | 2009-11-25 12:00 | 237 | 131d | 0d |
| 239 | 1.3.1.1.5 | Maintenance and Philosophy | 4h | 2009-11-25 13:00 | 2009-11-25 17:00 | 238 | 131d | 0d |
| 240 | 1.3.1.1.6 | Components and Definitions | 4h | 2009-11-26 08:00 | 2009-11-26 12:00 | 239 | 131d | 0d |
| 241 | 1.3.1.1.7 | Reference Appendixes | 4h | 2009-11-26 13:00 | 2009-11-26 17:00 | 240 | 131d | 0d |

Notes:
- 215: III.D.2 ~ This is a set of tests that tests the entire suite once it is in place in a production environment especially testing permissions, connectivity, and recreation on metadata changes.
- 216: III.D.2.a - The packaging of the Composer Builder, Business manager GUID system, Directory Structure Creator, etc.
- 217: III.D.2.b - Metadata packaging in XML format
- 218: III.D.2.c - Managing the Team Track steps
- 219: III.D.2.d - Check of all modules needed into VM
- 220: III.D.2.e - Check in packaging of metadata into VM
- 221: III.D.2.f - Check in of Deployement Test Suite into VM
- 222: III.D.2.g - Check in of Documentation into VM
- 223: III.D.3 ~ This is the technical signoff
- 224: III.D.3.a - Scripts to run the proper tests on the IN PLACE deployment of the Bulk Data manager system
- 225: III.D.3.b - The tests to handle the Packages
- 226: III.D.3.c - The test that tests the package tests
- 227: III.D.3.d - Documentation of the steps to run the tests
- 228: III.D.3.e - creation of the deployment test suite
- 229: IV. ~ Team signoff
- 230: IV.A ~ Management signoff
- 231: IV.B ~
- 232: V. ~
- 233: V.A. ~ This documentation is for the overall system and should reflect the approved concept and design signed off by management
- 234: V.A.1 ~ This documentation is primarily the business rule manager part of the application, the detailed functionality of the composer builder, the composer builders, and the template concept of the functional processes.
- 235: - overall system all components
- 236: - overall system all components
- 237: - overall system all components
- 238: - overall system all components
- 239: - overall system all components
- 240: - overall system all components
- 241: - overall system all components

| ID | WBS | Task | Duration | Start | Finish | Predecessors | Total slack | Free slack |
| --- | --- | --- | --- | --- | --- | --- | --- | --- |
| 242 | 1.3.1.2 | **User Documentation** | 3.5d | 2009-11-27 08:00 | 2009-12-02 12:00 |  | 131d |  |
| 243 | 1.3.1.2.1 | Concept | 4h | 2009-11-27 08:00 | 2009-11-27 12:00 | 241 | 131d | 0d |
| 244 | 1.3.1.2.2 | Design Overview | 4h | 2009-11-27 13:00 | 2009-11-27 17:00 | 243 | 131d | 0d |
| 245 | 1.3.1.2.3 | Product Use | 4h | 2009-11-30 08:00 | 2009-11-30 12:00 | 244 | 131d | 0d |
| 246 | 1.3.1.2.4 | Control and Processing | 4h | 2009-11-30 13:00 | 2009-11-30 17:00 | 245 | 131d | 0d |
| 247 | 1.3.1.2.5 | Maintenance and Philosophy | 4h | 2009-12-01 08:00 | 2009-12-01 12:00 | 246 | 131d | 0d |
| 248 | 1.3.1.2.6 | Components and Definitions | 4h | 2009-12-01 13:00 | 2009-12-01 17:00 | 247 | 131d | 0d |
| 249 | 1.3.1.2.7 | Reference Appendixes | 4h | 2009-12-02 08:00 | 2009-12-02 12:00 | 248 | 131d | 0d |
| 250 | 1.3.1.3 | **Test Documentation** | 2.5d | 2009-12-02 13:00 | 2009-12-04 17:00 |  | 131d |  |
| 251 | 1.3.1.3.1 | Concept | 4h | 2009-12-02 13:00 | 2009-12-02 17:00 | 249 | 131d | 0d |
| 252 | 1.3.1.3.2 | Functional Description | 4h | 2009-12-03 08:00 | 2009-12-03 12:00 | 251 | 131d | 0d |
| 253 | 1.3.1.3.3 | Design | 4h | 2009-12-03 13:00 | 2009-12-03 17:00 | 252 | 131d | 0d |
| 254 | 1.3.1.3.4 | Structures and defintion | 4h | 2009-12-04 08:00 | 2009-12-04 12:00 | 253 | 131d | 0d |
| 255 | 1.3.1.3.5 | Reference Appendixes | 4h | 2009-12-04 13:00 | 2009-12-04 17:00 | 254 | 131d | 0d |
| 256 | 1.3.1.4 | **Template Documentation** | 2.5d | 2009-12-07 08:00 | 2009-12-09 12:00 |  | 131d |  |
| 257 | 1.3.1.4.1 | Concept | 4h | 2009-12-07 08:00 | 2009-12-07 12:00 | 255 | 131d | 0d |
| 258 | 1.3.1.4.2 | Functional Description | 4h | 2009-12-07 13:00 | 2009-12-07 17:00 | 257 | 131d | 0d |
| 259 | 1.3.1.4.3 | Design | 4h | 2009-12-08 08:00 | 2009-12-08 12:00 | 258 | 131d | 0d |
| 260 | 1.3.1.4.4 | Structures and defintion | 4h | 2009-12-08 13:00 | 2009-12-08 17:00 | 259 | 131d | 0d |
| 261 | 1.3.1.4.5 | Reference Appendixes | 4h | 2009-12-09 08:00 | 2009-12-09 12:00 | 260 | 131d | 0d |
| 262 | 1.3.1.5 | **Warehouse Manager Documentation** | 2.5d | 2009-12-09 13:00 | 2009-12-11 17:00 |  | 131d |  |
| 263 | 1.3.1.5.1 | Concept | 4h | 2009-12-09 13:00 | 2009-12-09 17:00 | 261 | 131d | 0d |
| 264 | 1.3.1.5.2 | Functional Description | 4h | 2009-12-10 08:00 | 2009-12-10 12:00 | 263 | 131d | 0d |
| 265 | 1.3.1.5.3 | Design | 4h | 2009-12-10 13:00 | 2009-12-10 17:00 | 264 | 131d | 0d |
| 266 | 1.3.1.5.4 | Calls and Access | 4h | 2009-12-11 08:00 | 2009-12-11 12:00 | 265 | 131d | 0d |
| 267 | 1.3.1.5.5 | Reference Appendixes | 4h | 2009-12-11 13:00 | 2009-12-11 17:00 | 266 | 131d | 0d |

Notes:
- 242: V.A.2 ~ This is a compliation of the test plans and the testing process to ensure that all the components function as designed.
- 243: - User concept (executive level)
- 244: - User concept (executive level)
- 245: - User concept (executive level)
- 246: - User concept (executive level)
- 247: - User concept (executive level)
- 248: - User concept (executive level)
- 249: - User concept (executive level)
- 250: V.A.3 ~ This is the detailed documentation of the templates for the construction of each template and the reasoning behind the template design.
- 251: - overall system all components
- 252: - overall system all components
- 253: - overall system all components
- 254: - overall system all components
- 255: - overall system all components
- 256: V.A.4 ~ The warehouse manager is the 'large' package that manages all the bulk file management that is passed and received between the bulk file management system and the CCBMWHER.
- 257: - overall system all components
- 258: - overall system all components
- 259: - overall system all components
- 260: - overall system all components
- 261: - overall system all components
- 262: V.A.5 - The warehouse manager is the 'large' package that manages all the bulk file management that is passed and received between the bulk file management system and the CCBMWHER.
- 263: - Warehouse Manager view
- 264: - Warehouse Manager view
- 265: - Warehouse Manager view
- 266: - Warehouse Manager view
- 267: - Warehouse Manager view

| ID | WBS | Task | Duration | Start | Finish | Predecessors | Total slack | Free slack |
| --- | --- | --- | --- | --- | --- | --- | --- | --- |
| 268 | 1.3.2 | **Test Development** | 14d | 2009-12-14 08:00 | 2009-12-31 17:00 |  | 131d |  |
| 269 | 1.3.2.1 | **Library Module Tests** | 5d | 2009-12-14 08:00 | 2009-12-18 17:00 |  | 131d |  |
| 270 | 1.3.2.1.1 | Database.pm | 4h | 2009-12-14 08:00 | 2009-12-14 12:00 | 267 | 131d | 0d |
| 271 | 1.3.2.1.2 | Storage.pm | 4h | 2009-12-14 13:00 | 2009-12-14 17:00 | 270 | 131d | 0d |
| 272 | 1.3.2.1.3 | Dataset.pm | 4h | 2009-12-15 08:00 | 2009-12-15 12:00 | 271 | 131d | 0d |
| 273 | 1.3.2.1.4 | Plog.pm | 4h | 2009-12-15 13:00 | 2009-12-15 17:00 | 272 | 131d | 0d |
| 274 | 1.3.2.1.5 | CFD.pm | 4h | 2009-12-16 08:00 | 2009-12-16 12:00 | 273 | 131d | 0d |
| 275 | 1.3.2.1.6 | ComBld.pm | 4h | 2009-12-16 13:00 | 2009-12-16 17:00 | 274 | 131d | 0d |
| 276 | 1.3.2.1.7 | Composer.pm | 4h | 2009-12-17 08:00 | 2009-12-17 12:00 | 275 | 131d | 0d |
| 277 | 1.3.2.1.8 | Sending.pm | 4h | 2009-12-17 13:00 | 2009-12-17 17:00 | 276 | 131d | 0d |
| 278 | 1.3.2.1.9 | Mail.pm | 4h | 2009-12-18 08:00 | 2009-12-18 12:00 | 277 | 131d | 0d |
| 279 | 1.3.2.1.10 | TBD | 4h | 2009-12-18 13:00 | 2009-12-18 17:00 | 278 | 131d | 0d |
| 280 | 1.3.2.2 | Control Table Tests | 4h | 2009-12-21 08:00 | 2009-12-21 12:00 | 279 | 131d | 0d |
| 281 | 1.3.2.3 | **Business Rule Manager Test** | 4d | 2009-12-21 13:00 | 2009-12-25 12:00 |  | 131d |  |
| 282 | 1.3.2.3.1 | GUID | 4h | 2009-12-21 13:00 | 2009-12-21 17:00 | 280 | 131d | 0d |
| 283 | 1.3.2.3.2 | Database Calls | 4h | 2009-12-22 08:00 | 2009-12-22 12:00 | 282 | 131d | 0d |
| 284 | 1.3.2.3.3 | Security | 4h | 2009-12-22 13:00 | 2009-12-22 17:00 | 283 | 131d | 0d |
| 285 | 1.3.2.3.4 | Insert | 4h | 2009-12-23 08:00 | 2009-12-23 12:00 | 284 | 131d | 0d |
| 286 | 1.3.2.3.5 | Update | 4h | 2009-12-23 13:00 | 2009-12-23 17:00 | 285 | 131d | 0d |
| 287 | 1.3.2.3.6 | Delete | 4h | 2009-12-24 08:00 | 2009-12-24 12:00 | 286 | 131d | 0d |
| 288 | 1.3.2.3.7 | Reports | 4h | 2009-12-24 13:00 | 2009-12-24 17:00 | 287 | 131d | 0d |
| 289 | 1.3.2.3.8 | Validation and Checking | 4h | 2009-12-25 08:00 | 2009-12-25 12:00 | 288 | 131d | 0d |
| 290 | 1.3.2.4 | **Warehouse Manager Test** | 3d | 2009-12-25 13:00 | 2009-12-30 12:00 |  | 131d |  |
| 291 | 1.3.2.4.1 | General Functions IN (I_) | 4h | 2009-12-25 13:00 | 2009-12-25 17:00 | 289 | 131d | 0d |
| 292 | 1.3.2.4.2 | General Functions OUT (O_) | 4h | 2009-12-28 08:00 | 2009-12-28 12:00 | 291 | 131d | 0d |
| 293 | 1.3.2.4.3 | General Functions Data Management (D_) | 4h | 2009-12-28 13:00 | 2009-12-28 17:00 | 292 | 131d | 0d |
| 294 | 1.3.2.4.4 | CFD Functions (C_) | 4h | 2009-12-29 08:00 | 2009-12-29 12:00 | 293 | 131d | 0d |
| 295 | 1.3.2.4.5 | Plog Function (F_) | 4h | 2009-12-29 13:00 | 2009-12-29 17:00 | 294 | 131d | 0d |
| 296 | 1.3.2.4.6 | TBD | 4h | 2009-12-30 08:00 | 2009-12-30 12:00 | 295 | 131d | 0d |
| 297 | 1.3.2.5 | Composer Test | 4h | 2009-12-30 13:00 | 2009-12-30 17:00 | 296 | 131d | 0d |
| 298 | 1.3.2.6 | Components Tests | 4h | 2009-12-31 08:00 | 2009-12-31 12:00 | 297 | 131d | 0d |
| 299 | 1.3.2.7 | Integration Tests | 4h | 2009-12-31 13:00 | 2009-12-31 17:00 | 298 | 131d | 0d |

Notes:
- 268: V.B. ~ These are the tests for the defined library modules
- 269: V.B.1 ~ These are the tests for the control tables.
- 270: V.B.1.a - This library holds all the access and calls to the database and specifically the WM
- 271: V.B.1.b - This library holds all the calls to move, store, retrieve a file in the Bulk Data Management System
- 272: V.B.1.c - This library holds all the calls to handle the data sets of information that must flow through the Bulk Data Management System
- 273: V.B.1.d - This library hold all the calls that are specific to the PowerLOG-J application
- 274: V.B.1.e - This library holds all the calls that are specific to manage the CFD files. Most of these calls will manage data and make Java/C++ calls to the CFD function library.
- 275: V.B.1.f - This library holds the calls for the Composer builder that are unique to the composer builder.
- 276: V.B.1.g - This library holds the call that are unique to the composer modules the composer builder creates.
- 277: V.B.1.h - This library is primarily used to send or receive files to a registered system through the SCP functionality.
- 278: V.B.1.i - This library holds the calls to allow the application to send e-mail to the system or data requestors. This should include the ability to attach files to the mail message in the transfering of the data.
- 279: V.B.1.j -
- 280: V.B.2 ~ These are the tests for the Business Rule Manager
- 281: V.B.3 ~ These are the tests for the Warehouse manager
- 282: V.B.3.a - This set of tests cover every item on the GUID for full range of functionality
- 283: V.B.3.b - This set of tests cover all the calls to the database that the BRM makes and validates both the sending data and the results.
- 284: V.B.3.c - This set of tests checks the security functions built into the application and ensures that they meet the desired level of security control. This is important with the BRM having the ability to insert code snippets into the control tables.
- 285: V.B.3.d - This set of tests validates the insertion of data into the control tables by the application to ensure that the data went in and can come out in the proper format.
- 286: V.B.3.e - this set of tests validates the updating of the data in the control tables. This set also should test the archiving of the orginial data in the archiving tables for audit control.
- 287: V.B.3.f - This set of tests vaildates that archiving of the code on deletion of the data.
- 288: V.B.3.g - This set of tests should validate the reports the BRM presents back to the user.
- 289: V.B.3.h - This set of tests should stress the validationa and checking with especially care on potential harmful scripts values.
- 290: V.B.4 ~ These are the tests for the Composer and Composer Builder
- 291: V.B.4.a - These tests should test all the I_ functions to ensure they are handling data, throwing exceptions, and maintaining data integrity on all incoming data.
- 292: V.B.4.b - These tests should test all the O_ functions to ensure they are handling data, throwing exceptions, and maintaining data integrity on all out going data.
- 293: V.B.4.c - These tests should stress the general functions in the WM package
- 294: V.B.4.d - These tests should stress all the CFD functions in the package(s)
- 295: V.B.4.e - These tests should stress all the PowerLOG functions in the package(s)
- 296: V.B.4.f -
- 297: V.B.5 ~ These are the tests for the components
- 298: V.B.6 ~ These are the integration tests
- 299: V.B.7 ~ This is the development section for the Library modules

| ID | WBS | Task | Duration | Start | Finish | Predecessors | Total slack | Free slack |
| --- | --- | --- | --- | --- | --- | --- | --- | --- |
| 300 | 1.3.3 | **Library Module Development** | 20d | 2010-01-01 08:00 | 2010-01-28 17:00 |  | 131d |  |
| 301 | 1.3.3.1 | **Database.pm** | 2.5d | 2010-01-01 08:00 | 2010-01-05 12:00 |  | 131d |  |
| 302 | 1.3.3.1.1 | Define all functions | 4h | 2010-01-01 08:00 | 2010-01-01 12:00 | 299 | 131d | 0d |
| 303 | 1.3.3.1.2 | Build test to test each function | 4h | 2010-01-01 13:00 | 2010-01-01 17:00 | 302 | 131d | 0d |
| 304 | 1.3.3.1.3 | Create each function | 4h | 2010-01-04 08:00 | 2010-01-04 12:00 | 303 | 131d | 0d |
| 305 | 1.3.3.1.4 | Determine the use of functions in other libraries | 4h | 2010-01-04 13:00 | 2010-01-04 17:00 | 304 | 131d | 0d |
| 306 | 1.3.3.1.5 | Document each function for IN/OUT function | 4h | 2010-01-05 08:00 | 2010-01-05 12:00 | 305 | 131d | 0d |
| 307 | 1.3.3.2 | **Storage.pm** | 2.5d | 2010-01-05 13:00 | 2010-01-07 17:00 |  | 131d |  |
| 308 | 1.3.3.2.1 | Define all functions | 4h | 2010-01-05 13:00 | 2010-01-05 17:00 | 306 | 131d | 0d |
| 309 | 1.3.3.2.2 | Build test to test each function | 4h | 2010-01-06 08:00 | 2010-01-06 12:00 | 308 | 131d | 0d |
| 310 | 1.3.3.2.3 | Create each function | 4h | 2010-01-06 13:00 | 2010-01-06 17:00 | 309 | 131d | 0d |
| 311 | 1.3.3.2.4 | Determine the use of functions in other libraries | 4h | 2010-01-07 08:00 | 2010-01-07 12:00 | 310 | 131d | 0d |
| 312 | 1.3.3.2.5 | Document each function for IN/OUT function | 4h | 2010-01-07 13:00 | 2010-01-07 17:00 | 311 | 131d | 0d |
| 313 | 1.3.3.3 | **Dataset.pm** | 2.5d | 2010-01-08 08:00 | 2010-01-12 12:00 |  | 131d |  |
| 314 | 1.3.3.3.1 | Define all functions | 4h | 2010-01-08 08:00 | 2010-01-08 12:00 | 312 | 131d | 0d |
| 315 | 1.3.3.3.2 | Build test to test each function | 4h | 2010-01-08 13:00 | 2010-01-08 17:00 | 314 | 131d | 0d |
| 316 | 1.3.3.3.3 | Create each function | 4h | 2010-01-11 08:00 | 2010-01-11 12:00 | 315 | 131d | 0d |
| 317 | 1.3.3.3.4 | Determine the use of functions in other libraries | 4h | 2010-01-11 13:00 | 2010-01-11 17:00 | 316 | 131d | 0d |
| 318 | 1.3.3.3.5 | Document each function for IN/OUT function | 4h | 2010-01-12 08:00 | 2010-01-12 12:00 | 317 | 131d | 0d |
| 319 | 1.3.3.4 | **Plog.pm** | 2.5d | 2010-01-12 13:00 | 2010-01-14 17:00 |  | 131d |  |
| 320 | 1.3.3.4.1 | Define all functions | 4h | 2010-01-12 13:00 | 2010-01-12 17:00 | 318 | 131d | 0d |
| 321 | 1.3.3.4.2 | Build test to test each function | 4h | 2010-01-13 08:00 | 2010-01-13 12:00 | 320 | 131d | 0d |
| 322 | 1.3.3.4.3 | Create each function | 4h | 2010-01-13 13:00 | 2010-01-13 17:00 | 321 | 131d | 0d |
| 323 | 1.3.3.4.4 | Determine the use of functions in other libraries | 4h | 2010-01-14 08:00 | 2010-01-14 12:00 | 322 | 131d | 0d |
| 324 | 1.3.3.4.5 | Document each function for IN/OUT function | 4h | 2010-01-14 13:00 | 2010-01-14 17:00 | 323 | 131d | 0d |

Notes:
- 300: V.C ~ This is the development section for the Template creation and defintion
- 301: V.C.1 -
- 302: -
- 303: -
- 304: -
- 305: -
- 306: -
- 307: V.C.2 -
- 308: -
- 309: -
- 310: -
- 311: -
- 312: -
- 313: V.C.3 -
- 314: -
- 315: -
- 316: -
- 317: -
- 318: -
- 319: V.C.4 -
- 320: -
- 321: -
- 322: -
- 323: -
- 324: -

| ID | WBS | Task | Duration | Start | Finish | Predecessors | Total slack | Free slack |
| --- | --- | --- | --- | --- | --- | --- | --- | --- |
| 325 | 1.3.3.5 | **CFD.pm** | 2.5d | 2010-01-15 08:00 | 2010-01-19 12:00 |  | 131d |  |
| 326 | 1.3.3.5.1 | Define all functions | 4h | 2010-01-15 08:00 | 2010-01-15 12:00 | 324 | 131d | 0d |
| 327 | 1.3.3.5.2 | Build test to test each function | 4h | 2010-01-15 13:00 | 2010-01-15 17:00 | 326 | 131d | 0d |
| 328 | 1.3.3.5.3 | Create each function | 4h | 2010-01-18 08:00 | 2010-01-18 12:00 | 327 | 131d | 0d |
| 329 | 1.3.3.5.4 | Determine the use of functions in other libraries | 4h | 2010-01-18 13:00 | 2010-01-18 17:00 | 328 | 131d | 0d |
| 330 | 1.3.3.5.5 | Document each function for IN/OUT function | 4h | 2010-01-19 08:00 | 2010-01-19 12:00 | 329 | 131d | 0d |
| 331 | 1.3.3.6 | **ComBld.pm** | 2.5d | 2010-01-19 13:00 | 2010-01-21 17:00 |  | 131d |  |
| 332 | 1.3.3.6.1 | Define all functions | 4h | 2010-01-19 13:00 | 2010-01-19 17:00 | 330 | 131d | 0d |
| 333 | 1.3.3.6.2 | Build test to test each function | 4h | 2010-01-20 08:00 | 2010-01-20 12:00 | 332 | 131d | 0d |
| 334 | 1.3.3.6.3 | Create each function | 4h | 2010-01-20 13:00 | 2010-01-20 17:00 | 333 | 131d | 0d |
| 335 | 1.3.3.6.4 | Determine the use of functions in other libraries | 4h | 2010-01-21 08:00 | 2010-01-21 12:00 | 334 | 131d | 0d |
| 336 | 1.3.3.6.5 | Document each function for IN/OUT function | 4h | 2010-01-21 13:00 | 2010-01-21 17:00 | 335 | 131d | 0d |
| 337 | 1.3.3.7 | **Composer.pm** | 2.5d | 2010-01-22 08:00 | 2010-01-26 12:00 |  | 131d |  |
| 338 | 1.3.3.7.1 | Define all functions | 4h | 2010-01-22 08:00 | 2010-01-22 12:00 | 336 | 131d | 0d |
| 339 | 1.3.3.7.2 | Build test to test each function | 4h | 2010-01-22 13:00 | 2010-01-22 17:00 | 338 | 131d | 0d |
| 340 | 1.3.3.7.3 | Create each function | 4h | 2010-01-25 08:00 | 2010-01-25 12:00 | 339 | 131d | 0d |
| 341 | 1.3.3.7.4 | Determine the use of functions in other libraries | 4h | 2010-01-25 13:00 | 2010-01-25 17:00 | 340 | 131d | 0d |
| 342 | 1.3.3.7.5 | Document each function for IN/OUT function | 4h | 2010-01-26 08:00 | 2010-01-26 12:00 | 341 | 131d | 0d |
| 343 | 1.3.3.8 | **Mail.pm** | 2.5d | 2010-01-26 13:00 | 2010-01-28 17:00 |  | 131d |  |
| 344 | 1.3.3.8.1 | Define all functions | 4h | 2010-01-26 13:00 | 2010-01-26 17:00 | 342 | 131d | 0d |
| 345 | 1.3.3.8.2 | Build test to test each function | 4h | 2010-01-27 08:00 | 2010-01-27 12:00 | 344 | 131d | 0d |
| 346 | 1.3.3.8.3 | Create each function | 4h | 2010-01-27 13:00 | 2010-01-27 17:00 | 345 | 131d | 0d |
| 347 | 1.3.3.8.4 | Determine the use of functions in other libraries | 4h | 2010-01-28 08:00 | 2010-01-28 12:00 | 346 | 131d | 0d |
| 348 | 1.3.3.8.5 | Document each function for IN/OUT function | 4h | 2010-01-28 13:00 | 2010-01-28 17:00 | 347 | 131d | 0d |

Notes:
- 325: V.C.5 -
- 326: -
- 327: -
- 328: -
- 329: -
- 330: -
- 331: V.C.6 -
- 332: -
- 333: -
- 334: -
- 335: -
- 336: -
- 337: V.C.7 -
- 338: -
- 339: -
- 340: -
- 341: -
- 342: -
- 343: V.C.9 -
- 344: -
- 345: -
- 346: -
- 347: -
- 348: -

| ID | WBS | Task | Duration | Start | Finish | Predecessors | Total slack | Free slack |
| --- | --- | --- | --- | --- | --- | --- | --- | --- |
| 349 | 1.3.4 | **Template Development** | 18d | 2010-01-29 08:00 | 2010-02-23 17:00 |  | 131d |  |
| 350 | 1.3.4.1 | **Forklift (FL)** | 4.5d | 2010-01-29 08:00 | 2010-02-04 12:00 |  | 131d |  |
| 351 | 1.3.4.1.1 | Header Section | 4h | 2010-01-29 08:00 | 2010-01-29 12:00 | 348 | 131d | 0d |
| 352 | 1.3.4.1.2 | Variables | 4h | 2010-01-29 13:00 | 2010-01-29 17:00 | 351 | 131d | 0d |
| 353 | 1.3.4.1.3 | Top Timer Loop | 4h | 2010-02-01 08:00 | 2010-02-01 12:00 | 352 | 131d | 0d |
| 354 | 1.3.4.1.4 | File check | 4h | 2010-02-01 13:00 | 2010-02-01 17:00 | 353 | 131d | 0d |
| 355 | 1.3.4.1.5 | Top Process Section | 4h | 2010-02-02 08:00 | 2010-02-02 12:00 | 354 | 131d | 0d |
| 356 | 1.3.4.1.6 | Processes | 4h | 2010-02-02 13:00 | 2010-02-02 17:00 | 355 | 131d | 0d |
| 357 | 1.3.4.1.7 | Bottom Process Section | 4h | 2010-02-03 08:00 | 2010-02-03 12:00 | 356 | 131d | 0d |
| 358 | 1.3.4.1.8 | Bottom Timer Loop | 4h | 2010-02-03 13:00 | 2010-02-03 17:00 | 357 | 131d | 0d |
| 359 | 1.3.4.1.9 | Close Section | 4h | 2010-02-04 08:00 | 2010-02-04 12:00 | 358 | 131d | 0d |
| 360 | 1.3.4.2 | **Sorter (SO)** | 4.5d | 2010-02-04 13:00 | 2010-02-10 17:00 |  | 131d |  |
| 361 | 1.3.4.2.1 | Header Section | 4h | 2010-02-04 13:00 | 2010-02-04 17:00 | 359 | 131d | 0d |
| 362 | 1.3.4.2.2 | Variables | 4h | 2010-02-05 08:00 | 2010-02-05 12:00 | 361 | 131d | 0d |
| 363 | 1.3.4.2.3 | Top Timer Loop | 4h | 2010-02-05 13:00 | 2010-02-05 17:00 | 362 | 131d | 0d |
| 364 | 1.3.4.2.4 | File check | 4h | 2010-02-08 08:00 | 2010-02-08 12:00 | 363 | 131d | 0d |
| 365 | 1.3.4.2.5 | Top Process Section | 4h | 2010-02-08 13:00 | 2010-02-08 17:00 | 364 | 131d | 0d |
| 366 | 1.3.4.2.6 | Processes | 4h | 2010-02-09 08:00 | 2010-02-09 12:00 | 365 | 131d | 0d |
| 367 | 1.3.4.2.7 | Bottom Process Section | 4h | 2010-02-09 13:00 | 2010-02-09 17:00 | 366 | 131d | 0d |
| 368 | 1.3.4.2.8 | Bottom Timer Loop | 4h | 2010-02-10 08:00 | 2010-02-10 12:00 | 367 | 131d | 0d |
| 369 | 1.3.4.2.9 | Close Section | 4h | 2010-02-10 13:00 | 2010-02-10 17:00 | 368 | 131d | 0d |
| 370 | 1.3.4.3 | **Cataloger (CT)** | 4.5d | 2010-02-11 08:00 | 2010-02-17 12:00 |  | 131d |  |
| 371 | 1.3.4.3.1 | Header Section | 4h | 2010-02-11 08:00 | 2010-02-11 12:00 | 369 | 131d | 0d |
| 372 | 1.3.4.3.2 | Variables | 4h | 2010-02-11 13:00 | 2010-02-11 17:00 | 371 | 131d | 0d |
| 373 | 1.3.4.3.3 | Top Timer Loop | 4h | 2010-02-12 08:00 | 2010-02-12 12:00 | 372 | 131d | 0d |
| 374 | 1.3.4.3.4 | File check | 4h | 2010-02-12 13:00 | 2010-02-12 17:00 | 373 | 131d | 0d |
| 375 | 1.3.4.3.5 | Top Process Section | 4h | 2010-02-15 08:00 | 2010-02-15 12:00 | 374 | 131d | 0d |
| 376 | 1.3.4.3.6 | Processes | 4h | 2010-02-15 13:00 | 2010-02-15 17:00 | 375 | 131d | 0d |
| 377 | 1.3.4.3.7 | Bottom Process Section | 4h | 2010-02-16 08:00 | 2010-02-16 12:00 | 376 | 131d | 0d |
| 378 | 1.3.4.3.8 | Bottom Timer Loop | 4h | 2010-02-16 13:00 | 2010-02-16 17:00 | 377 | 131d | 0d |
| 379 | 1.3.4.3.9 | Close Section | 4h | 2010-02-17 08:00 | 2010-02-17 12:00 | 378 | 131d | 0d |

Notes:
- 349: V.D ~ This is the development section for the Control Tables.
- 350: V.D.1 -
- 351: V.D.1.a - Standard header section for all processes
- 352: V.D.1.b - Common variables used by all processes with unique variables attached on end
- 353: V.D.1.c - Standard top timer loop for all processes
- 354: V.D.1.d - Standard file check routine for all processes
- 355: V.D.1.e - Standard top process section for all forklift processes
- 356: V.D.1.f - The area where the specific paragraphs for this process are located
- 357: V.D.1.g - Standard bottom process section for all forklift processes
- 358: V.D.1.h - Standard bottom timer loop for all processes
- 359: V.D.1.i - Standard close section and exception handling for all processes
- 360: V.D.2 -
- 361: V.D.2.a - Standard header section for all processes
- 362: V.D.2.b - Common variables used by all processes with unique variables attached on end
- 363: V.D.2.c - Standard top timer loop for all processes
- 364: V.D.2.d - Standard file check routine for all processes
- 365: V.D.2.e - Standard top process section for all sorter processes
- 366: V.D.2.f - The area where the specific paragraphs for this process are located
- 367: V.D.2.g - Standard bottom process section for all sorter processes
- 368: V.D.2.h - Standard bottom timer loop for all processes
- 369: V.D.2.i - Standard close section and exception handling for all processes
- 370: V.D.3 -
- 371: V.D.3.a - Standard header section for all processes
- 372: V.D.3.b - Common variables used by all processes with unique variables attached on end
- 373: V.D.3.c - Standard top timer loop for all processes
- 374: V.D.3.d - Standard file check routine for all processes
- 375: V.D.3.e - Standard top process section for all cataloger processes
- 376: V.D.3.f - The area where the specific paragraphs for this process are located
- 377: V.D.3.g - Standard bottom process section for all cataloger processes
- 378: V.D.3.h - Standard bottom timer loop for all processes
- 379: V.D.3.i - Standard close section and exception handling for all processes

| ID | WBS | Task | Duration | Start | Finish | Predecessors | Total slack | Free slack |
| --- | --- | --- | --- | --- | --- | --- | --- | --- |
| 380 | 1.3.4.4 | **Stocker (ST)** | 4.5d | 2010-02-17 13:00 | 2010-02-23 17:00 |  | 131d |  |
| 381 | 1.3.4.4.1 | Header Section | 4h | 2010-02-17 13:00 | 2010-02-17 17:00 | 379 | 131d | 0d |
| 382 | 1.3.4.4.2 | Variables | 4h | 2010-02-18 08:00 | 2010-02-18 12:00 | 381 | 131d | 0d |
| 383 | 1.3.4.4.3 | Top Timer Loop | 4h | 2010-02-18 13:00 | 2010-02-18 17:00 | 382 | 131d | 0d |
| 384 | 1.3.4.4.4 | File check | 4h | 2010-02-19 08:00 | 2010-02-19 12:00 | 383 | 131d | 0d |
| 385 | 1.3.4.4.5 | Top Process Section | 4h | 2010-02-19 13:00 | 2010-02-19 17:00 | 384 | 131d | 0d |
| 386 | 1.3.4.4.6 | Processes | 4h | 2010-02-22 08:00 | 2010-02-22 12:00 | 385 | 131d | 0d |
| 387 | 1.3.4.4.7 | Bottom Process Section | 4h | 2010-02-22 13:00 | 2010-02-22 17:00 | 386 | 131d | 0d |
| 388 | 1.3.4.4.8 | Bottom Timer Loop | 4h | 2010-02-23 08:00 | 2010-02-23 12:00 | 387 | 131d | 0d |
| 389 | 1.3.4.4.9 | Close Section | 4h | 2010-02-23 13:00 | 2010-02-23 17:00 | 388 | 131d | 0d |
| 390 | 1.3.5 | **Composer Builder** | 9.5d | 2010-02-24 08:00 | 2010-03-09 12:00 |  | 131d |  |
| 391 | 1.3.5.1 | **Composer Template** | 4d | 2010-02-24 08:00 | 2010-03-01 17:00 |  | 131d |  |
| 392 | 1.3.5.1.1 | Header Section | 4h | 2010-02-24 08:00 | 2010-02-24 12:00 | 389 | 131d | 0d |
| 393 | 1.3.5.1.2 | Variables | 4h | 2010-02-24 13:00 | 2010-02-24 17:00 | 392 | 131d | 0d |
| 394 | 1.3.5.1.3 | Template Loader | 4h | 2010-02-25 08:00 | 2010-02-25 12:00 | 393 | 131d | 0d |
| 395 | 1.3.5.1.4 | Control Table Load | 4h | 2010-02-25 13:00 | 2010-02-25 17:00 | 394 | 131d | 0d |
| 396 | 1.3.5.1.5 | Top Process Build Loop | 4h | 2010-02-26 08:00 | 2010-02-26 12:00 | 395 | 131d | 0d |
| 397 | 1.3.5.1.6 | Build construction paragraphs | 4h | 2010-02-26 13:00 | 2010-02-26 17:00 | 396 | 131d | 0d |
| 398 | 1.3.5.1.7 | Bottom Process Section | 4h | 2010-03-01 08:00 | 2010-03-01 12:00 | 397 | 131d | 0d |
| 399 | 1.3.5.1.8 | Close Section | 4h | 2010-03-01 13:00 | 2010-03-01 17:00 | 398 | 131d | 0d |
| 400 | 1.3.5.2 | **Composer Builder** | 3d | 2010-03-02 08:00 | 2010-03-04 17:00 |  | 131d |  |
| 401 | 1.3.5.2.1 | Composer Builder Detailed Design and Philosophy | 4h | 2010-03-02 08:00 | 2010-03-02 12:00 | 399 | 131d | 0d |
| 402 | 1.3.5.2.2 | Composer Builder Structure | 4h | 2010-03-02 13:00 | 2010-03-02 17:00 | 401 | 131d | 0d |
| 403 | 1.3.5.2.3 | Composer Builder Library | 4h | 2010-03-03 08:00 | 2010-03-03 12:00 | 402 | 131d | 0d |
| 404 | 1.3.5.2.4 | Composer Builder Metadata | 4h | 2010-03-03 13:00 | 2010-03-03 17:00 | 403 | 131d | 0d |
| 405 | 1.3.5.2.5 | Composer Builder Compiler Script | 4h | 2010-03-04 08:00 | 2010-03-04 12:00 | 404 | 131d | 0d |
| 406 | 1.3.5.2.6 | Composer Builder exception and valiation Section | 4h | 2010-03-04 13:00 | 2010-03-04 17:00 | 405 | 131d | 0d |

Notes:
- 380: V.D.4 -
- 381: V.D.4.a - Standard header section for all processes
- 382: V.D.4.b - Common variables used by all processes with unique variables attached on end
- 383: V.D.4.c - Standard top timer loop for all processes
- 384: V.D.4.d - Standard file check routine for all processes
- 385: V.D.4.e - Standard top process section for all stocker processes
- 386: V.D.4.f - The area where the specific paragraphs for this process are located
- 387: V.D.4.g - Standard bottom process section for all stocker processes
- 388: V.D.4.h - Standard bottom timer loop for all processes
- 389: V.D.4.i - Standard close section and exception handling for all processes
- 390: V.F
- 391: V.F.1 - This is the development of the composer template that the composer builder will use to create the necessary composers for the various functions
- 392: V.F.1.a - The section to declare the global perl info stuff
- 393: V.F.1.b - The standard variables used in all code
- 394: V.F.1.c - The section that loads the template of the process to be created
- 395: V.F.1.d - The section that loads the metadata from the control tables through the WM for building the process
- 396: V.F.1.e - The top of the process loop
- 397: V.F.1.f - The section that adds the paragraphs necessary for the process to perform its task
- 398: V.F.1.g - The bottom of the process section
- 399: V.F.1.h - The close and exception section
- 400: V.F.2 - This is the program that will build the composers. This development along with the warehouse manager and libraries are the three keys pieces of code that will generate all the other components
- 401: V.F.2.a - The concept of a program that builds programs to build programs seems a little extreme, but since all the processes have the same basic structure and rules and differ only in the definition of the file type(s) they are actually processing this l
- 402: V.F.2.b - This is the structure of the Composer Builder and should be built, reviewed and agreed that it will with its library and metadata build the modules that will build the actual processes that move and manage the incoming files and their long term
- 403: V.F.2.c - This library will contain components that do not exist in the the common libraries of the overall system. It will highly use the database, the file management, string parsing, file building libraries that will be common to all the processes. T
- 404: V.F.2.d - The metadata is more than values. It will include code snippets that are defined as paragraphs. Paragraphs will contain comments that explain exactly what they are to do and the common and uncommon variables that are required for them to funct
- 405: V.F.2.e - Since the Composer builder will be a compiled process the controls for the compilation need to be fully defined.
- 406: V.F.2.f - There are some overall handling of the exceptions and the validation of the metadata that exist in the in the construction of the composers. These exception handlers should handle proper error messaging back to the compiling function to fully e

| ID | WBS | Task | Duration | Start | Finish | Predecessors | Total slack | Free slack |
| --- | --- | --- | --- | --- | --- | --- | --- | --- |
| 407 | 1.3.5.3 | **Composer** | 2d | 2010-03-05 08:00 | 2010-03-08 17:00 |  | 131d |  |
| 408 | 1.3.5.3.1 | Composer Template Development | 4h | 2010-03-05 08:00 | 2010-03-05 12:00 | 406 | 131d | 0d |
| 409 | 1.3.5.3.2 | Composer Library Development | 4h | 2010-03-05 13:00 | 2010-03-05 17:00 | 408 | 131d | 0d |
| 410 | 1.3.5.3.3 | Composer Metadata Development | 4h | 2010-03-08 08:00 | 2010-03-08 12:00 | 409 | 131d | 0d |
| 411 | 1.3.5.3.4 | Composer Compiler Script Development | 4h | 2010-03-08 13:00 | 2010-03-08 17:00 | 410 | 131d | 0d |
| 412 | 1.3.5.4 | Composer Control | 4h | 2010-03-09 08:00 | 2010-03-09 12:00 | 411 | 131d | 0d |
| 413 | 1.3.6 | **Phase One Integration** | 10d | 2010-03-09 13:00 | 2010-03-23 12:00 |  | 131d |  |
| 414 | 1.3.6.1 | Control Table Data Definition | 4h | 2010-03-09 13:00 | 2010-03-09 17:00 | 412 | 131d | 0d |
| 415 | 1.3.6.2 | **Library Control Table Interface** | 6.5d | 2010-03-10 08:00 | 2010-03-18 12:00 |  | 131d | 0d |
| 416 | 1.3.6.2.1 | Common Library Paragraphs | 4h | 2010-03-10 08:00 | 2010-03-10 12:00 | 414 | 131d | 0d |
| 417 | 1.3.6.2.2 | Common Variable Paragraphs | 4h | 2010-03-10 13:00 | 2010-03-10 17:00 | 416 | 131d | 0d |
| 418 | 1.3.6.2.3 | Common Timer Paragraphs | 4h | 2010-03-11 08:00 | 2010-03-11 12:00 | 417 | 131d | 0d |
| 419 | 1.3.6.2.4 | Common Header Paragraphs | 4h | 2010-03-11 13:00 | 2010-03-11 17:00 | 418 | 131d | 0d |
| 420 | 1.3.6.2.5 | Forklift (FL) Process Paragraphs | 4h | 2010-03-12 08:00 | 2010-03-12 12:00 | 419 | 131d | 0d |
| 421 | 1.3.6.2.6 | Sorter (SO)Process Paragraphs | 4h | 2010-03-12 13:00 | 2010-03-12 17:00 | 420 | 131d | 0d |
| 422 | 1.3.6.2.7 | Cataloger (CT)Process Paragraphs | 4h | 2010-03-15 08:00 | 2010-03-15 12:00 | 421 | 131d | 0d |
| 423 | 1.3.6.2.8 | Stocker (ST)Process Paragraphs | 4h | 2010-03-15 13:00 | 2010-03-15 17:00 | 422 | 131d | 0d |
| 424 | 1.3.6.2.9 | Composer Builder Paragraphs | 4h | 2010-03-16 08:00 | 2010-03-16 12:00 | 423 | 131d | 0d |
| 425 | 1.3.6.2.10 | Composer Paragraphs | 4h | 2010-03-16 13:00 | 2010-03-16 17:00 | 424 | 131d | 0d |
| 426 | 1.3.6.2.11 | CFD Paragraphs | 4h | 2010-03-17 08:00 | 2010-03-17 12:00 | 425 | 131d | 0d |
| 427 | 1.3.6.2.12 | PowerLOG Paragraphs | 4h | 2010-03-17 13:00 | 2010-03-17 17:00 | 426 | 131d | 0d |
| 428 | 1.3.6.2.13 | Other Metadata | 4h | 2010-03-18 08:00 | 2010-03-18 12:00 | 427 | 131d |  |
| 429 | 1.3.6.3 | **Warehouse Manager** | 3d | 2010-03-18 13:00 | 2010-03-23 12:00 |  | 131d |  |
| 430 | 1.3.6.3.1 | General Functions IN (I_) | 4h | 2010-03-18 13:00 | 2010-03-18 17:00 | 415 | 131d | 0d |
| 431 | 1.3.6.3.2 | General Functions OUT (O_) | 4h | 2010-03-19 08:00 | 2010-03-19 12:00 | 430 | 131d | 0d |
| 432 | 1.3.6.3.3 | General Functions Data Management (D_) | 4h | 2010-03-19 13:00 | 2010-03-19 17:00 | 431 | 131d | 0d |
| 433 | 1.3.6.3.4 | CFD Functions (C_) | 4h | 2010-03-22 08:00 | 2010-03-22 12:00 | 432 | 131d | 0d |
| 434 | 1.3.6.3.5 | Plog Function (F_) | 4h | 2010-03-22 13:00 | 2010-03-22 17:00 | 433 | 131d | 0d |
| 435 | 1.3.6.3.6 | TBD Functions | 4h | 2010-03-23 08:00 | 2010-03-23 12:00 | 434 | 131d | 0d |

Notes:
- 407: V.F.3 - Composer is the Perl Procedures that are the result of the composer builder for each process type and function
- 408: V.F.3.a - Since the composers will all have the same look and feel a standard template of the structure of the code is possible.
- 409: V.F.3.b - The composer library development should work in concert with the composer builder and all components that a composer builds. However there will be a few functions that will be strictly composer and those paragraphs should go into the composer l
- 410: V.F.3.c - The composer library development should work in concert with the composer builder and all components that a composer builds. However there will be a few paragraphs and variable constructions that will be strictly composer and those paragraphs s
- 411: V.F.3.d - Since the composers can be rebuild as needed to redefine the modules/processes that they build the compiler script needs to handle controls and permission as well as the exception handling the the case of errors in the compliation.
- 412: V.F.4 - This is the program that will manage the control of the composers and the recomposition in the event of a change in the control tables through the business rule manager or an evolution of the processes in concurrent testing and control
- 413: V.G ~ The control table and business rule manager are linked with the library control table interface
- 414: V.G.1 ~ The library control interface are linked with the business rule manager and tested for completeness
- 415: V.G.2 ~ The second stage of integration is the linking and testing of the composer builder with all the library functions
- 416: V.E.2.a - These are the common Library calls paragraphs using the common variable arrays to capture the data
- 417: V.E.2.b - These are the common variable lists used in all processes
- 418: V.E.2.c - These are the standard timer paragraphs used in the processes
- 419: V.E.2.d - These are the common header paragraphs used in all processes
- 420: V.E.2.e - These are the specific paragraphs used for the forklift processes
- 421: V.E.2.f - These are the specific paragraphs used for the sorter processes
- 422: V.E.2.g - These are the specific paragraphs used for the cataloger processes
- 423: V.E.2.h - These are the specific paragraphs used for the stocker processes
- 424: V.E.2.l - These are the paragraphs that the composer builder uses to build the composers
- 425: V.E.2.m - These are the composer paragraphs that are used to build the processes
- 426: V.E.2.n - These are the paragraphs that handle the CFD file management
- 427: V.E.2.o - These are the paragraphs that handle the PowerLOG file management
- 428: V.E.2.p - These are the other Metadata paragraphs that do not fall in the above sections
- 429: V.G.3 - Oracle pacakge interface for all Bulk Data modules/processes
- 430: V.G.3.a - These are the general functions that handle data into the package. These include the standard parsers, redirectors, etc.
- 431: V.G.3.b - These are the general functions that handle the out bound data from the packages to the modules and processes fo the Bulk Data Management System.
- 432: V.G.3.c - These are the data management functions that take arrays of data that has been received and works with the data to putting or retrieving it from the correct locations
- 433: V.G.3.d - These are the specific functions for managing the data that is passed in or out for the CFD function (ABCD files)
- 434: V.G.3.e - These are the specific functions for managing the data that is passed in or out for the PowerLOG files (all types)
- 435: V.G.3.f -

| ID | WBS | Task | Duration | Start | Finish | Predecessors | Total slack | Free slack |
| --- | --- | --- | --- | --- | --- | --- | --- | --- |
| 436 | 1.3.7 | **Phase Two Integration** | 1d | 2010-03-23 13:00 | 2010-03-24 12:00 |  | 131d |  |
| 437 | 1.3.7.1 | Composer Builder | 4h | 2010-03-23 13:00 | 2010-03-23 17:00 | 435 | 131d | 0d |
| 438 | 1.3.7.2 | Composer Builder Library Interface | 4h | 2010-03-24 08:00 | 2010-03-24 12:00 | 437 | 131d | 0d |
| 439 | 1.3.8 | **Phase Three Process Building** | 1d | 2010-03-24 13:00 | 2010-03-25 12:00 |  | 131d |  |
| 440 | 1.3.8.1 | Metadata defintion for Each Template Defintion | 4h | 2010-03-24 13:00 | 2010-03-24 17:00 | 438 | 131d | 0d |
| 441 | 1.3.8.2 | Composer Metadata merge | 4h | 2010-03-25 08:00 | 2010-03-25 12:00 | 440 | 131d | 0d |
| 442 | 1.3.9 | **Phase Four Component Integration** | 2d | 2010-03-25 13:00 | 2010-03-29 12:00 |  | 131d |  |
| 443 | 1.3.9.1 | Forklift | 4h | 2010-03-25 13:00 | 2010-03-25 17:00 | 441 | 131d | 0d |
| 444 | 1.3.9.2 | Sorter | 4h | 2010-03-26 08:00 | 2010-03-26 12:00 | 443 | 131d | 0d |
| 445 | 1.3.9.3 | Cataloger | 4h | 2010-03-26 13:00 | 2010-03-26 17:00 | 444 | 131d | 0d |
| 446 | 1.3.9.4 | Stocker | 4h | 2010-03-29 08:00 | 2010-03-29 12:00 | 445 | 131d | 0d |
| 447 | 1.3.10 | **Deployment Plan** | 1.5d | 2010-03-29 13:00 | 2010-03-30 17:00 |  | 131d |  |
| 448 | 1.3.10.1 | Database Table and Metadata Deployment | 4h | 2010-03-29 13:00 | 2010-03-29 17:00 | 446 | 131d | 0d |
| 449 | 1.3.10.2 | Application Deployment | 4h | 2010-03-30 08:00 | 2010-03-30 12:00 | 448 | 131d | 0d |
| 450 | 1.3.10.3 | In Place Deployment Test Suite | 4h | 2010-03-30 13:00 | 2010-03-30 17:00 | 449 | 131d | 0d |
| 451 | 1.4 | **Development Testing Cycle** | 3.5d | 2010-03-31 08:00 | 2010-04-05 12:00 |  | 131d |  |
| 452 | 1.4.1 | **Phase One** | 2d | 2010-03-31 08:00 | 2010-04-01 17:00 |  | 131d |  |
| 453 | 1.4.1.1 | Library Module Tests | 4h | 2010-03-31 08:00 | 2010-03-31 12:00 | 450 | 131d | 0d |
| 454 | 1.4.1.2 | Control Table Tests | 4h | 2010-03-31 13:00 | 2010-03-31 17:00 | 453 | 131d | 0d |
| 455 | 1.4.1.3 | Business Rule Manager Test | 4h | 2010-04-01 08:00 | 2010-04-01 12:00 | 454 | 131d | 0d |
| 456 | 1.4.1.4 | Warehouse Manager Test | 4h | 2010-04-01 13:00 | 2010-04-01 17:00 | 455 | 131d | 0d |
| 457 | 1.4.2 | **Phase Two** | 0.5d | 2010-04-02 08:00 | 2010-04-02 12:00 |  | 131d |  |
| 458 | 1.4.2.1 | Composer Test | 4h | 2010-04-02 08:00 | 2010-04-02 12:00 | 456 | 131d | 0d |
| 459 | 1.4.3 | **Phase Three** | 0.5d | 2010-04-02 13:00 | 2010-04-02 17:00 |  | 131d |  |
| 460 | 1.4.3.1 | Components Tests | 4h | 2010-04-02 13:00 | 2010-04-02 17:00 | 458 | 131d | 0d |

Notes:
- 436: V.H ~ The composer builder is merged in to the libraries and control tables for processing
- 437: V.H.1 ~ The libraries are linked in with the composer builder.
- 438: V.H.2 ~ The third stage will actually build the composers for each of the various templates
- 439: V.I ~ The metadata defintion of each template type will be defined and entered in the control tables and libraries
- 440: V.I.1 ~ The Composer metadata with the composer templates will be merged for a working composer.
- 441: V.I.2 ~ This is the stage where the final modules (Perl Programs) will be created from the control tables, libraries and composers for each function type.
- 442: V.J ~ The forklift process will be built and tested using the control tables, libraries, and forklift template using the composer processes created in initial development.
- 443: V.J.1 ~ The sorter process will be built and tested using the control tables, libraries, and forklift template using the composer processes created in initial development.
- 444: V.J.2 ~ The cataloger process will be built and tested using the control tables, libraries, and forklift template using the composer processes created in initial development.
- 445: V.J.3 ~ The stocker process will be built and tested using the control tables, libraries, and forklift template using the composer processes created in initial development.
- 446: V.J.4 ~ The retriever process will be built and tested using the control tables, libraries, and forklift template using the composer processes created in initial development.
- 447: V.K ~ This is the placement and building of all the Oracle components and metadata that has been developed.
- 448: V.K.1 ~ This the the packaging and deployment plan for the application modules and directory structure
- 449: V.K.2 ~ This is the in place deployment test suite that will include all the previous tests plus tests on permissions, metadata replacement, and the entire functional process
- 450: V.K.3 ~ With each phase in the development cycle there is a test suite that will be developed and run against the application
- 451: VI. ~ This is phase one test development
- 452: VI.A ~ These tests will test each subroutine in the each library and will be designed to do regression testing on the evolution of the libraries.
- 453: VI.A.1 ~ These tests will test each of the control tables and the validity of the data and code snippets that will reside in the tables as defined by the business rule manager.
- 454: VI.A.2 ~ The business rule manager tests are test to work each area of the business manager and ensure that all of the functions in the business manager will control the data and metadata to the point of trapping out errors from being entered into the con
- 455: VI.A.3 ~ The warehouse manager with its control of moving data and controls between the warehouse and the bulk management system will need each function and procedure fully tested to ensure that all information passed is correct.
- 456: VI.A.4 ~ The phase two tests are designed primarily toward the Composer and Composer builder.
- 457: VI.B ~ The composer and composer builder tests shoulld stress test the applications and the templates, metadata, libraries, and communication between the Perl applications and the warehouse manager in its passing of information.
- 458: VI.B.1 ~ This phase tests the results (the dynamically built processes)
- 459: VI.C ~ This tests the components that are built with the composer builder and the composers.
- 460: VI.C.1 ~ This is the full integration tests

| ID | WBS | Task | Duration | Start | Finish | Predecessors | Total slack | Free slack |
| --- | --- | --- | --- | --- | --- | --- | --- | --- |
| 461 | 1.4.4 | **Phase Four** | 0.5d | 2010-04-05 08:00 | 2010-04-05 12:00 |  | 131d |  |
| 462 | 1.4.4.1 | Integration Tests | 4h | 2010-04-05 08:00 | 2010-04-05 12:00 | 460 | 131d | 0d |
| 463 | 1.5 | **Functional Testing Cycle** | 3.5d | 2010-04-05 13:00 | 2010-04-08 17:00 |  | 131d |  |
| 464 | 1.5.1 | **Phase One** | 2d | 2010-04-05 13:00 | 2010-04-07 12:00 |  | 131d |  |
| 465 | 1.5.1.1 | Library Module Tests | 4h | 2010-04-05 13:00 | 2010-04-05 17:00 | 462 | 131d | 0d |
| 466 | 1.5.1.2 | Control Table Tests | 4h | 2010-04-06 08:00 | 2010-04-06 12:00 | 465 | 131d | 0d |
| 467 | 1.5.1.3 | Business Rule Manager Test | 4h | 2010-04-06 13:00 | 2010-04-06 17:00 | 466 | 131d | 0d |
| 468 | 1.5.1.4 | Warehouse Manager Test | 4h | 2010-04-07 08:00 | 2010-04-07 12:00 | 467 | 131d | 0d |
| 469 | 1.5.2 | **Phase Two** | 0.5d | 2010-04-07 13:00 | 2010-04-07 17:00 |  | 131d |  |
| 470 | 1.5.2.1 | Composer Test | 4h | 2010-04-07 13:00 | 2010-04-07 17:00 | 468 | 131d | 0d |
| 471 | 1.5.3 | **Phase Three** | 0.5d | 2010-04-08 08:00 | 2010-04-08 12:00 |  | 131d |  |
| 472 | 1.5.3.1 | Components Tests | 4h | 2010-04-08 08:00 | 2010-04-08 12:00 | 470 | 131d | 0d |
| 473 | 1.5.4 | **Phase Four** | 0.5d | 2010-04-08 13:00 | 2010-04-08 17:00 |  | 131d |  |
| 474 | 1.5.4.1 | Integration Tests | 4h | 2010-04-08 13:00 | 2010-04-08 17:00 | 472 | 131d | 0d |
| 475 | 1.6 | **Move from Test Environment** | 1.5d | 2010-04-09 08:00 | 2010-04-12 12:00 |  | 131d |  |
| 476 | 1.6.1 | Package for Deployment | 4h | 2010-04-09 08:00 | 2010-04-09 12:00 | 474 | 131d | 0d |
| 477 | 1.6.2 | Submit for Move | 4h | 2010-04-09 13:00 | 2010-04-09 17:00 | 476 | 131d | 0d |
| 478 | 1.6.3 | Run Development Test Suite | 4h | 2010-04-12 08:00 | 2010-04-12 12:00 | 477 | 131d | 0d |
| 479 | 1.7 | **Process Signoff** | 1.5d | 2010-04-12 13:00 | 2010-04-13 17:00 |  | 131d |  |
| 480 | 1.7.1 | Acceptance Signoff | 4h | 2010-04-12 13:00 | 2010-04-12 17:00 | 478 | 131d | 0d |
| 481 | 1.7.2 | Lessons Learned | 4h | 2010-04-13 08:00 | 2010-04-13 12:00 | 480 | 131d | 0d |
| 482 | 1.7.3 | Deliver Final Documentation | 4h | 2010-04-13 13:00 | 2010-04-13 17:00 | 481 | 131d |  |

Notes:
- 461: VI.D ~ Each of these tests test the integration of the processes and their ability to work in concert and perform the overall tasks that the bulk data management system is proposed to handle.
- 462: VI.D.1 ~ There is a set of functional tests that will be run independent of development to ensure that the application does what it is suppose to do. The phases are the same as the development and some can be run in an offset concurrence with the develop
- 463: VII. ~ Testing of the base control components
- 464: VII.A ~ Library module testing
- 465: VII.A.1 ~ Control table testing
- 466: VII.A.2 ~ business rule manager testing
- 467: VII.A.3 ~ warehouse manager testing
- 468: VII.A.4 ~ Phase two is the composer builder/composer testing
- 469: VII.B ~ Composer tests will be run with the individual result sets tested for completeness and functionality.
- 470: VII.B.1 ~ Phase three will be run concurrently with phase two to ensure that the components built in phase two will fully function and perform the tasks they were built to do.
- 471: VII.C ~ Each component in the template set will be fully tested for each of the various types of files that they will need to process and ensure that their processing is correct and complete.
- 472: VII.C.1 ~ This is the final phase of testing
- 473: VII.D ~ This fully tests all the integration of each of the modules and ensures that all the processes are working and handing off to the proper follow process the correction and complete data set and information.
- 474: VII.D.1 ~ When testing is complete and signed off by the testers the packaging of the components up for deployment will begin.
- 475: VIII. ~ As defined the entire system will be packaged for deployment
- 476: VIII.A ~ This will follow the LOGSA defined methods for submitting the entire application for movement to production
- 477: VIII.B ~ When deployed the entire development test suite will be run against the application to make sure that no component fails to perform the planned and tested functionality.
- 478: VIII.C ~ The process will be signed off
- 479: IX. ~ The acceptance signoff by the management and development team will take place upon the passing of the Test Suite on the deployed application
- 480: IX.A ~ The lessons learned and the things that can be done better will be documented and the plan for long term maintenance will be defined.
- 481: IX.B ~ The documention will go through a final edit and be submitted as a complete package.
- 482: IX.C ~
