# CCBMER Bulk File Handler

Schedule from MS Project, 2009-11-02 to 2010-08-20.

## Calendars

- Standard: Mon-Fri 08:00-12:00, 13:00-17:00; Sat-Sun off.

## Schedule

| ID | WBS | Task | Duration | Start | Finish | Predecessors | Total slack | Free slack |
| --- | --- | --- | --- | --- | --- | --- | --- | --- |
| 1 | 1 | **Bulk File Handler** | 210d | 2009-11-02 08:00 | 2010-08-20 17:00 |  | 38d |  |
| 2 | 1.1 | **Concept and Design** | 3d | 2009-11-02 08:00 | 2009-11-04 17:00 |  | 38d |  |
| 3 | 1.1.1 | Concept Statement | 4h | 2009-11-02 08:00 | 2009-11-02 12:00 |  | 38d | 0d |
| 4 | 1.1.2 | Preliminary Design | 4h | 2009-11-02 13:00 | 2009-11-02 17:00 | 3 | 38d | 0d |
| 5 | 1.1.3 | **Design Review** | 1.5d | 2009-11-03 08:00 | 2009-11-04 12:00 |  | 38d |  |
| 6 | 1.1.3.1 | Overview Design | 4h | 2009-11-03 08:00 | 2009-11-03 12:00 | 4 | 38d | 0d |
| 7 | 1.1.3.2 | Requirements Definition Review | 4h | 2009-11-03 13:00 | 2009-11-03 17:00 | 6 | 38d | 0d |
| 8 | 1.1.3.3 | Functional Design Review | 4h | 2009-11-04 08:00 | 2009-11-04 12:00 | 7 | 38d | 0d |
| 9 | 1.1.4 | Design Approval | 4h | 2009-11-04 13:00 | 2009-11-04 17:00 | 8 | 38d | 0d |
| 10 | 1.2 | **Environment Setup** | 2.5d | 2009-11-05 08:00 | 2009-11-09 12:00 |  | 38d |  |
| 11 | 1.2.1 | **Hardware** | 1d | 2009-11-05 08:00 | 2009-11-05 17:00 |  | 38d |  |
| 12 | 1.2.1.1 | Servers (bulk file management) | 4h | 2009-11-05 08:00 | 2009-11-05 12:00 | 9 | 38d | 0d |
| 13 | 1.2.1.2 | Servers(database servers) | 4h | 2009-11-05 13:00 | 2009-11-05 17:00 | 12 | 38d | 0d |
| 14 | 1.2.2 | **Software** | 1.5d | 2009-11-06 08:00 | 2009-11-09 12:00 |  | 38d |  |
| 15 | 1.2.2.1 | Operating System Definition and Specifications | 4h | 2009-11-06 08:00 | 2009-11-06 12:00 | 13 | 38d | 0d |
| 16 | 1.2.2.2 | Development Tools | 4h | 2009-11-06 13:00 | 2009-11-06 17:00 | 15 | 38d | 0d |
| 17 | 1.2.2.3 | Testing Tools | 4h | 2009-11-09 08:00 | 2009-11-09 12:00 | 16 | 38d | 0d |
| 18 | 1.3 | **Technical Specifications** | 83d | 2009-11-09 13:00 | 2010-03-04 12:00 |  | 38d |  |
| 19 | 1.3.1 | Overview | 4h | 2009-11-09 13:00 | 2009-11-09 17:00 | 17 | 38d | 0d |
| 20 | 1.3.2 | **Component Definition** | 19d | 2009-11-10 08:00 | 2009-12-04 17:00 |  | 38d |  |
| 21 | 1.3.2.1 | **Directory Architecture** | 1d | 2009-11-10 08:00 | 2009-11-10 17:00 |  | 38d |  |
| 22 | 1.3.2.1.1 | Bulk Management Process Directory Architecture | 4h | 2009-11-10 08:00 | 2009-11-10 12:00 | 19 | 38d | 0d |
| 23 | 1.3.2.1.2 | Long Term Storage Directory and Maintenance | 4h | 2009-11-10 13:00 | 2009-11-10 17:00 | 22 | 38d | 0d |
| 24 | 1.3.2.2 | **Template Definition** | 10.5d | 2009-11-11 08:00 | 2009-11-25 12:00 |  | 38d |  |
| 25 | 1.3.2.2.1 | **Forklift** | 1.5d | 2009-11-11 08:00 | 2009-11-12 12:00 |  | 38d |  |
| 26 | 1.3.2.2.1.1 | Library Functions (common) | 4h | 2009-11-11 08:00 | 2009-11-11 12:00 | 23 | 38d | 0d |
| 27 | 1.3.2.2.1.2 | Library Functions (unique) | 4h | 2009-11-11 13:00 | 2009-11-11 17:00 | 26 | 38d | 0d |
| 28 | 1.3.2.2.1.3 | Template defintion with detailed documentation | 4h | 2009-11-12 08:00 | 2009-11-12 12:00 | 27 | 38d | 0d |

Notes:
- 2: I. ~ Bulk File Management Description and Signoff Approval
- 3: I.A ~ Design overview for Management Approval
- 4: I.B ~ Design Review with Management
- 5: I.C ~ Management Approval of Design
- 6: I.C.1 - Overview Design
- 7: I.C.2 - Requirements Defined Review
- 8: I.C.3 - Functional Design Presentation, Explanation and Review
- 9: I.D ~ Development Setup Environment with scaling to production
- 10: II. ~
- 11: II.A ~
- 12: II.A.1 -
- 13: II.A.2 -
- 14: II.B ~
- 15: II.B.1 -
- 16: II.B.2 -
- 17: II.B.3 -
- 18: III. ~ Overview of Technical Specifications of Overall System
- 19: III.A ~
- 20: III.B ~ Definition of projected directory design to hold the bulk files. Backup methodology trade-offs, aging of files, roll off process are covered here.
- 21: III.B.1 ~ For each process that is built dynamically there is a template
- 22: III.B.1.a - This is the definition of the directory structure for the Bulk File Management System where each process has its on directory and has the knowledge of the directory where it should put the file when it's processing is complete.
- 23: III.B.1.b - Definition of the Long Term Storage and Directory structure. Included here will be a full discussion on the long term maintenance and aging of the files.
- 24: III.B.2 ~ This template handles the different sources of incoming files
- 25: III.B.2.a ~ This template handles the re-direction of the files to the process that can actually tag the file within the CCBMWHER
- 26: III.B.2.a.i - Understand the common Library functions needed and identify them for this process
- 27: III.B.2.a.ii - Understand the unique functions that will be needed to create this process, defining the functions and the common library they should be placed. The functions should be defined, a test plan for the function, and the function development as
- 28: III.B.2.a.iii - This should be the complete template in the template format for a full defintion of each step and the calls and variables that need to be passed and recevied. This should include the common variable include file, plus the unique variables

| ID | WBS | Task | Duration | Start | Finish | Predecessors | Total slack | Free slack |
| --- | --- | --- | --- | --- | --- | --- | --- | --- |
| 29 | 1.3.2.2.2 | **Sorter** | 1.5d | 2009-11-12 13:00 | 2009-11-13 17:00 |  | 38d |  |
| 30 | 1.3.2.2.2.1 | Library Functions (common) | 4h | 2009-11-12 13:00 | 2009-11-12 17:00 | 28 | 38d | 0d |
| 31 | 1.3.2.2.2.2 | Library Functions (unique) | 4h | 2009-11-13 08:00 | 2009-11-13 12:00 | 30 | 38d | 0d |
| 32 | 1.3.2.2.2.3 | Template defintion with detailed documentation | 4h | 2009-11-13 13:00 | 2009-11-13 17:00 | 31 | 38d | 0d |
| 33 | 1.3.2.2.3 | **Cataloger** | 1.5d | 2009-11-16 08:00 | 2009-11-17 12:00 |  | 38d |  |
| 34 | 1.3.2.2.3.1 | Library Functions (common) | 4h | 2009-11-16 08:00 | 2009-11-16 12:00 | 32 | 38d | 0d |
| 35 | 1.3.2.2.3.2 | Library Functions (unique) | 4h | 2009-11-16 13:00 | 2009-11-16 17:00 | 34 | 38d | 0d |
| 36 | 1.3.2.2.3.3 | Template defintion with detailed documentation | 4h | 2009-11-17 08:00 | 2009-11-17 12:00 | 35 | 38d | 0d |
| 37 | 1.3.2.2.4 | **Stocker** | 1.5d | 2009-11-17 13:00 | 2009-11-18 17:00 |  | 38d |  |
| 38 | 1.3.2.2.4.1 | Library Functions (common) | 4h | 2009-11-17 13:00 | 2009-11-17 17:00 | 36 | 38d | 0d |
| 39 | 1.3.2.2.4.2 | Library Functions (unique) | 4h | 2009-11-18 08:00 | 2009-11-18 12:00 | 38 | 38d | 0d |
| 40 | 1.3.2.2.4.3 | Template defintion with detailed documentation | 4h | 2009-11-18 13:00 | 2009-11-18 17:00 | 39 | 38d | 0d |
| 41 | 1.3.2.2.5 | **Retriever** | 1.5d | 2009-11-19 08:00 | 2009-11-20 12:00 |  | 38d |  |
| 42 | 1.3.2.2.5.1 | Library Functions (common) | 4h | 2009-11-19 08:00 | 2009-11-19 12:00 | 40 | 38d | 0d |
| 43 | 1.3.2.2.5.2 | Library Functions (unique) | 4h | 2009-11-19 13:00 | 2009-11-19 17:00 | 42 | 38d | 0d |
| 44 | 1.3.2.2.5.3 | Template defintion with detailed documentation | 4h | 2009-11-20 08:00 | 2009-11-20 12:00 | 43 | 38d | 0d |
| 45 | 1.3.2.2.6 | **Packager** | 1.5d | 2009-11-20 13:00 | 2009-11-23 17:00 |  | 38d |  |
| 46 | 1.3.2.2.6.1 | Library Functions (common) | 4h | 2009-11-20 13:00 | 2009-11-20 17:00 | 44 | 38d | 0d |
| 47 | 1.3.2.2.6.2 | Library Functions (unique) | 4h | 2009-11-23 08:00 | 2009-11-23 12:00 | 46 | 38d | 0d |
| 48 | 1.3.2.2.6.3 | Template defintion with detailed documentation | 4h | 2009-11-23 13:00 | 2009-11-23 17:00 | 47 | 38d | 0d |
| 49 | 1.3.2.2.7 | **Sender** | 1.5d | 2009-11-24 08:00 | 2009-11-25 12:00 |  | 38d |  |
| 50 | 1.3.2.2.7.1 | Library Functions (common) | 4h | 2009-11-24 08:00 | 2009-11-24 12:00 | 48 | 38d | 0d |
| 51 | 1.3.2.2.7.2 | Library Functions (unique) | 4h | 2009-11-24 13:00 | 2009-11-24 17:00 | 50 | 38d | 0d |
| 52 | 1.3.2.2.7.3 | Template defintion with detailed documentation | 4h | 2009-11-25 08:00 | 2009-11-25 12:00 | 51 | 38d | 0d |

Notes:
- 29: III.B.2.b ~ This is the template for the processing that actually 1. rename the file 2. merge key data into the warehouse 3. create sub packages if needed
- 30: III.B.2.b.i - Understand the common Library functions needed and identify them for this process
- 31: III.B.2.b.ii - Understand the unique functions that will be needed to create this process, defining the functions and the common library they should be placed. The functions should be defined, a test plan for the function, and the function development as
- 32: III.B.2.b.iii - This should be the complete template in the template format for a full defintion of each step and the calls and variables that need to be passed and recevied. This should include the common variable include file, plus the unique variables
- 33: III.B.2.c ~ This template is the processing that takes the file(s) and moves them to long term storage.
- 34: III.B.2.c.i - Understand the common Library functions needed and identify them for this process
- 35: III.B.2.c.ii - Understand the unique functions that will be needed to create this process, defining the functions and the common library they should be placed. The functions should be defined, a test plan for the function, and the function development as
- 36: III.B.2.c.iii - This should be the complete template in the template format for a full defintion of each step and the calls and variables that need to be passed and recevied. This should include the common variable include file, plus the unique variables
- 37: III.B.2.d ~ This template is the process that retrieves various combination of files for transmission to the requestor.
- 38: III.B.2.d.i - Understand the common Library functions needed and identify them for this process
- 39: III.B.2.d.ii - Understand the unique functions that will be needed to create this process, defining the functions and the common library they should be placed. The functions should be defined, a test plan for the function, and the function development as
- 40: III.B.2.d.iii - This should be the complete template in the template format for a full defintion of each step and the calls and variables that need to be passed and recevied. This should include the common variable include file, plus the unique variables
- 41: III.B.2.e ~ This is the template that packages the files gathered by the retriever for transmitting to the requestor.
- 42: III.B.2.e.i - Understand the common Library functions needed and identify them for this process
- 43: III.B.2.e.ii - Understand the unique functions that will be needed to create this process, defining the functions and the common library they should be placed. The functions should be defined, a test plan for the function, and the function development as
- 44: III.B.2.e.iii - This should be the complete template in the template format for a full defintion of each step and the calls and variables that need to be passed and recevied. This should include the common variable include file, plus the unique variables
- 45: III.B.2.f ~ This is the template that sends the 'package' to the requestor.
- 46: III.B.2.f.i - Understand the common Library functions needed and identify them for this process
- 47: III.B.2.f.ii - Understand the unique functions that will be needed to create this process, defining the functions and the common library they should be placed. The functions should be defined, a test plan for the function, and the function development as
- 48: III.B.2.f.iii - This should be the complete template in the template format for a full defintion of each step and the calls and variables that need to be passed and recevied. This should include the common variable include file, plus the unique variables
- 49: III.B.2.g ~ This section defines the parts and process that builds the processes using the above templates.
- 50: III.B.2.g.i - Understand the common Library functions needed and identify them for this process
- 51: III.B.2.g.ii - Understand the unique functions that will be needed to create this process, defining the functions and the common library they should be placed. The functions should be defined, a test plan for the function, and the function development as
- 52: III.B.2.g.iii - This should be the complete template in the template format for a full defintion of each step and the calls and variables that need to be passed and recevied. This should include the common variable include file, plus the unique variables

| ID | WBS | Task | Duration | Start | Finish | Predecessors | Total slack | Free slack |
| --- | --- | --- | --- | --- | --- | --- | --- | --- |
| 53 | 1.3.2.3 | **Composer Defintion** | 7.5d | 2009-11-25 13:00 | 2009-12-04 17:00 |  | 38d |  |
| 54 | 1.3.2.3.1 | Control Tables | 4h | 2009-11-25 13:00 | 2009-11-25 17:00 | 52 | 38d | 0d |
| 55 | 1.3.2.3.2 | Library Modules | 4h | 2009-11-26 08:00 | 2009-11-26 12:00 | 54 | 38d | 0d |
| 56 | 1.3.2.3.3 | **Business Rule Manager** | 2.5d | 2009-11-26 13:00 | 2009-11-30 17:00 |  | 38d |  |
| 57 | 1.3.2.3.3.1 | GUID Definition | 4h | 2009-11-26 13:00 | 2009-11-26 17:00 | 55 | 38d | 0d |
| 58 | 1.3.2.3.3.2 | Control Table Interface | 4h | 2009-11-27 08:00 | 2009-11-27 12:00 | 57 | 38d | 0d |
| 59 | 1.3.2.3.3.3 | Business rule management for BRM | 4h | 2009-11-27 13:00 | 2009-11-27 17:00 | 58 | 38d | 0d |
| 60 | 1.3.2.3.3.4 | Test Procedures to test BRM | 4h | 2009-11-30 08:00 | 2009-11-30 12:00 | 59 | 38d | 0d |
| 61 | 1.3.2.3.3.5 | Documentation validation testing | 4h | 2009-11-30 13:00 | 2009-11-30 17:00 | 60 | 38d | 0d |
| 62 | 1.3.2.3.4 | **Composer Structure** | 2d | 2009-12-01 08:00 | 2009-12-02 17:00 |  | 38d |  |
| 63 | 1.3.2.3.4.1 | Library Functions (common) | 4h | 2009-12-01 08:00 | 2009-12-01 12:00 | 61 | 38d | 0d |
| 64 | 1.3.2.3.4.2 | Library Functions (unique) | 4h | 2009-12-01 13:00 | 2009-12-01 17:00 | 63 | 38d | 0d |
| 65 | 1.3.2.3.4.3 | Template defintion with detailed documentation | 4h | 2009-12-02 08:00 | 2009-12-02 12:00 | 64 | 38d | 0d |
| 66 | 1.3.2.3.4.4 | Business Rules for Composer Level | 4h | 2009-12-02 13:00 | 2009-12-02 17:00 | 65 | 38d | 0d |
| 67 | 1.3.2.3.5 | **Composer Builder** | 2d | 2009-12-03 08:00 | 2009-12-04 17:00 |  | 38d | 0d |
| 68 | 1.3.2.3.5.1 | Library Functions (common) | 4h | 2009-12-03 08:00 | 2009-12-03 12:00 | 66 | 38d | 0d |
| 69 | 1.3.2.3.5.2 | Library Functions (unique) | 4h | 2009-12-03 13:00 | 2009-12-03 17:00 | 68 | 38d | 0d |
| 70 | 1.3.2.3.5.3 | Template defintion with detailed documentation | 4h | 2009-12-04 08:00 | 2009-12-04 12:00 | 69 | 38d | 0d |
| 71 | 1.3.2.3.5.4 | Business Rules for Composer Builder | 4h | 2009-12-04 13:00 | 2009-12-04 17:00 | 70 | 38d |  |
| 72 | 1.3.3 | **Test Defintion** | 52.5d | 2009-12-07 08:00 | 2010-02-17 12:00 |  | 38d |  |
| 73 | 1.3.3.1 | **Library Module Tests** | 2.5d | 2009-12-07 08:00 | 2009-12-09 12:00 |  | 38d |  |
| 74 | 1.3.3.1.1 | Define test requirements for each function | 4h | 2009-12-07 08:00 | 2009-12-07 12:00 | 67 | 38d | 0d |
| 75 | 1.3.3.1.2 | Define in / out bound test | 4h | 2009-12-07 13:00 | 2009-12-07 17:00 | 74 | 38d | 0d |
| 76 | 1.3.3.1.3 | Define exception test | 4h | 2009-12-08 08:00 | 2009-12-08 12:00 | 75 | 38d | 0d |
| 77 | 1.3.3.1.4 | Define Null test | 4h | 2009-12-08 13:00 | 2009-12-08 17:00 | 76 | 38d | 0d |
| 78 | 1.3.3.1.5 | Define Query test | 4h | 2009-12-09 08:00 | 2009-12-09 12:00 | 77 | 38d | 0d |

Notes:
- 53: III.B.3 ~ The control tables in the Oracle database are the business rules and code snippets that are used to define the code in the respective template.
- 54: III.B.3.a ~ The library modules are Perl (PM) libraries that provide the functions for the Composer and processes to do tasks. This allows for a single point of maintenance control for all the processes.
- 55: III.B.3.b ~ The business rule manager is the process that allows the functional management of the the business control rules for each of the build and processing processes.
- 56: III.B.3.c ~ This is the structure for the building of the composers for each area. It is a template for building the routines that build routines.
- 57: III.B.3.c.i - Define and build Screen(s) for interfacing with the control tables to manage the meta data for the application
- 58: III.B.3.c.ii - Oracle package to define the data management from the GUID in insert, update, and deleting(archiving) data in the metadata control tables
- 59: III.B.3.c.iii - Business rule defintion for managing the BRM within the system
- 60: III.B.3.c.iv - Test processes to fully test the BRM as it is being built , during testing, and deployment.
- 61: III.B.3.c.v - Documentation of the validiation testing
- 62: III.B.3.d ~ This is a set of processes that build the processes for managing the data.
- 63: III.B.3.d.i - Understand the common Library functions needed and identify them for this process
- 64: III.B.3.d.ii - Understand the unique functions that will be needed to create this process, defining the functions and the common library they should be placed. The functions should be defined, a test plan for the function, and the function development as
- 65: III.B.3.d.iii - This should be the complete template in the template format for a full defintion of each step and the calls and variables that need to be passed and recevied. This should include the common variable include file, plus the unique variables
- 66: III.B.3.d.iv - This section should define the business rules for the composer of processes. Ensuring that the controlled flow meets the security and business rules necessary for metadata development.
- 67: III.B.3.e ~
- 68: III.B.3.e.i - Understand the common Library functions needed and identify them for this process
- 69: III.B.3.e.ii - Understand the unique functions that will be needed to create this process, defining the functions and the common library they should be placed. The functions should be defined, a test plan for the function, and the function development as
- 70: III.B.3.e.iii - This should be the complete template in the template format for a full defintion of each step and the calls and variables that need to be passed and recevied. This should include the common variable include file, plus the unique variables
- 71: III.B.3.e.iv - This section should define the business rules for the composer builder of composers. Ensuring that the controlled flow meets the security and business rules necessary for metadata development.
- 72: III.C ~ Tests plan to test each routine in the libraries to ensure that it functions as designed.
- 73: III.C.1 ~ Tests the data, constraints, and structure of the control tables to ensure they meets all requirements.
- 74: III.C.1.a - What is expected for each area
- 75: III.C.1.b - define a set of test with correct inputs and incorrect inputs
- 76: III.C.1.c - define test to return exception not defined above
- 77: III.C.1.d - define null test and response
- 78: III.C.1.e - define query test if appropriate

| ID | WBS | Task | Duration | Start | Finish | Predecessors | Total slack | Free slack |
| --- | --- | --- | --- | --- | --- | --- | --- | --- |
| 79 | 1.3.3.2 | **Control Table Tests** | 2.5d | 2009-12-09 13:00 | 2009-12-11 17:00 |  | 38d |  |
| 80 | 1.3.3.2.1 | Define test requirements for each table | 4h | 2009-12-09 13:00 | 2009-12-09 17:00 | 78 | 38d | 0d |
| 81 | 1.3.3.2.2 | Define in / out bound test | 4h | 2009-12-10 08:00 | 2009-12-10 12:00 | 80 | 38d | 0d |
| 82 | 1.3.3.2.3 | Define exception test | 4h | 2009-12-10 13:00 | 2009-12-10 17:00 | 81 | 38d | 0d |
| 83 | 1.3.3.2.4 | Define Null test | 4h | 2009-12-11 08:00 | 2009-12-11 12:00 | 82 | 38d | 0d |
| 84 | 1.3.3.2.5 | Define Query test | 4h | 2009-12-11 13:00 | 2009-12-11 17:00 | 83 | 38d | 0d |
| 85 | 1.3.3.3 | **Business Rule Manager Test** | 4d | 2009-12-14 08:00 | 2009-12-17 17:00 |  | 38d |  |
| 86 | 1.3.3.3.1 | Define test requirements for each function | 4h | 2009-12-14 08:00 | 2009-12-14 12:00 | 84 | 38d | 0d |
| 87 | 1.3.3.3.2 | Define in / out bound test | 4h | 2009-12-14 13:00 | 2009-12-14 17:00 | 86 | 38d | 0d |
| 88 | 1.3.3.3.3 | Define exception test | 4h | 2009-12-15 08:00 | 2009-12-15 12:00 | 87 | 38d | 0d |
| 89 | 1.3.3.3.4 | Define Null test | 4h | 2009-12-15 13:00 | 2009-12-15 17:00 | 88 | 38d | 0d |
| 90 | 1.3.3.3.5 | Define Query test | 4h | 2009-12-16 08:00 | 2009-12-16 12:00 | 89 | 38d | 0d |
| 91 | 1.3.3.3.6 | Define test for control on each field on GUID | 4h | 2009-12-16 13:00 | 2009-12-16 17:00 | 90 | 38d | 0d |
| 92 | 1.3.3.3.7 | Define test for in and out of range for each field | 4h | 2009-12-17 08:00 | 2009-12-17 12:00 | 91 | 38d | 0d |
| 93 | 1.3.3.3.8 | Define test for each control button on form | 4h | 2009-12-17 13:00 | 2009-12-17 17:00 | 92 | 38d | 0d |
| 94 | 1.3.3.4 | **Warehouse Manager Test** | 4d | 2009-12-18 08:00 | 2009-12-23 17:00 |  | 38d |  |
| 95 | 1.3.3.4.1 | Define test requirements for each function or procedure in package | 4h | 2009-12-18 08:00 | 2009-12-18 12:00 | 93 | 38d | 0d |
| 96 | 1.3.3.4.2 | Define in / out bound test | 4h | 2009-12-18 13:00 | 2009-12-18 17:00 | 95 | 38d | 0d |
| 97 | 1.3.3.4.3 | Define exception test | 4h | 2009-12-21 08:00 | 2009-12-21 12:00 | 96 | 38d | 0d |
| 98 | 1.3.3.4.4 | Define Null test | 4h | 2009-12-21 13:00 | 2009-12-21 17:00 | 97 | 38d | 0d |
| 99 | 1.3.3.4.5 | Define Query test | 4h | 2009-12-22 08:00 | 2009-12-22 12:00 | 98 | 38d | 0d |
| 100 | 1.3.3.4.6 | Define test for each interaction between functions and procedures in package | 4h | 2009-12-22 13:00 | 2009-12-22 17:00 | 99 | 38d | 0d |
| 101 | 1.3.3.4.7 | Define test for each cursor or query to database | 4h | 2009-12-23 08:00 | 2009-12-23 12:00 | 100 | 38d | 0d |
| 102 | 1.3.3.4.8 | Define test for each exception defined in package | 4h | 2009-12-23 13:00 | 2009-12-23 17:00 | 101 | 38d | 0d |

Notes:
- 79: III.C.2 ~ The business rule manager test system is a complete test suite of data, form, and use.
- 80: III.C.2.a - What is expected for each area
- 81: III.C.2.b - define a set of test with correct inputs and incorrect inputs
- 82: III.C.2.c - define test to return exception not defined above
- 83: III.C.2.d - define null test and response
- 84: III.C.2.e - define query test if appropriate
- 85: III.C.3 ~ The warehouse manager test tests all the procedures and functions that are involved witht the Warehouse manager package.
- 86: III.C.3.a - What is expected for each area
- 87: III.C.3.b - define a set of test with correct inputs and incorrect inputs
- 88: III.C.3.c - define test to return exception not defined above
- 89: III.C.3.d - define null test and response
- 90: III.C.3.e - define query test if appropriate
- 91: III.C.3.f - define tests for each GUID field control
- 92: III.C.3.g - define tests for each GUID field control in and out of range
- 93: III.C.3.h - define test for each control button on screen
- 94: III.C.4 ~ These tests are designed to handle the composition of the composers and the component builders
- 95: III.C.4.a - What is expected for each area
- 96: III.C.4.b - define a set of test with correct inputs and incorrect inputs
- 97: III.C.4.c - define test to return exception not defined above
- 98: III.C.4.d - define null test and response
- 99: III.C.4.e - define query test if appropriate
- 100: III.C.4.f - define functional interaction tests
- 101: III.C.4.g - define cursor and query tests
- 102: III.C.4.h - define tests to try each exception and expected error condition

| ID | WBS | Task | Duration | Start | Finish | Predecessors | Total slack | Free slack |
| --- | --- | --- | --- | --- | --- | --- | --- | --- |
| 103 | 1.3.3.5 | **Composer Test** | 5d | 2009-12-24 08:00 | 2009-12-30 17:00 |  | 38d |  |
| 104 | 1.3.3.5.1 | Define test requirements for each function | 4h | 2009-12-24 08:00 | 2009-12-24 12:00 | 102 | 38d | 0d |
| 105 | 1.3.3.5.2 | Define in / out bound test | 4h | 2009-12-24 13:00 | 2009-12-24 17:00 | 104 | 38d | 0d |
| 106 | 1.3.3.5.3 | Define exception test | 4h | 2009-12-25 08:00 | 2009-12-25 12:00 | 105 | 38d | 0d |
| 107 | 1.3.3.5.4 | Define Null test | 4h | 2009-12-25 13:00 | 2009-12-25 17:00 | 106 | 38d | 0d |
| 108 | 1.3.3.5.5 | Define Query test | 4h | 2009-12-28 08:00 | 2009-12-28 12:00 | 107 | 38d | 0d |
| 109 | 1.3.3.5.6 | Define create and compile tests for exception handling | 4h | 2009-12-28 13:00 | 2009-12-28 17:00 | 108 | 38d | 0d |
| 110 | 1.3.3.5.7 | Define tests for each exception and control | 4h | 2009-12-29 08:00 | 2009-12-29 12:00 | 109 | 38d | 0d |
| 111 | 1.3.3.5.8 | Define tests for execution of composer and execpted function | 4h | 2009-12-29 13:00 | 2009-12-29 17:00 | 110 | 38d | 0d |
| 112 | 1.3.3.5.9 | Define test for Perl Strict control | 4h | 2009-12-30 08:00 | 2009-12-30 12:00 | 111 | 38d | 0d |
| 113 | 1.3.3.5.10 | Define test for missing libraries | 4h | 2009-12-30 13:00 | 2009-12-30 17:00 | 112 | 38d | 0d |
| 114 | 1.3.3.6 | **Components Tests** | 26.5d | 2009-12-31 08:00 | 2010-02-05 12:00 |  | 38d |  |
| 115 | 1.3.3.6.1 | **For each component test timer control** | 3.5d | 2009-12-31 08:00 | 2010-01-05 12:00 |  | 38d |  |
| 116 | 1.3.3.6.1.1 | Forklift (FL) | 4h | 2009-12-31 08:00 | 2009-12-31 12:00 | 113 | 38d | 0d |
| 117 | 1.3.3.6.1.2 | Sorter (SO) | 4h | 2009-12-31 13:00 | 2009-12-31 17:00 | 116 | 38d | 0d |
| 118 | 1.3.3.6.1.3 | Cataloger (CT) | 4h | 2010-01-01 08:00 | 2010-01-01 12:00 | 117 | 38d | 0d |
| 119 | 1.3.3.6.1.4 | Stocker (ST) | 4h | 2010-01-01 13:00 | 2010-01-01 17:00 | 118 | 38d | 0d |
| 120 | 1.3.3.6.1.5 | Retriever (RT) | 4h | 2010-01-04 08:00 | 2010-01-04 12:00 | 119 | 38d | 0d |
| 121 | 1.3.3.6.1.6 | Packager (PR) | 4h | 2010-01-04 13:00 | 2010-01-04 17:00 | 120 | 38d | 0d |
| 122 | 1.3.3.6.1.7 | Sender (SD) | 4h | 2010-01-05 08:00 | 2010-01-05 12:00 | 121 | 38d | 0d |
| 123 | 1.3.3.6.2 | **For each component test each move file** | 3.5d | 2010-01-05 13:00 | 2010-01-08 17:00 |  | 38d |  |
| 124 | 1.3.3.6.2.1 | Forklift (FL) | 4h | 2010-01-05 13:00 | 2010-01-05 17:00 | 122 | 38d | 0d |
| 125 | 1.3.3.6.2.2 | Sorter (SO) | 4h | 2010-01-06 08:00 | 2010-01-06 12:00 | 124 | 38d | 0d |
| 126 | 1.3.3.6.2.3 | Cataloger (CT) | 4h | 2010-01-06 13:00 | 2010-01-06 17:00 | 125 | 38d | 0d |
| 127 | 1.3.3.6.2.4 | Stocker (ST) | 4h | 2010-01-07 08:00 | 2010-01-07 12:00 | 126 | 38d | 0d |
| 128 | 1.3.3.6.2.5 | Retriever (RT) | 4h | 2010-01-07 13:00 | 2010-01-07 17:00 | 127 | 38d | 0d |
| 129 | 1.3.3.6.2.6 | Packager (PR) | 4h | 2010-01-08 08:00 | 2010-01-08 12:00 | 128 | 38d | 0d |
| 130 | 1.3.3.6.2.7 | Sender (SD) | 4h | 2010-01-08 13:00 | 2010-01-08 17:00 | 129 | 38d | 0d |

Notes:
- 103: III.C.5 ~ These tests are designed to test all the functionality of each of the components according to the business rules (meta data) that is defined in the control tables.
- 104: III.C.5.a - What is expected for each area
- 105: III.C.5.b - define a set of test with correct inputs and incorrect inputs
- 106: III.C.5.c - define test to return exception not defined above
- 107: III.C.5.d - define null test and response
- 108: III.C.5.e - define query test if appropriate
- 109: III.C.5.f - Define create and compile tests for exception handling
- 110: III.C.5.g - Define tests for each exception and control
- 111: III.C.5.h - Define tests for execution of composer and execpted function
- 112: III.C.5.i - Define test for Perl Strict control
- 113: III.C.5.j - Define test for missing libraries
- 114: III.C.6 ~ This is a suite of tests to test the Bulk warehouse management system from end to end.
- 115: III.C.6.a - This tests the sleep timer algorithm for responsiveness
- 116: III.C.6.a.i -
- 117: III.C.6.a.ii -
- 118: III.C.6.a.iii -
- 119: III.C.6.a.iv -
- 120: III.C.6.a.v -
- 121: III.C.6.a.vi -
- 122: III.C.6.a.vii -
- 123: III.C.6.b - This tests the permissions and access for moving files the module is responsible to move records.
- 124: III.C.6.b.i -
- 125: III.C.6.b.ii -
- 126: III.C.6.b.iii -
- 127: III.C.6.b.iv -
- 128: III.C.6.b.v -
- 129: III.C.6.b.vi -
- 130: III.C.6.b.vii -

| ID | WBS | Task | Duration | Start | Finish | Predecessors | Total slack | Free slack |
| --- | --- | --- | --- | --- | --- | --- | --- | --- |
| 131 | 1.3.3.6.3 | **For each component test each library call** | 3.5d | 2010-01-11 08:00 | 2010-01-14 12:00 |  | 38d |  |
| 132 | 1.3.3.6.3.1 | Forklift (FL) | 4h | 2010-01-11 08:00 | 2010-01-11 12:00 | 130 | 38d | 0d |
| 133 | 1.3.3.6.3.2 | Sorter (SO) | 4h | 2010-01-11 13:00 | 2010-01-11 17:00 | 132 | 38d | 0d |
| 134 | 1.3.3.6.3.3 | Cataloger (CT) | 4h | 2010-01-12 08:00 | 2010-01-12 12:00 | 133 | 38d | 0d |
| 135 | 1.3.3.6.3.4 | Stocker (ST) | 4h | 2010-01-12 13:00 | 2010-01-12 17:00 | 134 | 38d | 0d |
| 136 | 1.3.3.6.3.5 | Retriever (RT) | 4h | 2010-01-13 08:00 | 2010-01-13 12:00 | 135 | 38d | 0d |
| 137 | 1.3.3.6.3.6 | Packager (PR) | 4h | 2010-01-13 13:00 | 2010-01-13 17:00 | 136 | 38d | 0d |
| 138 | 1.3.3.6.3.7 | Sender (SD) | 4h | 2010-01-14 08:00 | 2010-01-14 12:00 | 137 | 38d | 0d |
| 139 | 1.3.3.6.4 | **For each component test each database call** | 3.5d | 2010-01-14 13:00 | 2010-01-19 17:00 |  | 38d |  |
| 140 | 1.3.3.6.4.1 | Forklift (FL) | 4h | 2010-01-14 13:00 | 2010-01-14 17:00 | 138 | 38d | 0d |
| 141 | 1.3.3.6.4.2 | Sorter (SO) | 4h | 2010-01-15 08:00 | 2010-01-15 12:00 | 140 | 38d | 0d |
| 142 | 1.3.3.6.4.3 | Cataloger (CT) | 4h | 2010-01-15 13:00 | 2010-01-15 17:00 | 141 | 38d | 0d |
| 143 | 1.3.3.6.4.4 | Stocker (ST) | 4h | 2010-01-18 08:00 | 2010-01-18 12:00 | 142 | 38d | 0d |
| 144 | 1.3.3.6.4.5 | Retriever (RT) | 4h | 2010-01-18 13:00 | 2010-01-18 17:00 | 143 | 38d | 0d |
| 145 | 1.3.3.6.4.6 | Packager (PR) | 4h | 2010-01-19 08:00 | 2010-01-19 12:00 | 144 | 38d | 0d |
| 146 | 1.3.3.6.4.7 | Sender (SD) | 4h | 2010-01-19 13:00 | 2010-01-19 17:00 | 145 | 38d | 0d |
| 147 | 1.3.3.6.5 | **For each component test each execute/system call** | 3.5d | 2010-01-20 08:00 | 2010-01-25 12:00 |  | 38d |  |
| 148 | 1.3.3.6.5.1 | Forklift (FL) | 4h | 2010-01-20 08:00 | 2010-01-20 12:00 | 146 | 38d | 0d |
| 149 | 1.3.3.6.5.2 | Sorter (SO) | 4h | 2010-01-20 13:00 | 2010-01-20 17:00 | 148 | 38d | 0d |
| 150 | 1.3.3.6.5.3 | Cataloger (CT) | 4h | 2010-01-21 08:00 | 2010-01-21 12:00 | 149 | 38d | 0d |
| 151 | 1.3.3.6.5.4 | Stocker (ST) | 4h | 2010-01-21 13:00 | 2010-01-21 17:00 | 150 | 38d | 0d |
| 152 | 1.3.3.6.5.5 | Retriever (RT) | 4h | 2010-01-22 08:00 | 2010-01-22 12:00 | 151 | 38d | 0d |
| 153 | 1.3.3.6.5.6 | Packager (PR) | 4h | 2010-01-22 13:00 | 2010-01-22 17:00 | 152 | 38d | 0d |
| 154 | 1.3.3.6.5.7 | Sender (SD) | 4h | 2010-01-25 08:00 | 2010-01-25 12:00 | 153 | 38d | 0d |

Notes:
- 131: III.C.6.c - This tests each library call within a module, there will be several of these calls and each should be tested
- 132: III.C.6.c.i - This tests each library call within a module, there will be several of these calls and each should be tested
- 133: III.C.6.c.ii - This tests each library call within a module, there will be several of these calls and each should be tested
- 134: III.C.6.c.iii - This tests each library call within a module, there will be several of these calls and each should be tested
- 135: III.C.6.c.iv - This tests each library call within a module, there will be several of these calls and each should be tested
- 136: III.C.6.c.v - This tests each library call within a module, there will be several of these calls and each should be tested
- 137: III.C.6.c.vi - This tests each library call within a module, there will be several of these calls and each should be tested
- 138: III.C.6.c.vii - This tests each library call within a module, there will be several of these calls and each should be tested
- 139: III.C.6.d - Since most of the processes need to call the database to post or retrieve information in order to function, each call needs a test to ensure that the data passes cleanly.
- 140: III.C.6.d.i - Since most of the processes need to call the database to post or retrieve information in order to function, each call needs a test to ensure that the data passes cleanly.
- 141: III.C.6.d.ii - Since most of the processes need to call the database to post or retrieve information in order to function, each call needs a test to ensure that the data passes cleanly.
- 142: III.C.6.d.iii - Since most of the processes need to call the database to post or retrieve information in order to function, each call needs a test to ensure that the data passes cleanly.
- 143: III.C.6.d.iv - Since most of the processes need to call the database to post or retrieve information in order to function, each call needs a test to ensure that the data passes cleanly.
- 144: III.C.6.d.v - Since most of the processes need to call the database to post or retrieve information in order to function, each call needs a test to ensure that the data passes cleanly.
- 145: III.C.6.d.vi - Since most of the processes need to call the database to post or retrieve information in order to function, each call needs a test to ensure that the data passes cleanly.
- 146: III.C.6.d.vii - Since most of the processes need to call the database to post or retrieve information in order to function, each call needs a test to ensure that the data passes cleanly.
- 147: III.C.6.e - Since these modules will make calls to for commands to separate process each of these system calls will need to be tested.
- 148: III.C.6.e.i - Since these modules will make calls to for commands to separate process each of these system calls will need to be tested.
- 149: III.C.6.e.ii - Since these modules will make calls to for commands to separate process each of these system calls will need to be tested.
- 150: III.C.6.e.iii - Since these modules will make calls to for commands to separate process each of these system calls will need to be tested.
- 151: III.C.6.e.iv - Since these modules will make calls to for commands to separate process each of these system calls will need to be tested.
- 152: III.C.6.e.v - Since these modules will make calls to for commands to separate process each of these system calls will need to be tested.
- 153: III.C.6.e.vi - Since these modules will make calls to for commands to separate process each of these system calls will need to be tested.
- 154: III.C.6.e.vii - Since these modules will make calls to for commands to separate process each of these system calls will need to be tested.

| ID | WBS | Task | Duration | Start | Finish | Predecessors | Total slack | Free slack |
| --- | --- | --- | --- | --- | --- | --- | --- | --- |
| 155 | 1.3.3.6.6 | **For each component test compliation on creation** | 3.5d | 2010-01-25 13:00 | 2010-01-28 17:00 |  | 38d |  |
| 156 | 1.3.3.6.6.1 | Forklift (FL) | 4h | 2010-01-25 13:00 | 2010-01-25 17:00 | 154 | 38d | 0d |
| 157 | 1.3.3.6.6.2 | Sorter (SO) | 4h | 2010-01-26 08:00 | 2010-01-26 12:00 | 156 | 38d | 0d |
| 158 | 1.3.3.6.6.3 | Cataloger (CT) | 4h | 2010-01-26 13:00 | 2010-01-26 17:00 | 157 | 38d | 0d |
| 159 | 1.3.3.6.6.4 | Stocker (ST) | 4h | 2010-01-27 08:00 | 2010-01-27 12:00 | 158 | 38d | 0d |
| 160 | 1.3.3.6.6.5 | Retriever (RT) | 4h | 2010-01-27 13:00 | 2010-01-27 17:00 | 159 | 38d | 0d |
| 161 | 1.3.3.6.6.6 | Packager (PR) | 4h | 2010-01-28 08:00 | 2010-01-28 12:00 | 160 | 38d | 0d |
| 162 | 1.3.3.6.6.7 | Sender (SD) | 4h | 2010-01-28 13:00 | 2010-01-28 17:00 | 161 | 38d | 0d |
| 163 | 1.3.3.6.7 | **For each component test file/directory permissions** | 5.5d | 2010-01-29 08:00 | 2010-02-05 12:00 |  | 38d |  |
| 164 | 1.3.3.6.7.1 | Forklift (FL) | 4h | 2010-01-29 08:00 | 2010-01-29 12:00 | 162 | 38d | 0d |
| 165 | 1.3.3.6.7.2 | Sorter (SO) | 4h | 2010-01-29 13:00 | 2010-01-29 17:00 | 164 | 38d | 0d |
| 166 | 1.3.3.6.7.3 | Cataloger (CT) | 4h | 2010-02-01 08:00 | 2010-02-01 12:00 | 165 | 38d | 0d |
| 167 | 1.3.3.6.7.4 | Stocker (ST) | 4h | 2010-02-01 13:00 | 2010-02-01 17:00 | 166 | 38d | 0d |
| 168 | 1.3.3.6.7.5 | Retriever (RT) | 4h | 2010-02-02 08:00 | 2010-02-02 12:00 | 167 | 38d | 0d |
| 169 | 1.3.3.6.7.6 | Packager (PR) | 4h | 2010-02-02 13:00 | 2010-02-02 17:00 | 168 | 38d | 0d |
| 170 | 1.3.3.6.7.7 | Sender (SD) | 4h | 2010-02-03 08:00 | 2010-02-03 12:00 | 169 | 38d | 0d |
| 171 | 1.3.3.6.7.8 | TBD Tests | 4h | 2010-02-03 13:00 | 2010-02-03 17:00 | 170 | 38d | 0d |
| 172 | 1.3.3.6.7.9 | TBD Tests | 4h | 2010-02-04 08:00 | 2010-02-04 12:00 | 171 | 38d | 0d |
| 173 | 1.3.3.6.7.10 | TBD Tests | 4h | 2010-02-04 13:00 | 2010-02-04 17:00 | 172 | 38d | 0d |
| 174 | 1.3.3.6.7.11 | TBD Tests | 4h | 2010-02-05 08:00 | 2010-02-05 12:00 | 173 | 38d | 0d |
| 175 | 1.3.3.7 | **Integration Tests** | 8d | 2010-02-05 13:00 | 2010-02-17 12:00 |  | 38d |  |
| 176 | 1.3.3.7.1 | FL - SO | 4h | 2010-02-05 13:00 | 2010-02-05 17:00 | 174 | 38d | 0d |
| 177 | 1.3.3.7.2 | FL - WM | 4h | 2010-02-08 08:00 | 2010-02-08 12:00 | 176 | 38d | 0d |
| 178 | 1.3.3.7.3 | SO - CT | 4h | 2010-02-08 13:00 | 2010-02-08 17:00 | 177 | 38d | 0d |
| 179 | 1.3.3.7.4 | SO - WM | 4h | 2010-02-09 08:00 | 2010-02-09 12:00 | 178 | 38d | 0d |
| 180 | 1.3.3.7.5 | CT - ST | 4h | 2010-02-09 13:00 | 2010-02-09 17:00 | 179 | 38d | 0d |
| 181 | 1.3.3.7.6 | CT - WM | 4h | 2010-02-10 08:00 | 2010-02-10 12:00 | 180 | 38d | 0d |
| 182 | 1.3.3.7.7 | ST - WM | 4h | 2010-02-10 13:00 | 2010-02-10 17:00 | 181 | 38d | 0d |
| 183 | 1.3.3.7.8 | RT - PR | 4h | 2010-02-11 08:00 | 2010-02-11 12:00 | 182 | 38d | 0d |
| 184 | 1.3.3.7.9 | RT - WM | 4h | 2010-02-11 13:00 | 2010-02-11 17:00 | 183 | 38d | 0d |
| 185 | 1.3.3.7.10 | PR - SD | 4h | 2010-02-12 08:00 | 2010-02-12 12:00 | 184 | 38d | 0d |
| 186 | 1.3.3.7.11 | PR - WM | 4h | 2010-02-12 13:00 | 2010-02-12 17:00 | 185 | 38d | 0d |
| 187 | 1.3.3.7.12 | END to END IN | 4h | 2010-02-15 08:00 | 2010-02-15 12:00 | 186 | 38d | 0d |
| 188 | 1.3.3.7.13 | END to END OUT | 4h | 2010-02-15 13:00 | 2010-02-15 17:00 | 187 | 38d | 0d |
| 189 | 1.3.3.7.14 | TBD Tests | 4h | 2010-02-16 08:00 | 2010-02-16 12:00 | 188 | 38d | 0d |
| 190 | 1.3.3.7.15 | TBD Tests | 4h | 2010-02-16 13:00 | 2010-02-16 17:00 | 189 | 38d | 0d |
| 191 | 1.3.3.7.16 | TBD Tests | 4h | 2010-02-17 08:00 | 2010-02-17 12:00 | 190 | 38d | 0d |

Notes:
- 155: III.C.6.f - This tests when the process module is compiled or recompiled that all the permission that are needed are created and the compliation is correct. This will require the alteration of the control table data to test success and failure.
- 156: III.C.6.f.i - This tests when the process module is compiled or recompiled that all the permission that are needed are created and the compliation is correct. This will require the alteration of the control table data to test success and failure.
- 157: III.C.6.f.ii - This tests when the process module is compiled or recompiled that all the permission that are needed are created and the compliation is correct. This will require the alteration of the control table data to test success and failure.
- 158: III.C.6.f.iii - This tests when the process module is compiled or recompiled that all the permission that are needed are created and the compliation is correct. This will require the alteration of the control table data to test success and failure.
- 159: III.C.6.f.iv - This tests when the process module is compiled or recompiled that all the permission that are needed are created and the compliation is correct. This will require the alteration of the control table data to test success and failure.
- 160: III.C.6.f.v - This tests when the process module is compiled or recompiled that all the permission that are needed are created and the compliation is correct. This will require the alteration of the control table data to test success and failure.
- 161: III.C.6.f.vi - This tests when the process module is compiled or recompiled that all the permission that are needed are created and the compliation is correct. This will require the alteration of the control table data to test success and failure.
- 162: III.C.6.f.vii - This tests when the process module is compiled or recompiled that all the permission that are needed are created and the compliation is correct. This will require the alteration of the control table data to test success and failure.
- 163: III.C.6.g - These tests should test all directory and file permissions needed by a process module to perform correctly.
- 164: III.C.6.g.i - These tests should test all directory and file permissions needed by a process module to perform correctly.
- 165: III.C.6.g.ii - These tests should test all directory and file permissions needed by a process module to perform correctly.
- 166: III.C.6.g.iii - These tests should test all directory and file permissions needed by a process module to perform correctly.
- 167: III.C.6.g.iv - These tests should test all directory and file permissions needed by a process module to perform correctly.
- 168: III.C.6.g.v - These tests should test all directory and file permissions needed by a process module to perform correctly.
- 169: III.C.6.g.vi - These tests should test all directory and file permissions needed by a process module to perform correctly.
- 170: III.C.6.g.vii - These tests should test all directory and file permissions needed by a process module to perform correctly.
- 171: III.C.6.h -
- 172: III.C.6.i -
- 173: III.C.6.j -
- 174: III.C.6.l -
- 175: III.C.7 ~ This is the deployment plan that meets the specifications of LOGSA methodology and the needs of this project.
- 176: III.C.7.a - This is a suite of tests that test the FL to the SO for each file type process thread
- 177: III.C.7.b - This is a suite of tests that test the FL to the WM for each file type process thread
- 178: III.C.7.c - This is a suite of tests that test the SO to the CT for each file type process thread
- 179: III.C.7.d - This is a suite of tests that tests the SO to the WM for each file type process thread
- 180: III.C.7.e - This is a suite of tests that tests the CT to the ST for each file type process thread
- 181: III.C.7.f - This is a suite of tests that tests the CT to the WM for each file type process thread
- 182: III.C.7.g - This is a suite of tests that tests the ST to the WM for each file type process thread
- 183: III.C.7.h - This is a suite of tests that tests the RT to the PR for each file type process thread
- 184: III.C.7.i - This is a suite of tests that test the RT to the WM for each file type process thread
- 185: III.C.7.j - This is a suite of tests that test the PR to the SD for each file type process thread
- 186: III.C.7.k - This is a suite of tests that test the PR to the WM for each file type process thread
- 187: III.C.7.l - This is a suite of tests that test the FL to ST and all the steps in between for each file type process. This is compliation of III.C.7.a through III.C.7.g
- 188: III.C.7.m - This is a suite of tests that test the RT to the to the SD for each file type process thread. This is a compliation of III.C.7.h through III.C.7.k
- 189: III.C.7.n -
- 190: III.C.7.o -
- 191: III.C.7.p -

| ID | WBS | Task | Duration | Start | Finish | Predecessors | Total slack | Free slack |
| --- | --- | --- | --- | --- | --- | --- | --- | --- |
| 192 | 1.3.4 | **Deployment Plan** | 11d | 2010-02-17 13:00 | 2010-03-04 12:00 |  | 38d |  |
| 193 | 1.3.4.1 | **Database Table and Metadata Deployment** | 5d | 2010-02-17 13:00 | 2010-02-24 12:00 |  | 38d |  |
| 194 | 1.3.4.1.1 | LOGSA Deployment Structure Setup | 4h | 2010-02-17 13:00 | 2010-02-17 17:00 | 191 | 38d | 0d |
| 195 | 1.3.4.1.2 | Scripts for Tables | 4h | 2010-02-18 08:00 | 2010-02-18 12:00 | 194 | 38d | 0d |
| 196 | 1.3.4.1.3 | Scripts for Packages | 4h | 2010-02-18 13:00 | 2010-02-18 17:00 | 195 | 38d | 0d |
| 197 | 1.3.4.1.4 | Scripts for Contraints | 4h | 2010-02-19 08:00 | 2010-02-19 12:00 | 196 | 38d | 0d |
| 198 | 1.3.4.1.5 | Scripts for Indexes | 4h | 2010-02-19 13:00 | 2010-02-19 17:00 | 197 | 38d | 0d |
| 199 | 1.3.4.1.6 | Scripts for views | 4h | 2010-02-22 08:00 | 2010-02-22 12:00 | 198 | 38d | 0d |
| 200 | 1.3.4.1.7 | Scripts for sequences | 4h | 2010-02-22 13:00 | 2010-02-22 17:00 | 199 | 38d | 0d |
| 201 | 1.3.4.1.8 | Scripts for synonyms | 4h | 2010-02-23 08:00 | 2010-02-23 12:00 | 200 | 38d | 0d |
| 202 | 1.3.4.1.9 | Scripts for data from each table | 4h | 2010-02-23 13:00 | 2010-02-23 17:00 | 201 | 38d | 0d |
| 203 | 1.3.4.1.10 | TBD Scripts | 4h | 2010-02-24 08:00 | 2010-02-24 12:00 | 202 | 38d | 0d |
| 204 | 1.3.4.2 | **Application Deployment** | 3.5d | 2010-02-24 13:00 | 2010-03-01 17:00 |  | 38d |  |
| 205 | 1.3.4.2.1 | Module Packaging | 4h | 2010-02-24 13:00 | 2010-02-24 17:00 | 203 | 38d | 0d |
| 206 | 1.3.4.2.2 | Metadata Packaging | 4h | 2010-02-25 08:00 | 2010-02-25 12:00 | 205 | 38d | 0d |
| 207 | 1.3.4.2.3 | Team Track Definition | 4h | 2010-02-25 13:00 | 2010-02-25 17:00 | 206 | 38d | 0d |
| 208 | 1.3.4.2.4 | Module VM Check in | 4h | 2010-02-26 08:00 | 2010-02-26 12:00 | 207 | 38d | 0d |
| 209 | 1.3.4.2.5 | Metadata Packaging VM Check in | 4h | 2010-02-26 13:00 | 2010-02-26 17:00 | 208 | 38d | 0d |
| 210 | 1.3.4.2.6 | Deployment Test Suite VM Check in | 4h | 2010-03-01 08:00 | 2010-03-01 12:00 | 209 | 38d | 0d |
| 211 | 1.3.4.2.7 | Documentation VM Check in | 4h | 2010-03-01 13:00 | 2010-03-01 17:00 | 210 | 38d | 0d |
| 212 | 1.3.4.3 | **In Place Deployment Test Suite** | 2.5d | 2010-03-02 08:00 | 2010-03-04 12:00 |  | 38d | 0d |
| 213 | 1.3.4.3.1 | Determine In Place Deployment Tests needed | 4h | 2010-03-02 08:00 | 2010-03-02 12:00 | 211 | 38d | 0d |
| 214 | 1.3.4.3.2 | Package Tests | 4h | 2010-03-02 13:00 | 2010-03-02 17:00 | 213 | 38d | 0d |
| 215 | 1.3.4.3.3 | Test the package of test | 4h | 2010-03-03 08:00 | 2010-03-03 12:00 | 214 | 38d | 0d |
| 216 | 1.3.4.3.4 | Document the steps to run the test | 4h | 2010-03-03 13:00 | 2010-03-03 17:00 | 215 | 38d | 0d |
| 217 | 1.3.4.3.5 | Create the Deployment Test Suite | 4h | 2010-03-04 08:00 | 2010-03-04 12:00 | 216 | 38d |  |

Notes:
- 192: III.D ~ This is a standard method of deployment within the LOGSA Oracle databases
- 193: III.D.1 ~ Since this is a n tier metadata based system the application deployment will be worked out with LOGSA current deployment teams.
- 194: III.D.1.a -
- 195: III.D.1.a.i - scripts to create tables
- 196: III.D.1.a.ii - scripts to create packages
- 197: III.D.1.a.iii - scripts to create constraints
- 198: III.D.1.a.iv - scripts to create indexes
- 199: III.D.1.a.v - scripts to create views
- 200: III.D.1.a.vi - scripts to create sequences
- 201: III.D.1.a.vii - scripts to create synonyms
- 202: III.D.1.a.viii - scripts to load metadata for each control table
- 203: III.D.1.a.ix -
- 204: III.D.2 ~ This is a set of tests that tests the entire suite once it is in place in a production environment especially testing permissions, connectivity, and recreation on metadata changes.
- 205: III.D.2.a - The packaging of the Composer Builder, Business manager GUID system, Directory Structure Creator, etc.
- 206: III.D.2.b - Metadata packaging in XML format
- 207: III.D.2.c - Managing the Team Track steps
- 208: III.D.2.d - Check of all modules needed into VM
- 209: III.D.2.e - Check in packaging of metadata into VM
- 210: III.D.2.f - Check in of Deployement Test Suite into VM
- 211: III.D.2.g - Check in of Documentation into VM
- 212: III.D.3 ~ This is the technical signoff
- 213: III.D.3.a - Scripts to run the proper tests on the IN PLACE deployment of the Bulk Data manager system
- 214: III.D.3.b - The tests to handle the Packages
- 215: III.D.3.c - The test that tests the package tests
- 216: III.D.3.d - Documentation of the steps to run the tests
- 217: III.D.3.e - creation of the deployment test suite

| ID | WBS | Task | Duration | Start | Finish | Predecessors | Total slack | Free slack |
| --- | --- | --- | --- | --- | --- | --- | --- | --- |
| 218 | 1.4 | **Technical Signoff** | 1d | 2010-03-04 13:00 | 2010-03-05 12:00 |  | 38d |  |
| 219 | 1.4.1 | Team | 4h | 2010-03-04 13:00 | 2010-03-04 17:00 | 212 | 38d | 0d |
| 220 | 1.4.2 | Management | 4h | 2010-03-05 08:00 | 2010-03-05 12:00 | 219 | 38d | 0d |
| 221 | 1.5 | **Development Cycle** | 110.5d | 2010-03-05 13:00 | 2010-08-06 17:00 |  | 38d |  |
| 222 | 1.5.1 | **Documentation** | 14.5d | 2010-03-05 13:00 | 2010-03-25 17:00 |  | 38d |  |
| 223 | 1.5.1.1 | **System Documentation** | 3.5d | 2010-03-05 13:00 | 2010-03-10 17:00 |  | 38d |  |
| 224 | 1.5.1.1.1 | Concept | 4h | 2010-03-05 13:00 | 2010-03-05 17:00 | 220 | 38d | 0d |
| 225 | 1.5.1.1.2 | Design Overview | 4h | 2010-03-08 08:00 | 2010-03-08 12:00 | 224 | 38d | 0d |
| 226 | 1.5.1.1.3 | Product Use | 4h | 2010-03-08 13:00 | 2010-03-08 17:00 | 225 | 38d | 0d |
| 227 | 1.5.1.1.4 | Control and Processing | 4h | 2010-03-09 08:00 | 2010-03-09 12:00 | 226 | 38d | 0d |
| 228 | 1.5.1.1.5 | Maintenance and Philosophy | 4h | 2010-03-09 13:00 | 2010-03-09 17:00 | 227 | 38d | 0d |
| 229 | 1.5.1.1.6 | Components and Definitions | 4h | 2010-03-10 08:00 | 2010-03-10 12:00 | 228 | 38d | 0d |
| 230 | 1.5.1.1.7 | Reference Appendixes | 4h | 2010-03-10 13:00 | 2010-03-10 17:00 | 229 | 38d | 0d |
| 231 | 1.5.1.2 | **User Documentation** | 3.5d | 2010-03-11 08:00 | 2010-03-16 12:00 |  | 38d |  |
| 232 | 1.5.1.2.1 | Concept | 4h | 2010-03-11 08:00 | 2010-03-11 12:00 | 230 | 38d | 0d |
| 233 | 1.5.1.2.2 | Design Overview | 4h | 2010-03-11 13:00 | 2010-03-11 17:00 | 232 | 38d | 0d |
| 234 | 1.5.1.2.3 | Product Use | 4h | 2010-03-12 08:00 | 2010-03-12 12:00 | 233 | 38d | 0d |
| 235 | 1.5.1.2.4 | Control and Processing | 4h | 2010-03-12 13:00 | 2010-03-12 17:00 | 234 | 38d | 0d |
| 236 | 1.5.1.2.5 | Maintenance and Philosophy | 4h | 2010-03-15 08:00 | 2010-03-15 12:00 | 235 | 38d | 0d |
| 237 | 1.5.1.2.6 | Components and Definitions | 4h | 2010-03-15 13:00 | 2010-03-15 17:00 | 236 | 38d | 0d |
| 238 | 1.5.1.2.7 | Reference Appendixes | 4h | 2010-03-16 08:00 | 2010-03-16 12:00 | 237 | 38d | 0d |
| 239 | 1.5.1.3 | **Test Documentation** | 2.5d | 2010-03-16 13:00 | 2010-03-18 17:00 |  | 38d |  |
| 240 | 1.5.1.3.1 | Concept | 4h | 2010-03-16 13:00 | 2010-03-16 17:00 | 238 | 38d | 0d |
| 241 | 1.5.1.3.2 | Functional Description | 4h | 2010-03-17 08:00 | 2010-03-17 12:00 | 240 | 38d | 0d |
| 242 | 1.5.1.3.3 | Design | 4h | 2010-03-17 13:00 | 2010-03-17 17:00 | 241 | 38d | 0d |
| 243 | 1.5.1.3.4 | Structures and defintion | 4h | 2010-03-18 08:00 | 2010-03-18 12:00 | 242 | 38d | 0d |
| 244 | 1.5.1.3.5 | Reference Appendixes | 4h | 2010-03-18 13:00 | 2010-03-18 17:00 | 243 | 38d | 0d |

Notes:
- 218: IV. ~ Team signoff
- 219: IV.A ~ Management signoff
- 220: IV.B ~
- 221: V. ~
- 222: V.A. ~ This documentation is for the overall system and should reflect the approved concept and design signed off by management
- 223: V.A.1 ~ This documentation is primarily the business rule manager part of the application, the detailed functionality of the composer builder, the composer builders, and the template concept of the functional processes.
- 224: - overall system all components
- 225: - overall system all components
- 226: - overall system all components
- 227: - overall system all components
- 228: - overall system all components
- 229: - overall system all components
- 230: - overall system all components
- 231: V.A.2 ~ This is a compliation of the test plans and the testing process to ensure that all the components function as designed.
- 232: - User concept (executive level)
- 233: - User concept (executive level)
- 234: - User concept (executive level)
- 235: - User concept (executive level)
- 236: - User concept (executive level)
- 237: - User concept (executive level)
- 238: - User concept (executive level)
- 239: V.A.3 ~ This is the detailed documentation of the templates for the construction of each template and the reasoning behind the template design.
- 240: - overall system all components
- 241: - overall system all components
- 242: - overall system all components
- 243: - overall system all components
- 244: - overall system all components

| ID | WBS | Task | Duration | Start | Finish | Predecessors | Total slack | Free slack |
| --- | --- | --- | --- | --- | --- | --- | --- | --- |
| 245 | 1.5.1.4 | **Template Documentation** | 2.5d | 2010-03-19 08:00 | 2010-03-23 12:00 |  | 38d |  |
| 246 | 1.5.1.4.1 | Concept | 4h | 2010-03-19 08:00 | 2010-03-19 12:00 | 244 | 38d | 0d |
| 247 | 1.5.1.4.2 | Functional Description | 4h | 2010-03-19 13:00 | 2010-03-19 17:00 | 246 | 38d | 0d |
| 248 | 1.5.1.4.3 | Design | 4h | 2010-03-22 08:00 | 2010-03-22 12:00 | 247 | 38d | 0d |
| 249 | 1.5.1.4.4 | Structures and defintion | 4h | 2010-03-22 13:00 | 2010-03-22 17:00 | 248 | 38d | 0d |
| 250 | 1.5.1.4.5 | Reference Appendixes | 4h | 2010-03-23 08:00 | 2010-03-23 12:00 | 249 | 38d | 0d |
| 251 | 1.5.1.5 | **Warehouse Manager Documentation** | 2.5d | 2010-03-23 13:00 | 2010-03-25 17:00 |  | 38d |  |
| 252 | 1.5.1.5.1 | Concept | 4h | 2010-03-23 13:00 | 2010-03-23 17:00 | 250 | 38d | 0d |
| 253 | 1.5.1.5.2 | Functional Description | 4h | 2010-03-24 08:00 | 2010-03-24 12:00 | 252 | 38d | 0d |
| 254 | 1.5.1.5.3 | Design | 4h | 2010-03-24 13:00 | 2010-03-24 17:00 | 253 | 38d | 0d |
| 255 | 1.5.1.5.4 | Calls and Access | 4h | 2010-03-25 08:00 | 2010-03-25 12:00 | 254 | 38d | 0d |
| 256 | 1.5.1.5.5 | Reference Appendixes | 4h | 2010-03-25 13:00 | 2010-03-25 17:00 | 255 | 38d | 0d |
| 257 | 1.5.2 | **Test Development** | 14d | 2010-03-26 08:00 | 2010-04-14 17:00 |  | 38d |  |
| 258 | 1.5.2.1 | **Library Module Tests** | 5d | 2010-03-26 08:00 | 2010-04-01 17:00 |  | 38d |  |
| 259 | 1.5.2.1.1 | Database.pm | 4h | 2010-03-26 08:00 | 2010-03-26 12:00 | 256 | 38d | 0d |
| 260 | 1.5.2.1.2 | Storage.pm | 4h | 2010-03-26 13:00 | 2010-03-26 17:00 | 259 | 38d | 0d |
| 261 | 1.5.2.1.3 | Dataset.pm | 4h | 2010-03-29 08:00 | 2010-03-29 12:00 | 260 | 38d | 0d |
| 262 | 1.5.2.1.4 | Plog.pm | 4h | 2010-03-29 13:00 | 2010-03-29 17:00 | 261 | 38d | 0d |
| 263 | 1.5.2.1.5 | CFD.pm | 4h | 2010-03-30 08:00 | 2010-03-30 12:00 | 262 | 38d | 0d |
| 264 | 1.5.2.1.6 | ComBld.pm | 4h | 2010-03-30 13:00 | 2010-03-30 17:00 | 263 | 38d | 0d |
| 265 | 1.5.2.1.7 | Composer.pm | 4h | 2010-03-31 08:00 | 2010-03-31 12:00 | 264 | 38d | 0d |
| 266 | 1.5.2.1.8 | Sending.pm | 4h | 2010-03-31 13:00 | 2010-03-31 17:00 | 265 | 38d | 0d |
| 267 | 1.5.2.1.9 | Mail.pm | 4h | 2010-04-01 08:00 | 2010-04-01 12:00 | 266 | 38d | 0d |
| 268 | 1.5.2.1.10 | TBD | 4h | 2010-04-01 13:00 | 2010-04-01 17:00 | 267 | 38d | 0d |
| 269 | 1.5.2.2 | Control Table Tests | 4h | 2010-04-02 08:00 | 2010-04-02 12:00 | 268 | 38d | 0d |

Notes:
- 245: V.A.4 ~ The warehouse manager is the 'large' package that manages all the bulk file management that is passed and received between the bulk file management system and the CCBMWHER.
- 246: - overall system all components
- 247: - overall system all components
- 248: - overall system all components
- 249: - overall system all components
- 250: - overall system all components
- 251: V.A.5 - The warehouse manager is the 'large' package that manages all the bulk file management that is passed and received between the bulk file management system and the CCBMWHER.
- 252: - Warehouse Manager view
- 253: - Warehouse Manager view
- 254: - Warehouse Manager view
- 255: - Warehouse Manager view
- 256: - Warehouse Manager view
- 257: V.B. ~ These are the tests for the defined library modules
- 258: V.B.1 ~ These are the tests for the control tables.
- 259: V.B.1.a - This library holds all the access and calls to the database and specifically the WM
- 260: V.B.1.b - This library holds all the calls to move, store, retrieve a file in the Bulk Data Management System
- 261: V.B.1.c - This library holds all the calls to handle the data sets of information that must flow through the Bulk Data Management System
- 262: V.B.1.d - This library hold all the calls that are specific to the PowerLOG-J application
- 263: V.B.1.e - This library holds all the calls that are specific to manage the CFD files. Most of these calls will manage data and make Java/C++ calls to the CFD function library.
- 264: V.B.1.f - This library holds the calls for the Composer builder that are unique to the composer builder.
- 265: V.B.1.g - This library holds the call that are unique to the composer modules the composer builder creates.
- 266: V.B.1.h - This library is primarily used to send or receive files to a registered system through the SCP functionality.
- 267: V.B.1.i - This library holds the calls to allow the application to send e-mail to the system or data requestors. This should include the ability to attach files to the mail message in the transfering of the data.
- 268: V.B.1.j -
- 269: V.B.2 ~ These are the tests for the Business Rule Manager

| ID | WBS | Task | Duration | Start | Finish | Predecessors | Total slack | Free slack |
| --- | --- | --- | --- | --- | --- | --- | --- | --- |
| 270 | 1.5.2.3 | **Business Rule Manager Test** | 4d | 2010-04-02 13:00 | 2010-04-08 12:00 |  | 38d |  |
| 271 | 1.5.2.3.1 | GUID | 4h | 2010-04-02 13:00 | 2010-04-02 17:00 | 269 | 38d | 0d |
| 272 | 1.5.2.3.2 | Database Calls | 4h | 2010-04-05 08:00 | 2010-04-05 12:00 | 271 | 38d | 0d |
| 273 | 1.5.2.3.3 | Security | 4h | 2010-04-05 13:00 | 2010-04-05 17:00 | 272 | 38d | 0d |
| 274 | 1.5.2.3.4 | Insert | 4h | 2010-04-06 08:00 | 2010-04-06 12:00 | 273 | 38d | 0d |
| 275 | 1.5.2.3.5 | Update | 4h | 2010-04-06 13:00 | 2010-04-06 17:00 | 274 | 38d | 0d |
| 276 | 1.5.2.3.6 | Delete | 4h | 2010-04-07 08:00 | 2010-04-07 12:00 | 275 | 38d | 0d |
| 277 | 1.5.2.3.7 | Reports | 4h | 2010-04-07 13:00 | 2010-04-07 17:00 | 276 | 38d | 0d |
| 278 | 1.5.2.3.8 | Validation and Checking | 4h | 2010-04-08 08:00 | 2010-04-08 12:00 | 277 | 38d | 0d |
| 279 | 1.5.2.4 | **Warehouse Manager Test** | 3d | 2010-04-08 13:00 | 2010-04-13 12:00 |  | 38d |  |
| 280 | 1.5.2.4.1 | General Functions IN (I_) | 4h | 2010-04-08 13:00 | 2010-04-08 17:00 | 278 | 38d | 0d |
| 281 | 1.5.2.4.2 | General Functions OUT (O_) | 4h | 2010-04-09 08:00 | 2010-04-09 12:00 | 280 | 38d | 0d |
| 282 | 1.5.2.4.3 | General Functions Data Management (D_) | 4h | 2010-04-09 13:00 | 2010-04-09 17:00 | 281 | 38d | 0d |
| 283 | 1.5.2.4.4 | CFD Functions (C_) | 4h | 2010-04-12 08:00 | 2010-04-12 12:00 | 282 | 38d | 0d |
| 284 | 1.5.2.4.5 | Plog Function (F_) | 4h | 2010-04-12 13:00 | 2010-04-12 17:00 | 283 | 38d | 0d |
| 285 | 1.5.2.4.6 | TBD | 4h | 2010-04-13 08:00 | 2010-04-13 12:00 | 284 | 38d | 0d |
| 286 | 1.5.2.5 | Composer Test | 4h | 2010-04-13 13:00 | 2010-04-13 17:00 | 285 | 38d | 0d |
| 287 | 1.5.2.6 | Components Tests | 4h | 2010-04-14 08:00 | 2010-04-14 12:00 | 286 | 38d | 0d |
| 288 | 1.5.2.7 | Integration Tests | 4h | 2010-04-14 13:00 | 2010-04-14 17:00 | 287 | 38d | 0d |
| 289 | 1.5.3 | **Library Module Development** | 22.5d | 2010-04-15 08:00 | 2010-05-17 12:00 |  | 38d |  |
| 290 | 1.5.3.1 | **Database.pm** | 2.5d | 2010-04-15 08:00 | 2010-04-19 12:00 |  | 38d |  |
| 291 | 1.5.3.1.1 | Define all functions | 4h | 2010-04-15 08:00 | 2010-04-15 12:00 | 288 | 38d | 0d |
| 292 | 1.5.3.1.2 | Build test to test each function | 4h | 2010-04-15 13:00 | 2010-04-15 17:00 | 291 | 38d | 0d |
| 293 | 1.5.3.1.3 | Create each function | 4h | 2010-04-16 08:00 | 2010-04-16 12:00 | 292 | 38d | 0d |
| 294 | 1.5.3.1.4 | Determine the use of functions in other libraries | 4h | 2010-04-16 13:00 | 2010-04-16 17:00 | 293 | 38d | 0d |
| 295 | 1.5.3.1.5 | Document each function for IN/OUT function | 4h | 2010-04-19 08:00 | 2010-04-19 12:00 | 294 | 38d | 0d |

Notes:
- 270: V.B.3 ~ These are the tests for the Warehouse manager
- 271: V.B.3.a - This set of tests cover every item on the GUID for full range of functionality
- 272: V.B.3.b - This set of tests cover all the calls to the database that the BRM makes and validates both the sending data and the results.
- 273: V.B.3.c - This set of tests checks the security functions built into the application and ensures that they meet the desired level of security control. This is important with the BRM having the ability to insert code snippets into the control tables.
- 274: V.B.3.d - This set of tests validates the insertion of data into the control tables by the application to ensure that the data went in and can come out in the proper format.
- 275: V.B.3.e - this set of tests validates the updating of the data in the control tables. This set also should test the archiving of the orginial data in the archiving tables for audit control.
- 276: V.B.3.f - This set of tests vaildates that archiving of the code on deletion of the data.
- 277: V.B.3.g - This set of tests should validate the reports the BRM presents back to the user.
- 278: V.B.3.h - This set of tests should stress the validationa and checking with especially care on potential harmful scripts values.
- 279: V.B.4 ~ These are the tests for the Composer and Composer Builder
- 280: V.B.4.a - These tests should test all the I_ functions to ensure they are handling data, throwing exceptions, and maintaining data integrity on all incoming data.
- 281: V.B.4.b - These tests should test all the O_ functions to ensure they are handling data, throwing exceptions, and maintaining data integrity on all out going data.
- 282: V.B.4.c - These tests should stress the general functions in the WM package
- 283: V.B.4.d - These tests should stress all the CFD functions in the package(s)
- 284: V.B.4.e - These tests should stress all the PowerLOG functions in the package(s)
- 285: V.B.4.f -
- 286: V.B.5 ~ These are the tests for the components
- 287: V.B.6 ~ These are the integration tests
- 288: V.B.7 ~ This is the development section for the Library modules
- 289: V.C ~ This is the development section for the Template creation and defintion
- 290: V.C.1 -
- 291: -
- 292: -
- 293: -
- 294: -
- 295: -

| ID | WBS | Task | Duration | Start | Finish | Predecessors | Total slack | Free slack |
| --- | --- | --- | --- | --- | --- | --- | --- | --- |
| 296 | 1.5.3.2 | **Storage.pm** | 2.5d | 2010-04-19 13:00 | 2010-04-21 17:00 |  | 38d |  |
| 297 | 1.5.3.2.1 | Define all functions | 4h | 2010-04-19 13:00 | 2010-04-19 17:00 | 295 | 38d | 0d |
| 298 | 1.5.3.2.2 | Build test to test each function | 4h | 2010-04-20 08:00 | 2010-04-20 12:00 | 297 | 38d | 0d |
| 299 | 1.5.3.2.3 | Create each function | 4h | 2010-04-20 13:00 | 2010-04-20 17:00 | 298 | 38d | 0d |
| 300 | 1.5.3.2.4 | Determine the use of functions in other libraries | 4h | 2010-04-21 08:00 | 2010-04-21 12:00 | 299 | 38d | 0d |
| 301 | 1.5.3.2.5 | Document each function for IN/OUT function | 4h | 2010-04-21 13:00 | 2010-04-21 17:00 | 300 | 38d | 0d |
| 302 | 1.5.3.3 | **Dataset.pm** | 2.5d | 2010-04-22 08:00 | 2010-04-26 12:00 |  | 38d |  |
| 303 | 1.5.3.3.1 | Define all functions | 4h | 2010-04-22 08:00 | 2010-04-22 12:00 | 301 | 38d | 0d |
| 304 | 1.5.3.3.2 | Build test to test each function | 4h | 2010-04-22 13:00 | 2010-04-22 17:00 | 303 | 38d | 0d |
| 305 | 1.5.3.3.3 | Create each function | 4h | 2010-04-23 08:00 | 2010-04-23 12:00 | 304 | 38d | 0d |
| 306 | 1.5.3.3.4 | Determine the use of functions in other libraries | 4h | 2010-04-23 13:00 | 2010-04-23 17:00 | 305 | 38d | 0d |
| 307 | 1.5.3.3.5 | Document each function for IN/OUT function | 4h | 2010-04-26 08:00 | 2010-04-26 12:00 | 306 | 38d | 0d |
| 308 | 1.5.3.4 | **Plog.pm** | 2.5d | 2010-04-26 13:00 | 2010-04-28 17:00 |  | 38d |  |
| 309 | 1.5.3.4.1 | Define all functions | 4h | 2010-04-26 13:00 | 2010-04-26 17:00 | 307 | 38d | 0d |
| 310 | 1.5.3.4.2 | Build test to test each function | 4h | 2010-04-27 08:00 | 2010-04-27 12:00 | 309 | 38d | 0d |
| 311 | 1.5.3.4.3 | Create each function | 4h | 2010-04-27 13:00 | 2010-04-27 17:00 | 310 | 38d | 0d |
| 312 | 1.5.3.4.4 | Determine the use of functions in other libraries | 4h | 2010-04-28 08:00 | 2010-04-28 12:00 | 311 | 38d | 0d |
| 313 | 1.5.3.4.5 | Document each function for IN/OUT function | 4h | 2010-04-28 13:00 | 2010-04-28 17:00 | 312 | 38d | 0d |
| 314 | 1.5.3.5 | **CFD.pm** | 2.5d | 2010-04-29 08:00 | 2010-05-03 12:00 |  | 38d |  |
| 315 | 1.5.3.5.1 | Define all functions | 4h | 2010-04-29 08:00 | 2010-04-29 12:00 | 313 | 38d | 0d |
| 316 | 1.5.3.5.2 | Build test to test each function | 4h | 2010-04-29 13:00 | 2010-04-29 17:00 | 315 | 38d | 0d |
| 317 | 1.5.3.5.3 | Create each function | 4h | 2010-04-30 08:00 | 2010-04-30 12:00 | 316 | 38d | 0d |
| 318 | 1.5.3.5.4 | Determine the use of functions in other libraries | 4h | 2010-04-30 13:00 | 2010-04-30 17:00 | 317 | 38d | 0d |
| 319 | 1.5.3.5.5 | Document each function for IN/OUT function | 4h | 2010-05-03 08:00 | 2010-05-03 12:00 | 318 | 38d | 0d |

Notes:
- 296: V.C.2 -
- 297: -
- 298: -
- 299: -
- 300: -
- 301: -
- 302: V.C.3 -
- 303: -
- 304: -
- 305: -
- 306: -
- 307: -
- 308: V.C.4 -
- 309: -
- 310: -
- 311: -
- 312: -
- 313: -
- 314: V.C.5 -
- 315: -
- 316: -
- 317: -
- 318: -
- 319: -

| ID | WBS | Task | Duration | Start | Finish | Predecessors | Total slack | Free slack |
| --- | --- | --- | --- | --- | --- | --- | --- | --- |
| 320 | 1.5.3.6 | **ComBld.pm** | 2.5d | 2010-05-03 13:00 | 2010-05-05 17:00 |  | 38d |  |
| 321 | 1.5.3.6.1 | Define all functions | 4h | 2010-05-03 13:00 | 2010-05-03 17:00 | 319 | 38d | 0d |
| 322 | 1.5.3.6.2 | Build test to test each function | 4h | 2010-05-04 08:00 | 2010-05-04 12:00 | 321 | 38d | 0d |
| 323 | 1.5.3.6.3 | Create each function | 4h | 2010-05-04 13:00 | 2010-05-04 17:00 | 322 | 38d | 0d |
| 324 | 1.5.3.6.4 | Determine the use of functions in other libraries | 4h | 2010-05-05 08:00 | 2010-05-05 12:00 | 323 | 38d | 0d |
| 325 | 1.5.3.6.5 | Document each function for IN/OUT function | 4h | 2010-05-05 13:00 | 2010-05-05 17:00 | 324 | 38d | 0d |
| 326 | 1.5.3.7 | **Composer.pm** | 2.5d | 2010-05-06 08:00 | 2010-05-10 12:00 |  | 38d |  |
| 327 | 1.5.3.7.1 | Define all functions | 4h | 2010-05-06 08:00 | 2010-05-06 12:00 | 325 | 38d | 0d |
| 328 | 1.5.3.7.2 | Build test to test each function | 4h | 2010-05-06 13:00 | 2010-05-06 17:00 | 327 | 38d | 0d |
| 329 | 1.5.3.7.3 | Create each function | 4h | 2010-05-07 08:00 | 2010-05-07 12:00 | 328 | 38d | 0d |
| 330 | 1.5.3.7.4 | Determine the use of functions in other libraries | 4h | 2010-05-07 13:00 | 2010-05-07 17:00 | 329 | 38d | 0d |
| 331 | 1.5.3.7.5 | Document each function for IN/OUT function | 4h | 2010-05-10 08:00 | 2010-05-10 12:00 | 330 | 38d | 0d |
| 332 | 1.5.3.8 | **Sending.pm** | 2.5d | 2010-05-10 13:00 | 2010-05-12 17:00 |  | 38d |  |
| 333 | 1.5.3.8.1 | Define all functions | 4h | 2010-05-10 13:00 | 2010-05-10 17:00 | 331 | 38d | 0d |
| 334 | 1.5.3.8.2 | Build test to test each function | 4h | 2010-05-11 08:00 | 2010-05-11 12:00 | 333 | 38d | 0d |
| 335 | 1.5.3.8.3 | Create each function | 4h | 2010-05-11 13:00 | 2010-05-11 17:00 | 334 | 38d | 0d |
| 336 | 1.5.3.8.4 | Determine the use of functions in other libraries | 4h | 2010-05-12 08:00 | 2010-05-12 12:00 | 335 | 38d | 0d |
| 337 | 1.5.3.8.5 | Document each function for IN/OUT function | 4h | 2010-05-12 13:00 | 2010-05-12 17:00 | 336 | 38d | 0d |
| 338 | 1.5.3.9 | **Mail.pm** | 2.5d | 2010-05-13 08:00 | 2010-05-17 12:00 |  | 38d |  |
| 339 | 1.5.3.9.1 | Define all functions | 4h | 2010-05-13 08:00 | 2010-05-13 12:00 | 337 | 38d | 0d |
| 340 | 1.5.3.9.2 | Build test to test each function | 4h | 2010-05-13 13:00 | 2010-05-13 17:00 | 339 | 38d | 0d |
| 341 | 1.5.3.9.3 | Create each function | 4h | 2010-05-14 08:00 | 2010-05-14 12:00 | 340 | 38d | 0d |
| 342 | 1.5.3.9.4 | Determine the use of functions in other libraries | 4h | 2010-05-14 13:00 | 2010-05-14 17:00 | 341 | 38d | 0d |
| 343 | 1.5.3.9.5 | Document each function for IN/OUT function | 4h | 2010-05-17 08:00 | 2010-05-17 12:00 | 342 | 38d | 0d |

Notes:
- 320: V.C.6 -
- 321: -
- 322: -
- 323: -
- 324: -
- 325: -
- 326: V.C.7 -
- 327: -
- 328: -
- 329: -
- 330: -
- 331: -
- 332: V.C.8 -
- 333: -
- 334: -
- 335: -
- 336: -
- 337: -
- 338: V.C.9 -
- 339: -
- 340: -
- 341: -
- 342: -
- 343: -

| ID | WBS | Task | Duration | Start | Finish | Predecessors | Total slack | Free slack |
| --- | --- | --- | --- | --- | --- | --- | --- | --- |
| 344 | 1.5.4 | **Template Development** | 31.5d | 2010-05-17 13:00 | 2010-06-29 17:00 |  | 38d |  |
| 345 | 1.5.4.1 | **Forklift (FL)** | 4.5d | 2010-05-17 13:00 | 2010-05-21 17:00 |  | 38d |  |
| 346 | 1.5.4.1.1 | Header Section | 4h | 2010-05-17 13:00 | 2010-05-17 17:00 | 343 | 38d | 0d |
| 347 | 1.5.4.1.2 | Variables | 4h | 2010-05-18 08:00 | 2010-05-18 12:00 | 346 | 38d | 0d |
| 348 | 1.5.4.1.3 | Top Timer Loop | 4h | 2010-05-18 13:00 | 2010-05-18 17:00 | 347 | 38d | 0d |
| 349 | 1.5.4.1.4 | File check | 4h | 2010-05-19 08:00 | 2010-05-19 12:00 | 348 | 38d | 0d |
| 350 | 1.5.4.1.5 | Top Process Section | 4h | 2010-05-19 13:00 | 2010-05-19 17:00 | 349 | 38d | 0d |
| 351 | 1.5.4.1.6 | Processes | 4h | 2010-05-20 08:00 | 2010-05-20 12:00 | 350 | 38d | 0d |
| 352 | 1.5.4.1.7 | Bottom Process Section | 4h | 2010-05-20 13:00 | 2010-05-20 17:00 | 351 | 38d | 0d |
| 353 | 1.5.4.1.8 | Bottom Timer Loop | 4h | 2010-05-21 08:00 | 2010-05-21 12:00 | 352 | 38d | 0d |
| 354 | 1.5.4.1.9 | Close Section | 4h | 2010-05-21 13:00 | 2010-05-21 17:00 | 353 | 38d | 0d |
| 355 | 1.5.4.2 | **Sorter (SO)** | 4.5d | 2010-05-24 08:00 | 2010-05-28 12:00 |  | 38d |  |
| 356 | 1.5.4.2.1 | Header Section | 4h | 2010-05-24 08:00 | 2010-05-24 12:00 | 354 | 38d | 0d |
| 357 | 1.5.4.2.2 | Variables | 4h | 2010-05-24 13:00 | 2010-05-24 17:00 | 356 | 38d | 0d |
| 358 | 1.5.4.2.3 | Top Timer Loop | 4h | 2010-05-25 08:00 | 2010-05-25 12:00 | 357 | 38d | 0d |
| 359 | 1.5.4.2.4 | File check | 4h | 2010-05-25 13:00 | 2010-05-25 17:00 | 358 | 38d | 0d |
| 360 | 1.5.4.2.5 | Top Process Section | 4h | 2010-05-26 08:00 | 2010-05-26 12:00 | 359 | 38d | 0d |
| 361 | 1.5.4.2.6 | Processes | 4h | 2010-05-26 13:00 | 2010-05-26 17:00 | 360 | 38d | 0d |
| 362 | 1.5.4.2.7 | Bottom Process Section | 4h | 2010-05-27 08:00 | 2010-05-27 12:00 | 361 | 38d | 0d |
| 363 | 1.5.4.2.8 | Bottom Timer Loop | 4h | 2010-05-27 13:00 | 2010-05-27 17:00 | 362 | 38d | 0d |
| 364 | 1.5.4.2.9 | Close Section | 4h | 2010-05-28 08:00 | 2010-05-28 12:00 | 363 | 38d | 0d |
| 365 | 1.5.4.3 | **Cataloger (CT)** | 4.5d | 2010-05-28 13:00 | 2010-06-03 17:00 |  | 38d |  |
| 366 | 1.5.4.3.1 | Header Section | 4h | 2010-05-28 13:00 | 2010-05-28 17:00 | 364 | 38d | 0d |
| 367 | 1.5.4.3.2 | Variables | 4h | 2010-05-31 08:00 | 2010-05-31 12:00 | 366 | 38d | 0d |
| 368 | 1.5.4.3.3 | Top Timer Loop | 4h | 2010-05-31 13:00 | 2010-05-31 17:00 | 367 | 38d | 0d |
| 369 | 1.5.4.3.4 | File check | 4h | 2010-06-01 08:00 | 2010-06-01 12:00 | 368 | 38d | 0d |
| 370 | 1.5.4.3.5 | Top Process Section | 4h | 2010-06-01 13:00 | 2010-06-01 17:00 | 369 | 38d | 0d |
| 371 | 1.5.4.3.6 | Processes | 4h | 2010-06-02 08:00 | 2010-06-02 12:00 | 370 | 38d | 0d |
| 372 | 1.5.4.3.7 | Bottom Process Section | 4h | 2010-06-02 13:00 | 2010-06-02 17:00 | 371 | 38d | 0d |
| 373 | 1.5.4.3.8 | Bottom Timer Loop | 4h | 2010-06-03 08:00 | 2010-06-03 12:00 | 372 | 38d | 0d |
| 374 | 1.5.4.3.9 | Close Section | 4h | 2010-06-03 13:00 | 2010-06-03 17:00 | 373 | 38d | 0d |

Notes:
- 344: V.D ~ This is the development section for the Control Tables.
- 345: V.D.1 -
- 346: V.D.1.a - Standard header section for all processes
- 347: V.D.1.b - Common variables used by all processes with unique variables attached on end
- 348: V.D.1.c - Standard top timer loop for all processes
- 349: V.D.1.d - Standard file check routine for all processes
- 350: V.D.1.e - Standard top process section for all forklift processes
- 351: V.D.1.f - The area where the specific paragraphs for this process are located
- 352: V.D.1.g - Standard bottom process section for all forklift processes
- 353: V.D.1.h - Standard bottom timer loop for all processes
- 354: V.D.1.i - Standard close section and exception handling for all processes
- 355: V.D.2 -
- 356: V.D.2.a - Standard header section for all processes
- 357: V.D.2.b - Common variables used by all processes with unique variables attached on end
- 358: V.D.2.c - Standard top timer loop for all processes
- 359: V.D.2.d - Standard file check routine for all processes
- 360: V.D.2.e - Standard top process section for all sorter processes
- 361: V.D.2.f - The area where the specific paragraphs for this process are located
- 362: V.D.2.g - Standard bottom process section for all sorter processes
- 363: V.D.2.h - Standard bottom timer loop for all processes
- 364: V.D.2.i - Standard close section and exception handling for all processes
- 365: V.D.3 -
- 366: V.D.3.a - Standard header section for all processes
- 367: V.D.3.b - Common variables used by all processes with unique variables attached on end
- 368: V.D.3.c - Standard top timer loop for all processes
- 369: V.D.3.d - Standard file check routine for all processes
- 370: V.D.3.e - Standard top process section for all cataloger processes
- 371: V.D.3.f - The area where the specific paragraphs for this process are located
- 372: V.D.3.g - Standard bottom process section for all cataloger processes
- 373: V.D.3.h - Standard bottom timer loop for all processes
- 374: V.D.3.i - Standard close section and exception handling for all processes

| ID | WBS | Task | Duration | Start | Finish | Predecessors | Total slack | Free slack |
| --- | --- | --- | --- | --- | --- | --- | --- | --- |
| 375 | 1.5.4.4 | **Stocker (ST)** | 4.5d | 2010-06-04 08:00 | 2010-06-10 12:00 |  | 38d |  |
| 376 | 1.5.4.4.1 | Header Section | 4h | 2010-06-04 08:00 | 2010-06-04 12:00 | 374 | 38d | 0d |
| 377 | 1.5.4.4.2 | Variables | 4h | 2010-06-04 13:00 | 2010-06-04 17:00 | 376 | 38d | 0d |
| 378 | 1.5.4.4.3 | Top Timer Loop | 4h | 2010-06-07 08:00 | 2010-06-07 12:00 | 377 | 38d | 0d |
| 379 | 1.5.4.4.4 | File check | 4h | 2010-06-07 13:00 | 2010-06-07 17:00 | 378 | 38d | 0d |
| 380 | 1.5.4.4.5 | Top Process Section | 4h | 2010-06-08 08:00 | 2010-06-08 12:00 | 379 | 38d | 0d |
| 381 | 1.5.4.4.6 | Processes | 4h | 2010-06-08 13:00 | 2010-06-08 17:00 | 380 | 38d | 0d |
| 382 | 1.5.4.4.7 | Bottom Process Section | 4h | 2010-06-09 08:00 | 2010-06-09 12:00 | 381 | 38d | 0d |
| 383 | 1.5.4.4.8 | Bottom Timer Loop | 4h | 2010-06-09 13:00 | 2010-06-09 17:00 | 382 | 38d | 0d |
| 384 | 1.5.4.4.9 | Close Section | 4h | 2010-06-10 08:00 | 2010-06-10 12:00 | 383 | 38d | 0d |
| 385 | 1.5.4.5 | **Retriever (RT)** | 4.5d | 2010-06-10 13:00 | 2010-06-16 17:00 |  | 38d |  |
| 386 | 1.5.4.5.1 | Header Section | 4h | 2010-06-10 13:00 | 2010-06-10 17:00 | 384 | 38d | 0d |
| 387 | 1.5.4.5.2 | Variables | 4h | 2010-06-11 08:00 | 2010-06-11 12:00 | 386 | 38d | 0d |
| 388 | 1.5.4.5.3 | Top Timer Loop | 4h | 2010-06-11 13:00 | 2010-06-11 17:00 | 387 | 38d | 0d |
| 389 | 1.5.4.5.4 | File check | 4h | 2010-06-14 08:00 | 2010-06-14 12:00 | 388 | 38d | 0d |
| 390 | 1.5.4.5.5 | Top Process Section | 4h | 2010-06-14 13:00 | 2010-06-14 17:00 | 389 | 38d | 0d |
| 391 | 1.5.4.5.6 | Processes | 4h | 2010-06-15 08:00 | 2010-06-15 12:00 | 390 | 38d | 0d |
| 392 | 1.5.4.5.7 | Bottom Process Section | 4h | 2010-06-15 13:00 | 2010-06-15 17:00 | 391 | 38d | 0d |
| 393 | 1.5.4.5.8 | Bottom Timer Loop | 4h | 2010-06-16 08:00 | 2010-06-16 12:00 | 392 | 38d | 0d |
| 394 | 1.5.4.5.9 | Close Section | 4h | 2010-06-16 13:00 | 2010-06-16 17:00 | 393 | 38d | 0d |
| 395 | 1.5.4.6 | **Packager (PR)** | 4.5d | 2010-06-17 08:00 | 2010-06-23 12:00 |  | 38d |  |
| 396 | 1.5.4.6.1 | Header Section | 4h | 2010-06-17 08:00 | 2010-06-17 12:00 | 394 | 38d | 0d |
| 397 | 1.5.4.6.2 | Variables | 4h | 2010-06-17 13:00 | 2010-06-17 17:00 | 396 | 38d | 0d |
| 398 | 1.5.4.6.3 | Top Timer Loop | 4h | 2010-06-18 08:00 | 2010-06-18 12:00 | 397 | 38d | 0d |
| 399 | 1.5.4.6.4 | File check | 4h | 2010-06-18 13:00 | 2010-06-18 17:00 | 398 | 38d | 0d |
| 400 | 1.5.4.6.5 | Top Process Section | 4h | 2010-06-21 08:00 | 2010-06-21 12:00 | 399 | 38d | 0d |
| 401 | 1.5.4.6.6 | Processes | 4h | 2010-06-21 13:00 | 2010-06-21 17:00 | 400 | 38d | 0d |
| 402 | 1.5.4.6.7 | Bottom Process Section | 4h | 2010-06-22 08:00 | 2010-06-22 12:00 | 401 | 38d | 0d |
| 403 | 1.5.4.6.8 | Bottom Timer Loop | 4h | 2010-06-22 13:00 | 2010-06-22 17:00 | 402 | 38d | 0d |
| 404 | 1.5.4.6.9 | Close Section | 4h | 2010-06-23 08:00 | 2010-06-23 12:00 | 403 | 38d | 0d |

Notes:
- 375: V.D.4 -
- 376: V.D.4.a - Standard header section for all processes
- 377: V.D.4.b - Common variables used by all processes with unique variables attached on end
- 378: V.D.4.c - Standard top timer loop for all processes
- 379: V.D.4.d - Standard file check routine for all processes
- 380: V.D.4.e - Standard top process section for all stocker processes
- 381: V.D.4.f - The area where the specific paragraphs for this process are located
- 382: V.D.4.g - Standard bottom process section for all stocker processes
- 383: V.D.4.h - Standard bottom timer loop for all processes
- 384: V.D.4.i - Standard close section and exception handling for all processes
- 385: V.D.5 -
- 386: V.D.5.a - Standard header section for all processes
- 387: V.D.5.b - Common variables used by all processes with unique variables attached on end
- 388: V.D.5.c - Standard top timer loop for all processes
- 389: V.D.5.d - Standard file check routine for all processes
- 390: V.D.5.e - Standard top process section for all retriever processes
- 391: V.D.5.f - The area where the specific paragraphs for this process are located
- 392: V.D.5.g - Standard bottom process section for all retriever processes
- 393: V.D.5.h - Standard bottom timer loop for all processes
- 394: V.D.5.i - Standard close section and exception handling for all processes
- 395: V.D.6 -
- 396: V.D.6.a - Standard header section for all processes
- 397: V.D.6.b - Common variables used by all processes with unique variables attached on end
- 398: V.D.6.c - Standard top timer loop for all processes
- 399: V.D.6.d - Standard file check routine for all processes
- 400: V.D.6.e - Standard top process section for all packager processes
- 401: V.D.6.f - The area where the specific paragraphs for this process are located
- 402: V.D.6.g - Standard bottom process section for all packager processes
- 403: V.D.6.h - Standard bottom timer loop for all processes
- 404: V.D.6.i - Standard close section and exception handling for all processes

| ID | WBS | Task | Duration | Start | Finish | Predecessors | Total slack | Free slack |
| --- | --- | --- | --- | --- | --- | --- | --- | --- |
| 405 | 1.5.4.7 | **Sender (SD)** | 4.5d | 2010-06-23 13:00 | 2010-06-29 17:00 |  | 38d |  |
| 406 | 1.5.4.7.1 | Header Section | 4h | 2010-06-23 13:00 | 2010-06-23 17:00 | 404 | 38d | 0d |
| 407 | 1.5.4.7.2 | Variables | 4h | 2010-06-24 08:00 | 2010-06-24 12:00 | 406 | 38d | 0d |
| 408 | 1.5.4.7.3 | Top Timer Loop | 4h | 2010-06-24 13:00 | 2010-06-24 17:00 | 407 | 38d | 0d |
| 409 | 1.5.4.7.4 | File check | 4h | 2010-06-25 08:00 | 2010-06-25 12:00 | 408 | 38d | 0d |
| 410 | 1.5.4.7.5 | Top Process Section | 4h | 2010-06-25 13:00 | 2010-06-25 17:00 | 409 | 38d | 0d |
| 411 | 1.5.4.7.6 | Processes | 4h | 2010-06-28 08:00 | 2010-06-28 12:00 | 410 | 38d | 0d |
| 412 | 1.5.4.7.7 | Bottom Process Section | 4h | 2010-06-28 13:00 | 2010-06-28 17:00 | 411 | 38d | 0d |
| 413 | 1.5.4.7.8 | Bottom Timer Loop | 4h | 2010-06-29 08:00 | 2010-06-29 12:00 | 412 | 38d | 0d |
| 414 | 1.5.4.7.9 | Close Section | 4h | 2010-06-29 13:00 | 2010-06-29 17:00 | 413 | 38d | 0d |
| 415 | 1.5.5 | **Composer Builder** | 9.5d | 2010-06-30 08:00 | 2010-07-13 12:00 |  | 38d |  |
| 416 | 1.5.5.1 | **Composer Template** | 4d | 2010-06-30 08:00 | 2010-07-05 17:00 |  | 38d |  |
| 417 | 1.5.5.1.1 | Header Section | 4h | 2010-06-30 08:00 | 2010-06-30 12:00 | 414 | 38d | 0d |
| 418 | 1.5.5.1.2 | Variables | 4h | 2010-06-30 13:00 | 2010-06-30 17:00 | 417 | 38d | 0d |
| 419 | 1.5.5.1.3 | Template Loader | 4h | 2010-07-01 08:00 | 2010-07-01 12:00 | 418 | 38d | 0d |
| 420 | 1.5.5.1.4 | Control Table Load | 4h | 2010-07-01 13:00 | 2010-07-01 17:00 | 419 | 38d | 0d |
| 421 | 1.5.5.1.5 | Top Process Build Loop | 4h | 2010-07-02 08:00 | 2010-07-02 12:00 | 420 | 38d | 0d |
| 422 | 1.5.5.1.6 | Build construction paragraphs | 4h | 2010-07-02 13:00 | 2010-07-02 17:00 | 421 | 38d | 0d |
| 423 | 1.5.5.1.7 | Bottom Process Section | 4h | 2010-07-05 08:00 | 2010-07-05 12:00 | 422 | 38d | 0d |
| 424 | 1.5.5.1.8 | Close Section | 4h | 2010-07-05 13:00 | 2010-07-05 17:00 | 423 | 38d | 0d |
| 425 | 1.5.5.2 | **Composer Builder** | 3d | 2010-07-06 08:00 | 2010-07-08 17:00 |  | 38d |  |
| 426 | 1.5.5.2.1 | Composer Builder Detailed Design and Philosophy | 4h | 2010-07-06 08:00 | 2010-07-06 12:00 | 424 | 38d | 0d |
| 427 | 1.5.5.2.2 | Composer Builder Structure | 4h | 2010-07-06 13:00 | 2010-07-06 17:00 | 426 | 38d | 0d |
| 428 | 1.5.5.2.3 | Composer Builder Library | 4h | 2010-07-07 08:00 | 2010-07-07 12:00 | 427 | 38d | 0d |
| 429 | 1.5.5.2.4 | Composer Builder Metadata | 4h | 2010-07-07 13:00 | 2010-07-07 17:00 | 428 | 38d | 0d |
| 430 | 1.5.5.2.5 | Composer Builder Compiler Script | 4h | 2010-07-08 08:00 | 2010-07-08 12:00 | 429 | 38d | 0d |
| 431 | 1.5.5.2.6 | Composer Builder exception and valiation Section | 4h | 2010-07-08 13:00 | 2010-07-08 17:00 | 430 | 38d | 0d |

Notes:
- 405: V.D.7 -
- 406: V.D.7.a - Standard header section for all processes
- 407: V.D.7.b - Common variables used by all processes with unique variables attached on end
- 408: V.D.7.c - Standard top timer loop for all processes
- 409: V.D.7.d - Standard file check routine for all processes
- 410: V.D.7.e - Standard top process section for all sender processes
- 411: V.D.7.f - The area where the specific paragraphs for this process are located
- 412: V.D.7.g - Standard bottom process section for all sender processes
- 413: V.D.7.h - Standard bottom timer loop for all processes
- 414: V.D.7.i - Standard close section and exception handling for all processes
- 415: V.F
- 416: V.F.1 - This is the development of the composer template that the composer builder will use to create the necessary composers for the various functions
- 417: V.F.1.a - The section to declare the global perl info stuff
- 418: V.F.1.b - The standard variables used in all code
- 419: V.F.1.c - The section that loads the template of the process to be created
- 420: V.F.1.d - The section that loads the metadata from the control tables through the WM for building the process
- 421: V.F.1.e - The top of the process loop
- 422: V.F.1.f - The section that adds the paragraphs necessary for the process to perform its task
- 423: V.F.1.g - The bottom of the process section
- 424: V.F.1.h - The close and exception section
- 425: V.F.2 - This is the program that will build the composers. This development along with the warehouse manager and libraries are the three keys pieces of code that will generate all the other components
- 426: V.F.2.a - The concept of a program that builds programs to build programs seems a little extreme, but since all the processes have the same basic structure and rules and differ only in the definition of the file type(s) they are actually processing this l
- 427: V.F.2.b - This is the structure of the Composer Builder and should be built, reviewed and agreed that it will with its library and metadata build the modules that will build the actual processes that move and manage the incoming files and their long term
- 428: V.F.2.c - This library will contain components that do not exist in the the common libraries of the overall system. It will highly use the database, the file management, string parsing, file building libraries that will be common to all the processes. T
- 429: V.F.2.d - The metadata is more than values. It will include code snippets that are defined as paragraphs. Paragraphs will contain comments that explain exactly what they are to do and the common and uncommon variables that are required for them to funct
- 430: V.F.2.e - Since the Composer builder will be a compiled process the controls for the compilation need to be fully defined.
- 431: V.F.2.f - There are some overall handling of the exceptions and the validation of the metadata that exist in the in the construction of the composers. These exception handlers should handle proper error messaging back to the compiling function to fully e

| ID | WBS | Task | Duration | Start | Finish | Predecessors | Total slack | Free slack |
| --- | --- | --- | --- | --- | --- | --- | --- | --- |
| 432 | 1.5.5.3 | **Composer** | 2d | 2010-07-09 08:00 | 2010-07-12 17:00 |  | 38d |  |
| 433 | 1.5.5.3.1 | Composer Template Development | 4h | 2010-07-09 08:00 | 2010-07-09 12:00 | 431 | 38d | 0d |
| 434 | 1.5.5.3.2 | Composer Library Development | 4h | 2010-07-09 13:00 | 2010-07-09 17:00 | 433 | 38d | 0d |
| 435 | 1.5.5.3.3 | Composer Metadata Development | 4h | 2010-07-12 08:00 | 2010-07-12 12:00 | 434 | 38d | 0d |
| 436 | 1.5.5.3.4 | Composer Compiler Script Development | 4h | 2010-07-12 13:00 | 2010-07-12 17:00 | 435 | 38d | 0d |
| 437 | 1.5.5.4 | Composer Control | 4h | 2010-07-13 08:00 | 2010-07-13 12:00 | 436 | 38d | 0d |
| 438 | 1.5.6 | **Phase One Integration** | 11.5d | 2010-07-13 13:00 | 2010-07-28 17:00 |  | 38d |  |
| 439 | 1.5.6.1 | Control Table Data Definition | 4h | 2010-07-13 13:00 | 2010-07-13 17:00 | 437 | 38d | 0d |
| 440 | 1.5.6.2 | **Library Control Table Interface** | 8d | 2010-07-14 08:00 | 2010-07-23 17:00 |  | 38d | 0d |
| 441 | 1.5.6.2.1 | Common Library Paragraphs | 4h | 2010-07-14 08:00 | 2010-07-14 12:00 | 439 | 38d | 0d |
| 442 | 1.5.6.2.2 | Common Variable Paragraphs | 4h | 2010-07-14 13:00 | 2010-07-14 17:00 | 441 | 38d | 0d |
| 443 | 1.5.6.2.3 | Common Timer Paragraphs | 4h | 2010-07-15 08:00 | 2010-07-15 12:00 | 442 | 38d | 0d |
| 444 | 1.5.6.2.4 | Common Header Paragraphs | 4h | 2010-07-15 13:00 | 2010-07-15 17:00 | 443 | 38d | 0d |
| 445 | 1.5.6.2.5 | Forklift (FL) Process Paragraphs | 4h | 2010-07-16 08:00 | 2010-07-16 12:00 | 444 | 38d | 0d |
| 446 | 1.5.6.2.6 | Sorter (SO)Process Paragraphs | 4h | 2010-07-16 13:00 | 2010-07-16 17:00 | 445 | 38d | 0d |
| 447 | 1.5.6.2.7 | Cataloger (CT)Process Paragraphs | 4h | 2010-07-19 08:00 | 2010-07-19 12:00 | 446 | 38d | 0d |
| 448 | 1.5.6.2.8 | Stocker (ST)Process Paragraphs | 4h | 2010-07-19 13:00 | 2010-07-19 17:00 | 447 | 38d | 0d |
| 449 | 1.5.6.2.9 | Retriever (RT)Process Paragraphs | 4h | 2010-07-20 08:00 | 2010-07-20 12:00 | 448 | 38d | 0d |
| 450 | 1.5.6.2.10 | Packager (PR)Process Paragraphs | 4h | 2010-07-20 13:00 | 2010-07-20 17:00 | 449 | 38d | 0d |
| 451 | 1.5.6.2.11 | Sender (SD)Process Paragraphs | 4h | 2010-07-21 08:00 | 2010-07-21 12:00 | 450 | 38d | 0d |
| 452 | 1.5.6.2.12 | Composer Builder Paragraphs | 4h | 2010-07-21 13:00 | 2010-07-21 17:00 | 451 | 38d | 0d |
| 453 | 1.5.6.2.13 | Composer Paragraphs | 4h | 2010-07-22 08:00 | 2010-07-22 12:00 | 452 | 38d | 0d |
| 454 | 1.5.6.2.14 | CFD Paragraphs | 4h | 2010-07-22 13:00 | 2010-07-22 17:00 | 453 | 38d | 0d |
| 455 | 1.5.6.2.15 | PowerLOG Paragraphs | 4h | 2010-07-23 08:00 | 2010-07-23 12:00 | 454 | 38d | 0d |
| 456 | 1.5.6.2.16 | Other Metadata | 4h | 2010-07-23 13:00 | 2010-07-23 17:00 | 455 | 38d |  |

Notes:
- 432: V.F.3 - Composer is the Perl Procedures that are the result of the composer builder for each process type and function
- 433: V.F.3.a - Since the composers will all have the same look and feel a standard template of the structure of the code is possible.
- 434: V.F.3.b - The composer library development should work in concert with the composer builder and all components that a composer builds. However there will be a few functions that will be strictly composer and those paragraphs should go into the composer l
- 435: V.F.3.c - The composer library development should work in concert with the composer builder and all components that a composer builds. However there will be a few paragraphs and variable constructions that will be strictly composer and those paragraphs s
- 436: V.F.3.d - Since the composers can be rebuild as needed to redefine the modules/processes that they build the compiler script needs to handle controls and permission as well as the exception handling the the case of errors in the compliation.
- 437: V.F.4 - This is the program that will manage the control of the composers and the recomposition in the event of a change in the control tables through the business rule manager or an evolution of the processes in concurrent testing and control
- 438: V.G ~ The control table and business rule manager are linked with the library control table interface
- 439: V.G.1 ~ The library control interface are linked with the business rule manager and tested for completeness
- 440: V.G.2 ~ The second stage of integration is the linking and testing of the composer builder with all the library functions
- 441: V.E.2.a - These are the common Library calls paragraphs using the common variable arrays to capture the data
- 442: V.E.2.b - These are the common variable lists used in all processes
- 443: V.E.2.c - These are the standard timer paragraphs used in the processes
- 444: V.E.2.d - These are the common header paragraphs used in all processes
- 445: V.E.2.e - These are the specific paragraphs used for the forklift processes
- 446: V.E.2.f - These are the specific paragraphs used for the sorter processes
- 447: V.E.2.g - These are the specific paragraphs used for the cataloger processes
- 448: V.E.2.h - These are the specific paragraphs used for the stocker processes
- 449: V.E.2.i - These are the specific paragraphs used for the retriever processes
- 450: V.E.2.j - These are the specific paragraphs used for the paackager processes
- 451: V.E.2.k - These are the specific paragraphs used for the sender processes
- 452: V.E.2.l - These are the paragraphs that the composer builder uses to build the composers
- 453: V.E.2.m - These are the composer paragraphs that are used to build the processes
- 454: V.E.2.n - These are the paragraphs that handle the CFD file management
- 455: V.E.2.o - These are the paragraphs that handle the PowerLOG file management
- 456: V.E.2.p - These are the other Metadata paragraphs that do not fall in the above sections

| ID | WBS | Task | Duration | Start | Finish | Predecessors | Total slack | Free slack |
| --- | --- | --- | --- | --- | --- | --- | --- | --- |
| 457 | 1.5.6.3 | **Warehouse Manager** | 3d | 2010-07-26 08:00 | 2010-07-28 17:00 |  | 38d |  |
| 458 | 1.5.6.3.1 | General Functions IN (I_) | 4h | 2010-07-26 08:00 | 2010-07-26 12:00 | 440 | 38d | 0d |
| 459 | 1.5.6.3.2 | General Functions OUT (O_) | 4h | 2010-07-26 13:00 | 2010-07-26 17:00 | 458 | 38d | 0d |
| 460 | 1.5.6.3.3 | General Functions Data Management (D_) | 4h | 2010-07-27 08:00 | 2010-07-27 12:00 | 459 | 38d | 0d |
| 461 | 1.5.6.3.4 | CFD Functions (C_) | 4h | 2010-07-27 13:00 | 2010-07-27 17:00 | 460 | 38d | 0d |
| 462 | 1.5.6.3.5 | Plog Function (F_) | 4h | 2010-07-28 08:00 | 2010-07-28 12:00 | 461 | 38d | 0d |
| 463 | 1.5.6.3.6 | TBD Functions | 4h | 2010-07-28 13:00 | 2010-07-28 17:00 | 462 | 38d | 0d |
| 464 | 1.5.7 | **Phase Two Integration** | 1d | 2010-07-29 08:00 | 2010-07-29 17:00 |  | 38d |  |
| 465 | 1.5.7.1 | Composer Builder | 4h | 2010-07-29 08:00 | 2010-07-29 12:00 | 463 | 38d | 0d |
| 466 | 1.5.7.2 | Composer Builder Library Interface | 4h | 2010-07-29 13:00 | 2010-07-29 17:00 | 465 | 38d | 0d |
| 467 | 1.5.8 | **Phase Three Process Building** | 1d | 2010-07-30 08:00 | 2010-07-30 17:00 |  | 38d |  |
| 468 | 1.5.8.1 | Metadata defintion for Each Template Defintion | 4h | 2010-07-30 08:00 | 2010-07-30 12:00 | 466 | 38d | 0d |
| 469 | 1.5.8.2 | Composer Metadata merge | 4h | 2010-07-30 13:00 | 2010-07-30 17:00 | 468 | 38d | 0d |
| 470 | 1.5.9 | **Phase Four Component Integration** | 3.5d | 2010-08-02 08:00 | 2010-08-05 12:00 |  | 38d |  |
| 471 | 1.5.9.1 | Forklift | 4h | 2010-08-02 08:00 | 2010-08-02 12:00 | 469 | 38d | 0d |
| 472 | 1.5.9.2 | Sorter | 4h | 2010-08-02 13:00 | 2010-08-02 17:00 | 471 | 38d | 0d |
| 473 | 1.5.9.3 | Cataloger | 4h | 2010-08-03 08:00 | 2010-08-03 12:00 | 472 | 38d | 0d |
| 474 | 1.5.9.4 | Stocker | 4h | 2010-08-03 13:00 | 2010-08-03 17:00 | 473 | 38d | 0d |
| 475 | 1.5.9.5 | Retriever | 4h | 2010-08-04 08:00 | 2010-08-04 12:00 | 474 | 38d | 0d |
| 476 | 1.5.9.6 | Packager | 4h | 2010-08-04 13:00 | 2010-08-04 17:00 | 475 | 38d | 0d |
| 477 | 1.5.9.7 | Sender | 4h | 2010-08-05 08:00 | 2010-08-05 12:00 | 476 | 38d | 0d |
| 478 | 1.5.10 | **Deployment Plan** | 1.5d | 2010-08-05 13:00 | 2010-08-06 17:00 |  | 38d |  |
| 479 | 1.5.10.1 | Database Table and Metadata Deployment | 4h | 2010-08-05 13:00 | 2010-08-05 17:00 | 477 | 38d | 0d |
| 480 | 1.5.10.2 | Application Deployment | 4h | 2010-08-06 08:00 | 2010-08-06 12:00 | 479 | 38d | 0d |
| 481 | 1.5.10.3 | In Place Deployment Test Suite | 4h | 2010-08-06 13:00 | 2010-08-06 17:00 | 480 | 38d | 0d |

Notes:
- 457: V.G.3 - Oracle pacakge interface for all Bulk Data modules/processes
- 458: V.G.3.a - These are the general functions that handle data into the package. These include the standard parsers, redirectors, etc.
- 459: V.G.3.b - These are the general functions that handle the out bound data from the packages to the modules and processes fo the Bulk Data Management System.
- 460: V.G.3.c - These are the data management functions that take arrays of data that has been received and works with the data to putting or retrieving it from the correct locations
- 461: V.G.3.d - These are the specific functions for managing the data that is passed in or out for the CFD function (ABCD files)
- 462: V.G.3.e - These are the specific functions for managing the data that is passed in or out for the PowerLOG files (all types)
- 463: V.G.3.f -
- 464: V.H ~ The composer builder is merged in to the libraries and control tables for processing
- 465: V.H.1 ~ The libraries are linked in with the composer builder.
- 466: V.H.2 ~ The third stage will actually build the composers for each of the various templates
- 467: V.I ~ The metadata defintion of each template type will be defined and entered in the control tables and libraries
- 468: V.I.1 ~ The Composer metadata with the composer templates will be merged for a working composer.
- 469: V.I.2 ~ This is the stage where the final modules (Perl Programs) will be created from the control tables, libraries and composers for each function type.
- 470: V.J ~ The forklift process will be built and tested using the control tables, libraries, and forklift template using the composer processes created in initial development.
- 471: V.J.1 ~ The sorter process will be built and tested using the control tables, libraries, and forklift template using the composer processes created in initial development.
- 472: V.J.2 ~ The cataloger process will be built and tested using the control tables, libraries, and forklift template using the composer processes created in initial development.
- 473: V.J.3 ~ The stocker process will be built and tested using the control tables, libraries, and forklift template using the composer processes created in initial development.
- 474: V.J.4 ~ The retriever process will be built and tested using the control tables, libraries, and forklift template using the composer processes created in initial development.
- 475: V.J.5 ~ The packager process will be built and tested using the control tables, libraries, and forklift template using the composer processes created in initial development.
- 476: V.J.6 ~ The sender process will be built and tested using the control tables, libraries, and forklift template using the composer processes created in initial development.
- 477: V.J.7 ~ This is the development of the deployment plan for moving the applications and data to the production CCBMWHER
- 478: V.K ~ This is the placement and building of all the Oracle components and metadata that has been developed.
- 479: V.K.1 ~ This the the packaging and deployment plan for the application modules and directory structure
- 480: V.K.2 ~ This is the in place deployment test suite that will include all the previous tests plus tests on permissions, metadata replacement, and the entire functional process
- 481: V.K.3 ~ With each phase in the development cycle there is a test suite that will be developed and run against the application

| ID | WBS | Task | Duration | Start | Finish | Predecessors | Total slack | Free slack |
| --- | --- | --- | --- | --- | --- | --- | --- | --- |
| 482 | 1.6 | **Development Testing Cycle** | 3.5d | 2010-08-09 08:00 | 2010-08-12 12:00 |  | 38d |  |
| 483 | 1.6.1 | **Phase One** | 2d | 2010-08-09 08:00 | 2010-08-10 17:00 |  | 38d |  |
| 484 | 1.6.1.1 | Library Module Tests | 4h | 2010-08-09 08:00 | 2010-08-09 12:00 | 481 | 38d | 0d |
| 485 | 1.6.1.2 | Control Table Tests | 4h | 2010-08-09 13:00 | 2010-08-09 17:00 | 484 | 38d | 0d |
| 486 | 1.6.1.3 | Business Rule Manager Test | 4h | 2010-08-10 08:00 | 2010-08-10 12:00 | 485 | 38d | 0d |
| 487 | 1.6.1.4 | Warehouse Manager Test | 4h | 2010-08-10 13:00 | 2010-08-10 17:00 | 486 | 38d | 0d |
| 488 | 1.6.2 | **Phase Two** | 0.5d | 2010-08-11 08:00 | 2010-08-11 12:00 |  | 38d |  |
| 489 | 1.6.2.1 | Composer Test | 4h | 2010-08-11 08:00 | 2010-08-11 12:00 | 487 | 38d | 0d |
| 490 | 1.6.3 | **Phase Three** | 0.5d | 2010-08-11 13:00 | 2010-08-11 17:00 |  | 38d |  |
| 491 | 1.6.3.1 | Components Tests | 4h | 2010-08-11 13:00 | 2010-08-11 17:00 | 489 | 38d | 0d |
| 492 | 1.6.4 | **Phase Four** | 0.5d | 2010-08-12 08:00 | 2010-08-12 12:00 |  | 38d |  |
| 493 | 1.6.4.1 | Integration Tests | 4h | 2010-08-12 08:00 | 2010-08-12 12:00 | 491 | 38d | 0d |
| 494 | 1.7 | **Functional Testing Cycle** | 3.5d | 2010-08-12 13:00 | 2010-08-17 17:00 |  | 38d |  |
| 495 | 1.7.1 | **Phase One** | 2d | 2010-08-12 13:00 | 2010-08-16 12:00 |  | 38d |  |
| 496 | 1.7.1.1 | Library Module Tests | 4h | 2010-08-12 13:00 | 2010-08-12 17:00 | 493 | 38d | 0d |
| 497 | 1.7.1.2 | Control Table Tests | 4h | 2010-08-13 08:00 | 2010-08-13 12:00 | 496 | 38d | 0d |
| 498 | 1.7.1.3 | Business Rule Manager Test | 4h | 2010-08-13 13:00 | 2010-08-13 17:00 | 497 | 38d | 0d |
| 499 | 1.7.1.4 | Warehouse Manager Test | 4h | 2010-08-16 08:00 | 2010-08-16 12:00 | 498 | 38d | 0d |
| 500 | 1.7.2 | **Phase Two** | 0.5d | 2010-08-16 13:00 | 2010-08-16 17:00 |  | 38d |  |
| 501 | 1.7.2.1 | Composer Test | 4h | 2010-08-16 13:00 | 2010-08-16 17:00 | 499 | 38d | 0d |
| 502 | 1.7.3 | **Phase Three** | 0.5d | 2010-08-17 08:00 | 2010-08-17 12:00 |  | 38d |  |
| 503 | 1.7.3.1 | Components Tests | 4h | 2010-08-17 08:00 | 2010-08-17 12:00 | 501 | 38d | 0d |
| 504 | 1.7.4 | **Phase Four** | 0.5d | 2010-08-17 13:00 | 2010-08-17 17:00 |  | 38d |  |
| 505 | 1.7.4.1 | Integration Tests | 4h | 2010-08-17 13:00 | 2010-08-17 17:00 | 503 | 38d | 0d |

Notes:
- 482: VI. ~ This is phase one test development
- 483: VI.A ~ These tests will test each subroutine in the each library and will be designed to do regression testing on the evolution of the libraries.
- 484: VI.A.1 ~ These tests will test each of the control tables and the validity of the data and code snippets that will reside in the tables as defined by the business rule manager.
- 485: VI.A.2 ~ The business rule manager tests are test to work each area of the business manager and ensure that all of the functions in the business manager will control the data and metadata to the point of trapping out errors from being entered into the con
- 486: VI.A.3 ~ The warehouse manager with its control of moving data and controls between the warehouse and the bulk management system will need each function and procedure fully tested to ensure that all information passed is correct.
- 487: VI.A.4 ~ The phase two tests are designed primarily toward the Composer and Composer builder.
- 488: VI.B ~ The composer and composer builder tests shoulld stress test the applications and the templates, metadata, libraries, and communication between the Perl applications and the warehouse manager in its passing of information.
- 489: VI.B.1 ~ This phase tests the results (the dynamically built processes)
- 490: VI.C ~ This tests the components that are built with the composer builder and the composers.
- 491: VI.C.1 ~ This is the full integration tests
- 492: VI.D ~ Each of these tests test the integration of the processes and their ability to work in concert and perform the overall tasks that the bulk data management system is proposed to handle.
- 493: VI.D.1 ~ There is a set of functional tests that will be run independent of development to ensure that the application does what it is suppose to do. The phases are the same as the development and some can be run in an offset concurrence with the develop
- 494: VII. ~ Testing of the base control components
- 495: VII.A ~ Library module testing
- 496: VII.A.1 ~ Control table testing
- 497: VII.A.2 ~ business rule manager testing
- 498: VII.A.3 ~ warehouse manager testing
- 499: VII.A.4 ~ Phase two is the composer builder/composer testing
- 500: VII.B ~ Composer tests will be run with the individual result sets tested for completeness and functionality.
- 501: VII.B.1 ~ Phase three will be run concurrently with phase two to ensure that the components built in phase two will fully function and perform the tasks they were built to do.
- 502: VII.C ~ Each component in the template set will be fully tested for each of the various types of files that they will need to process and ensure that their processing is correct and complete.
- 503: VII.C.1 ~ This is the final phase of testing
- 504: VII.D ~ This fully tests all the integration of each of the modules and ensures that all the processes are working and handing off to the proper follow process the correction and complete data set and information.
- 505: VII.D.1 ~ When testing is complete and signed off by the testers the packaging of the components up for deployment will begin.

| ID | WBS | Task | Duration | Start | Finish | Predecessors | Total slack | Free slack |
| --- | --- | --- | --- | --- | --- | --- | --- | --- |
| 506 | 1.8 | **Move from Test Environment** | 1.5d | 2010-08-18 08:00 | 2010-08-19 12:00 |  | 38d |  |
| 507 | 1.8.1 | Package for Deployment | 4h | 2010-08-18 08:00 | 2010-08-18 12:00 | 505 | 38d | 0d |
| 508 | 1.8.2 | Submit for Move | 4h | 2010-08-18 13:00 | 2010-08-18 17:00 | 507 | 38d | 0d |
| 509 | 1.8.3 | Run Development Test Suite | 4h | 2010-08-19 08:00 | 2010-08-19 12:00 | 508 | 38d | 0d |
| 510 | 1.9 | **Process Signoff** | 1.5d | 2010-08-19 13:00 | 2010-08-20 17:00 |  | 38d |  |
| 511 | 1.9.1 | Acceptance Signoff | 4h | 2010-08-19 13:00 | 2010-08-19 17:00 | 509 | 38d | 0d |
| 512 | 1.9.2 | Lessons Learned | 4h | 2010-08-20 08:00 | 2010-08-20 12:00 | 511 | 38d | 0d |
| 513 | 1.9.3 | Deliver Final Documentation | 4h | 2010-08-20 13:00 | 2010-08-20 17:00 | 512 | 38d |  |

Notes:
- 506: VIII. ~ As defined the entire system will be packaged for deployment
- 507: VIII.A ~ This will follow the LOGSA defined methods for submitting the entire application for movement to production
- 508: VIII.B ~ When deployed the entire development test suite will be run against the application to make sure that no component fails to perform the planned and tested functionality.
- 509: VIII.C ~ The process will be signed off
- 510: IX. ~ The acceptance signoff by the management and development team will take place upon the passing of the Test Suite on the deployed application
- 511: IX.A ~ The lessons learned and the things that can be done better will be documented and the plan for long term maintenance will be defined.
- 512: IX.B ~ The documention will go through a final edit and be submitted as a complete package.
- 513: IX.C ~
