# LOGSA CCBMER CCBMDW

Schedule from MS Project, 2009-11-02 to 2009-12-09.

## Calendars

- Standard: Mon-Fri 08:00-12:00, 13:00-17:00; Sat-Sun off.

## Schedule

| ID | WBS | Task | Duration | Start | Finish | Predecessors | Total slack | Free slack |
| --- | --- | --- | --- | --- | --- | --- | --- | --- |
| 1 | 1 | **CCBMDW Core** | 28d? | 2009-11-02 08:00 | 2009-12-09 17:00 |  | 0d |  |
| 2 | 1.1 | **RDR** | 5d? | 2009-11-02 08:00 | 2009-11-06 17:00 |  | 23d |  |
| 3 | 1.1.1 | **Get RDR setup** | 3.75d | 2009-11-02 08:00 | 2009-11-05 15:00 |  | 24.25d |  |
| 4 | 1.1.1.1 | Chris's SAR approval | 1h | 2009-11-02 08:00 | 2009-11-02 09:00 |  | 27.88d |  |
| 5 | 1.1.1.2 | Request RDP | 1h | 2009-11-02 08:00 | 2009-11-02 09:00 |  | 24.25d | 0d |
| 6 | 1.1.1.3 | Pre-Production Checkbox | 1h | 2009-11-02 09:00 | 2009-11-02 10:00 | 5 | 24.25d | 0d |
| 7 | 1.1.1.4 | Request RDR | 1h | 2009-11-02 10:00 | 2009-11-02 11:00 | 6 | 24.25d | 0d |
| 8 | 1.1.1.5 | Request ECP | 1h | 2009-11-02 11:00 | 2009-11-02 12:00 | 7 | 24.25d | 0d |
| 9 | 1.1.1.6 | Team Track | 1h | 2009-11-02 13:00 | 2009-11-02 14:00 | 8 | 24.25d | 0d |
| 10 | 1.1.1.7 | **Version Manager** | 1.12d | 2009-11-02 14:00 | 2009-11-03 15:00 | 9 | 24.25d | 0d |
| 11 | 1.1.1.7.1 | **VM folders** | 1.12d | 2009-11-02 14:00 | 2009-11-03 15:00 |  | 24.25d |  |
| 12 | 1.1.1.7.1.1 | E-mail with folder details | 1h | 2009-11-02 14:00 | 2009-11-02 15:00 |  | 24.25d | 0d |
| 13 | 1.1.1.7.1.2 | Folders created | 1d | 2009-11-02 15:00 | 2009-11-03 15:00 | 12 | 24.25d |  |
| 14 | 1.1.1.7.2 | Oracle folder | 1d | 2009-11-02 14:00 | 2009-11-03 14:00 |  | 24.38d |  |
| 15 | 1.1.1.7.3 | Java folder | 1d | 2009-11-02 14:00 | 2009-11-03 14:00 |  | 24.38d |  |
| 16 | 1.1.1.8 | Do we need to adjust anything in TeamTrack for Susan/Gene | 1d | 2009-11-03 15:00 | 2009-11-04 15:00 | 10 | 24.25d | 0d |
| 17 | 1.1.1.9 | FAB -> TAB -> Estimates -> Tasks | 1d | 2009-11-04 15:00 | 2009-11-05 15:00 | 16 | 24.25d |  |
| 19 | 1.1.2 | **LEC Core Schema Setup** | 5d? | 2009-11-02 08:00 | 2009-11-06 17:00 |  | 23d |  |
| 20 | 1.1.2.1 | **E-mail account "logsa.ccbmdw@conus.army.mil"** | 0.25d | 2009-11-02 08:00 | 2009-11-02 10:00 |  | 27.75d |  |
| 21 | 1.1.2.1.1 | Request e-mail addresses | 1h | 2009-11-02 08:00 | 2009-11-02 09:00 |  | 27.75d | 0d |
| 22 | 1.1.2.1.2 | Incorporate into maintain_ccbmdw_world procedure | 1h | 2009-11-02 09:00 | 2009-11-02 10:00 | 21 | 27.75d |  |
| 23 | 1.1.2.2 | **Control Processes** | 5d? | 2009-11-02 08:00 | 2009-11-06 17:00 |  | 23d |  |
| 24 | 1.1.2.2.1 | Merge for reloads | 1d? | 2009-11-02 08:00 | 2009-11-02 17:00 |  | 27d |  |
| 26 | 1.1.2.2.2 | **ccbmdw_cmd_tabl** | 5d | 2009-11-02 08:00 | 2009-11-06 17:00 |  | 23d |  |
| 27 | 1.1.2.2.2.1 | 170 Sequences | 1h | 2009-11-02 08:00 | 2009-11-02 09:00 |  | 23d | 0d |

| ID | WBS | Task | Duration | Start | Finish | Predecessors | Total slack | Free slack |
| --- | --- | --- | --- | --- | --- | --- | --- | --- |
| 28 | 1.1.2.2.2.2 | **180 Tables** | 4.12d | 2009-11-02 09:00 | 2009-11-06 10:00 |  | 23d |  |
| 29 | 1.1.2.2.2.2.1 | base | 4d | 2009-11-02 09:00 | 2009-11-06 09:00 | 27 | 23d | 0d |
| 30 | 1.1.2.2.2.2.2 | audit | 1h | 2009-11-06 09:00 | 2009-11-06 10:00 | 29 | 23.62d | 0d |
| 31 | 1.1.2.2.2.3 | 210 Indexes | 1h | 2009-11-06 09:00 | 2009-11-06 10:00 | 29 | 23.75d |  |
| 32 | 1.1.2.2.2.4 | 220 Contraints | 1h | 2009-11-06 09:00 | 2009-11-06 10:00 | 29 | 23.75d |  |
| 33 | 1.1.2.2.2.5 | **280 Triggers** | 0.25d | 2009-11-06 09:00 | 2009-11-06 11:00 |  | 23.62d |  |
| 34 | 1.1.2.2.2.5.1 | sequence | 1h | 2009-11-06 09:00 | 2009-11-06 10:00 | 29 | 23.75d |  |
| 35 | 1.1.2.2.2.5.2 | audit | 1h | 2009-11-06 10:00 | 2009-11-06 11:00 | 30 | 23.62d |  |
| 36 | 1.1.2.2.2.6 | 290 Synonyms | 1h | 2009-11-06 09:00 | 2009-11-06 10:00 | 29 | 23.75d |  |
| 37 | 1.1.2.2.2.7 | 300 Grants | 1h | 2009-11-06 09:00 | 2009-11-06 10:00 | 29 | 23.75d |  |
| 38 | 1.1.2.2.2.8 | 310 Schema_Post_Deployment | 7h | 2009-11-06 09:00 | 2009-11-06 17:00 | 29 | 23d |  |
| 40 | 1.1.2.2.3 | **ccbmdw_crea_tabl** | 5d | 2009-11-02 08:00 | 2009-11-06 17:00 |  | 23d |  |
| 41 | 1.1.2.2.3.1 | 170 Sequences | 1h | 2009-11-02 08:00 | 2009-11-02 09:00 |  | 23d | 0d |
| 42 | 1.1.2.2.3.2 | **180 Tables** | 4.12d | 2009-11-02 09:00 | 2009-11-06 10:00 |  | 23d |  |
| 43 | 1.1.2.2.3.2.1 | base | 4d | 2009-11-02 09:00 | 2009-11-06 09:00 | 41 | 23d | 0d |
| 44 | 1.1.2.2.3.2.2 | audit | 1h | 2009-11-06 09:00 | 2009-11-06 10:00 | 43 | 23.62d | 0d |
| 45 | 1.1.2.2.3.3 | 210 Indexes | 1h | 2009-11-06 09:00 | 2009-11-06 10:00 | 43 | 23.75d |  |
| 46 | 1.1.2.2.3.4 | 220 Contraints | 1h | 2009-11-06 09:00 | 2009-11-06 10:00 | 43 | 23.75d |  |
| 47 | 1.1.2.2.3.5 | **280 Triggers** | 0.25d | 2009-11-06 09:00 | 2009-11-06 11:00 |  | 23.62d |  |
| 48 | 1.1.2.2.3.5.1 | sequence | 1h | 2009-11-06 09:00 | 2009-11-06 10:00 | 43 | 23.75d |  |
| 49 | 1.1.2.2.3.5.2 | audit | 1h | 2009-11-06 10:00 | 2009-11-06 11:00 | 44 | 23.62d |  |
| 50 | 1.1.2.2.3.6 | 290 Synonyms | 1h | 2009-11-06 09:00 | 2009-11-06 10:00 | 43 | 23.75d |  |
| 51 | 1.1.2.2.3.7 | 300 Grants | 1h | 2009-11-06 09:00 | 2009-11-06 10:00 | 43 | 23.75d |  |
| 52 | 1.1.2.2.3.8 | 310 Schema_Post_Deployment | 7h | 2009-11-06 09:00 | 2009-11-06 17:00 | 43 | 23d |  |

| ID | WBS | Task | Duration | Start | Finish | Predecessors | Total slack | Free slack |
| --- | --- | --- | --- | --- | --- | --- | --- | --- |
| 54 | 1.1.2.2.4 | **ccbmdw_crea_tabl** | 1.25d? | 2009-11-02 08:00 | 2009-11-03 10:00 |  | 26.75d |  |
| 55 | 1.1.2.2.4.1 | 170 Sequences | 1h | 2009-11-02 11:00 | 2009-11-02 12:00 | 7 | 26.75d | 0d |
| 56 | 1.1.2.2.4.2 | **180 Tables** | 0.62d | 2009-11-02 13:00 | 2009-11-03 09:00 |  | 26.75d | 0d |
| 57 | 1.1.2.2.4.2.1 | base | 4h | 2009-11-02 13:00 | 2009-11-02 17:00 | 55 | 26.75d | 0d |
| 58 | 1.1.2.2.4.2.2 | audit | 1h | 2009-11-03 08:00 | 2009-11-03 09:00 | 57 | 26.75d | 0d |
| 59 | 1.1.2.2.4.3 | Indexes | 1d? | 2009-11-02 08:00 | 2009-11-02 17:00 |  | 27d |  |
| 60 | 1.1.2.2.4.4 | **280 Triggers** | 0.25d | 2009-11-03 08:00 | 2009-11-03 10:00 |  | 26.75d |  |
| 61 | 1.1.2.2.4.4.1 | sequence | 1h | 2009-11-03 08:00 | 2009-11-03 09:00 | 57 | 26.88d |  |
| 62 | 1.1.2.2.4.4.2 | audit | 1h | 2009-11-03 09:00 | 2009-11-03 10:00 | 58 | 26.75d |  |
| 63 | 1.1.2.2.4.5 | 310 Schema_Post_Deployment | 1h | 2009-11-03 09:00 | 2009-11-03 10:00 | 56 | 26.75d |  |
| 64 | 1.1.2.2.4.6 | grants | 1d? | 2009-11-02 08:00 | 2009-11-02 17:00 |  | 27d |  |
| 65 | 1.1.2.2.4.7 | synonums | 1d? | 2009-11-02 08:00 | 2009-11-02 17:00 |  | 27d |  |
| 67 | 1.1.2.2.5 | **ccbmdw_run_tabl** | 1.5d? | 2009-11-02 08:00 | 2009-11-03 12:00 |  | 26.5d |  |
| 68 | 1.1.2.2.5.1 | 170 Sequences | 1h | 2009-11-02 11:00 | 2009-11-02 12:00 | 7 | 26.5d | 0d |
| 69 | 1.1.2.2.5.2 | **180 Tables** | 0.62d | 2009-11-02 13:00 | 2009-11-03 09:00 |  | 26.5d | 0d |
| 70 | 1.1.2.2.5.2.1 | base | 4h | 2009-11-02 13:00 | 2009-11-02 17:00 | 68 | 26.5d | 0d |
| 71 | 1.1.2.2.5.2.2 | audit | 1h | 2009-11-03 08:00 | 2009-11-03 09:00 | 70 | 26.5d | 0d |
| 72 | 1.1.2.2.5.3 | Indexes | 1d? | 2009-11-02 08:00 | 2009-11-02 17:00 |  | 27d |  |
| 73 | 1.1.2.2.5.4 | **280 Triggers** | 0.25d | 2009-11-03 08:00 | 2009-11-03 10:00 |  | 26.75d |  |
| 74 | 1.1.2.2.5.4.1 | sequence | 1h | 2009-11-03 08:00 | 2009-11-03 09:00 | 70 | 26.88d |  |
| 75 | 1.1.2.2.5.4.2 | audit | 1h | 2009-11-03 09:00 | 2009-11-03 10:00 | 71 | 26.75d |  |
| 76 | 1.1.2.2.5.5 | 310 Schema_Post_Deployment | 1h | 2009-11-03 09:00 | 2009-11-03 10:00 | 69 | 26.5d | 0d |
| 77 | 1.1.2.2.5.6 | grants | 1h | 2009-11-03 10:00 | 2009-11-03 11:00 | 76 | 26.5d | 0d |
| 78 | 1.1.2.2.5.7 | synonums | 1h | 2009-11-03 11:00 | 2009-11-03 12:00 | 77 | 26.5d |  |

| ID | WBS | Task | Duration | Start | Finish | Predecessors | Total slack | Free slack |
| --- | --- | --- | --- | --- | --- | --- | --- | --- |
| 80 | 1.1.2.2.6 | **ccbmdw_func_warn** | 1.5d? | 2009-11-02 08:00 | 2009-11-03 12:00 |  | 26.5d |  |
| 81 | 1.1.2.2.6.1 | 170 Sequences | 1h | 2009-11-02 11:00 | 2009-11-02 12:00 | 7 | 26.5d | 0d |
| 82 | 1.1.2.2.6.2 | **180 Tables** | 0.62d | 2009-11-02 13:00 | 2009-11-03 09:00 |  | 26.5d | 0d |
| 83 | 1.1.2.2.6.2.1 | base | 4h | 2009-11-02 13:00 | 2009-11-02 17:00 | 81 | 26.5d | 0d |
| 84 | 1.1.2.2.6.2.2 | audit | 1h | 2009-11-03 08:00 | 2009-11-03 09:00 | 83 | 26.5d | 0d |
| 85 | 1.1.2.2.6.3 | Indexes | 1d? | 2009-11-02 08:00 | 2009-11-02 17:00 |  | 27d |  |
| 86 | 1.1.2.2.6.4 | **280 Triggers** | 0.25d | 2009-11-03 08:00 | 2009-11-03 10:00 |  | 26.75d |  |
| 87 | 1.1.2.2.6.4.1 | sequence | 1h | 2009-11-03 08:00 | 2009-11-03 09:00 | 83 | 26.88d |  |
| 88 | 1.1.2.2.6.4.2 | audit | 1h | 2009-11-03 09:00 | 2009-11-03 10:00 | 84 | 26.75d |  |
| 89 | 1.1.2.2.6.5 | 310 Schema_Post_Deployment | 1h | 2009-11-03 09:00 | 2009-11-03 10:00 | 82 | 26.5d | 0d |
| 90 | 1.1.2.2.6.6 | grants | 1h | 2009-11-03 10:00 | 2009-11-03 11:00 | 89 | 26.5d | 0d |
| 91 | 1.1.2.2.6.7 | synonums | 1h | 2009-11-03 11:00 | 2009-11-03 12:00 | 90 | 26.5d |  |
| 92 | 1.1.2.2.7 | ccbmdw_process_control | 1h | 2009-11-02 08:00 | 2009-11-02 09:00 |  | 26.75d | 0.25d |
| 94 | 1.1.2.2.8 | **ccbmdw_process_control_audt** | 1.12d | 2009-11-02 11:00 | 2009-11-03 12:00 | 92 | 26.5d |  |
| 95 | 1.1.2.2.8.1 | 170 Sequences | 1h | 2009-11-02 11:00 | 2009-11-02 12:00 | 7 | 26.5d | 0d |
| 96 | 1.1.2.2.8.2 | **180 Tables** | 0.62d | 2009-11-02 13:00 | 2009-11-03 09:00 |  | 26.5d | 0d |
| 97 | 1.1.2.2.8.2.1 | base | 4h | 2009-11-02 13:00 | 2009-11-02 17:00 | 95 | 26.5d | 0d |
| 98 | 1.1.2.2.8.2.2 | audit | 1h | 2009-11-03 08:00 | 2009-11-03 09:00 | 97 | 26.5d | 0d |
| 99 | 1.1.2.2.8.3 | Indexes | 1h | 2009-11-03 08:00 | 2009-11-03 09:00 | 97 | 26.88d |  |
| 100 | 1.1.2.2.8.4 | **280 Triggers** | 0.25d | 2009-11-03 08:00 | 2009-11-03 10:00 |  | 26.75d |  |
| 101 | 1.1.2.2.8.4.1 | sequence | 1h | 2009-11-03 08:00 | 2009-11-03 09:00 | 97 | 26.88d |  |
| 102 | 1.1.2.2.8.4.2 | audit | 1h | 2009-11-03 09:00 | 2009-11-03 10:00 | 98 | 26.75d |  |
| 103 | 1.1.2.2.8.5 | 310 Schema_Post_Deployment | 1h | 2009-11-03 09:00 | 2009-11-03 10:00 | 96 | 26.5d | 0d |
| 104 | 1.1.2.2.8.6 | grants | 1h | 2009-11-03 10:00 | 2009-11-03 11:00 | 103 | 26.5d | 0d |
| 105 | 1.1.2.2.8.7 | synonums | 1h | 2009-11-03 11:00 | 2009-11-03 12:00 | 104 | 26.5d |  |

| ID | WBS | Task | Duration | Start | Finish | Predecessors | Total slack | Free slack |
| --- | --- | --- | --- | --- | --- | --- | --- | --- |
| 107 | 1.1.2.2.9 | **ccbmdw_process_log** | 1.12d | 2009-11-02 11:00 | 2009-11-03 12:00 |  | 26.5d |  |
| 108 | 1.1.2.2.9.1 | 170 Sequences | 1h | 2009-11-02 11:00 | 2009-11-02 12:00 | 7 | 26.5d | 0d |
| 109 | 1.1.2.2.9.2 | **180 Tables** | 0.62d | 2009-11-02 13:00 | 2009-11-03 09:00 |  | 26.5d | 0d |
| 110 | 1.1.2.2.9.2.1 | base | 4h | 2009-11-02 13:00 | 2009-11-02 17:00 | 108 | 26.5d | 0d |
| 111 | 1.1.2.2.9.2.2 | audit | 1h | 2009-11-03 08:00 | 2009-11-03 09:00 | 110 | 26.5d | 0d |
| 112 | 1.1.2.2.9.3 | Indexes | 1h | 2009-11-03 08:00 | 2009-11-03 09:00 | 110 | 26.88d |  |
| 113 | 1.1.2.2.9.4 | **280 Triggers** | 0.25d | 2009-11-03 08:00 | 2009-11-03 10:00 |  | 26.75d |  |
| 114 | 1.1.2.2.9.4.1 | sequence | 1h | 2009-11-03 08:00 | 2009-11-03 09:00 | 110 | 26.88d |  |
| 115 | 1.1.2.2.9.4.2 | audit | 1h | 2009-11-03 09:00 | 2009-11-03 10:00 | 111 | 26.75d |  |
| 116 | 1.1.2.2.9.5 | 310 Schema_Post_Deployment | 1h | 2009-11-03 09:00 | 2009-11-03 10:00 | 109 | 26.5d | 0d |
| 117 | 1.1.2.2.9.6 | grants | 1h | 2009-11-03 10:00 | 2009-11-03 11:00 | 116 | 26.5d | 0d |
| 118 | 1.1.2.2.9.7 | synonums | 1h | 2009-11-03 11:00 | 2009-11-03 12:00 | 117 | 26.5d |  |
| 119 | 1.1.2.2.10 | ccbmdw_process_ref | 1h | 2009-11-02 08:00 | 2009-11-02 09:00 |  | 27.88d |  |
| 121 | 1.1.2.2.11 | **ccbmdw_process_ref_audt** | 1.12d | 2009-11-02 11:00 | 2009-11-03 12:00 |  | 26.5d |  |
| 122 | 1.1.2.2.11.1 | 170 Sequences | 1h | 2009-11-02 11:00 | 2009-11-02 12:00 | 7 | 26.5d | 0d |
| 123 | 1.1.2.2.11.2 | **180 Tables** | 0.62d | 2009-11-02 13:00 | 2009-11-03 09:00 |  | 26.5d | 0d |
| 124 | 1.1.2.2.11.2.1 | base | 4h | 2009-11-02 13:00 | 2009-11-02 17:00 | 122 | 26.5d | 0d |
| 125 | 1.1.2.2.11.2.2 | audit | 1h | 2009-11-03 08:00 | 2009-11-03 09:00 | 124 | 26.5d | 0d |
| 126 | 1.1.2.2.11.3 | Indexes | 1h | 2009-11-03 08:00 | 2009-11-03 09:00 | 124 | 26.88d |  |
| 127 | 1.1.2.2.11.4 | **280 Triggers** | 0.25d | 2009-11-03 08:00 | 2009-11-03 10:00 |  | 26.75d |  |
| 128 | 1.1.2.2.11.4.1 | sequence | 1h | 2009-11-03 08:00 | 2009-11-03 09:00 | 124 | 26.88d |  |
| 129 | 1.1.2.2.11.4.2 | audit | 1h | 2009-11-03 09:00 | 2009-11-03 10:00 | 125 | 26.75d |  |
| 130 | 1.1.2.2.11.5 | 310 Schema_Post_Deployment | 1h | 2009-11-03 09:00 | 2009-11-03 10:00 | 123 | 26.5d | 0d |
| 131 | 1.1.2.2.11.6 | grants | 1h | 2009-11-03 10:00 | 2009-11-03 11:00 | 130 | 26.5d | 0d |
| 132 | 1.1.2.2.11.7 | synonums | 1h | 2009-11-03 11:00 | 2009-11-03 12:00 | 131 | 26.5d |  |
| 133 | 1.1.2.2.12 | ccbmdw_processes | 1h | 2009-11-02 08:00 | 2009-11-02 09:00 |  | 27.88d |  |

| ID | WBS | Task | Duration | Start | Finish | Predecessors | Total slack | Free slack |
| --- | --- | --- | --- | --- | --- | --- | --- | --- |
| 135 | 1.1.2.2.13 | **ccbmdw_processes_hist** | 1.12d | 2009-11-02 11:00 | 2009-11-03 12:00 |  | 26.5d |  |
| 136 | 1.1.2.2.13.1 | 170 Sequences | 1h | 2009-11-02 11:00 | 2009-11-02 12:00 | 7 | 26.5d | 0d |
| 137 | 1.1.2.2.13.2 | **180 Tables** | 0.62d | 2009-11-02 13:00 | 2009-11-03 09:00 |  | 26.5d | 0d |
| 138 | 1.1.2.2.13.2.1 | base | 4h | 2009-11-02 13:00 | 2009-11-02 17:00 | 136 | 26.5d | 0d |
| 139 | 1.1.2.2.13.2.2 | audit | 1h | 2009-11-03 08:00 | 2009-11-03 09:00 | 138 | 26.5d | 0d |
| 140 | 1.1.2.2.13.3 | Indexes | 1h | 2009-11-03 08:00 | 2009-11-03 09:00 | 138 | 26.88d |  |
| 141 | 1.1.2.2.13.4 | **280 Triggers** | 0.25d | 2009-11-03 08:00 | 2009-11-03 10:00 |  | 26.75d |  |
| 142 | 1.1.2.2.13.4.1 | sequence | 1h | 2009-11-03 08:00 | 2009-11-03 09:00 | 138 | 26.88d |  |
| 143 | 1.1.2.2.13.4.2 | audit | 1h | 2009-11-03 09:00 | 2009-11-03 10:00 | 139 | 26.75d |  |
| 144 | 1.1.2.2.13.5 | 310 Schema_Post_Deployment | 1h | 2009-11-03 09:00 | 2009-11-03 10:00 | 137 | 26.5d | 0d |
| 145 | 1.1.2.2.13.6 | grants | 1h | 2009-11-03 10:00 | 2009-11-03 11:00 | 144 | 26.5d | 0d |
| 146 | 1.1.2.2.13.7 | synonums | 1h | 2009-11-03 11:00 | 2009-11-03 12:00 | 145 | 26.5d |  |
| 148 | 1.1.2.2.14 | **ccbmdw_tab_size_trk** | 1.12d | 2009-11-02 11:00 | 2009-11-03 12:00 |  | 26.5d |  |
| 149 | 1.1.2.2.14.1 | 170 Sequences | 1h | 2009-11-02 11:00 | 2009-11-02 12:00 | 7 | 26.5d | 0d |
| 150 | 1.1.2.2.14.2 | **180 Tables** | 0.62d | 2009-11-02 13:00 | 2009-11-03 09:00 |  | 26.5d | 0d |
| 151 | 1.1.2.2.14.2.1 | base | 4h | 2009-11-02 13:00 | 2009-11-02 17:00 | 149 | 26.5d | 0d |
| 152 | 1.1.2.2.14.2.2 | audit | 1h | 2009-11-03 08:00 | 2009-11-03 09:00 | 151 | 26.5d | 0d |
| 153 | 1.1.2.2.14.3 | Indexes | 1h | 2009-11-03 08:00 | 2009-11-03 09:00 | 151 | 26.88d |  |
| 154 | 1.1.2.2.14.4 | **280 Triggers** | 0.25d | 2009-11-03 08:00 | 2009-11-03 10:00 |  | 26.75d |  |
| 155 | 1.1.2.2.14.4.1 | sequence | 1h | 2009-11-03 08:00 | 2009-11-03 09:00 | 151 | 26.88d |  |
| 156 | 1.1.2.2.14.4.2 | audit | 1h | 2009-11-03 09:00 | 2009-11-03 10:00 | 152 | 26.75d |  |
| 157 | 1.1.2.2.14.5 | 310 Schema_Post_Deployment | 1h | 2009-11-03 09:00 | 2009-11-03 10:00 | 150 | 26.5d | 0d |
| 158 | 1.1.2.2.14.6 | grants | 1h | 2009-11-03 10:00 | 2009-11-03 11:00 | 157 | 26.5d | 0d |
| 159 | 1.1.2.2.14.7 | synonums | 1h | 2009-11-03 11:00 | 2009-11-03 12:00 | 158 | 26.5d |  |
| 161 | 1.1.2.2.15 | ccbmdw_tabl_ref | 0.12d | 2009-11-02 08:00 | 2009-11-02 09:00 |  | 27.88d |  |

| ID | WBS | Task | Duration | Start | Finish | Predecessors | Total slack | Free slack |
| --- | --- | --- | --- | --- | --- | --- | --- | --- |
| 162 | 1.1.2.2.16 | **ccbmdw_tabl_ref_audt** | 1.12d | 2009-11-02 11:00 | 2009-11-03 12:00 |  | 26.5d |  |
| 163 | 1.1.2.2.16.1 | 170 Sequences | 1h | 2009-11-02 11:00 | 2009-11-02 12:00 | 7 | 26.5d | 0d |
| 164 | 1.1.2.2.16.2 | **180 Tables** | 0.62d | 2009-11-02 13:00 | 2009-11-03 09:00 |  | 26.5d | 0d |
| 165 | 1.1.2.2.16.2.1 | base | 4h | 2009-11-02 13:00 | 2009-11-02 17:00 | 163 | 26.5d | 0d |
| 166 | 1.1.2.2.16.2.2 | audit | 1h | 2009-11-03 08:00 | 2009-11-03 09:00 | 165 | 26.5d | 0d |
| 167 | 1.1.2.2.16.3 | Indexes | 1h | 2009-11-03 08:00 | 2009-11-03 09:00 | 165 | 26.88d |  |
| 168 | 1.1.2.2.16.4 | **280 Triggers** | 0.25d | 2009-11-03 08:00 | 2009-11-03 10:00 |  | 26.75d |  |
| 169 | 1.1.2.2.16.4.1 | sequence | 1h | 2009-11-03 08:00 | 2009-11-03 09:00 | 165 | 26.88d |  |
| 170 | 1.1.2.2.16.4.2 | audit | 1h | 2009-11-03 09:00 | 2009-11-03 10:00 | 166 | 26.75d |  |
| 171 | 1.1.2.2.16.5 | 310 Schema_Post_Deployment | 1h | 2009-11-03 09:00 | 2009-11-03 10:00 | 164 | 26.5d | 0d |
| 172 | 1.1.2.2.16.6 | grants | 1h | 2009-11-03 10:00 | 2009-11-03 11:00 | 171 | 26.5d | 0d |
| 173 | 1.1.2.2.16.7 | synonums | 1h | 2009-11-03 11:00 | 2009-11-03 12:00 | 172 | 26.5d |  |
| 175 | 1.1.2.2.17 | **std_ccbmdw_debug_tbl** | 1.12d | 2009-11-02 11:00 | 2009-11-03 12:00 |  | 26.5d |  |
| 176 | 1.1.2.2.17.1 | 170 Sequences | 1h | 2009-11-02 11:00 | 2009-11-02 12:00 | 7 | 26.5d | 0d |
| 177 | 1.1.2.2.17.2 | **180 Tables** | 0.62d | 2009-11-02 13:00 | 2009-11-03 09:00 |  | 26.5d | 0d |
| 178 | 1.1.2.2.17.2.1 | base | 4h | 2009-11-02 13:00 | 2009-11-02 17:00 | 176 | 26.5d | 0d |
| 179 | 1.1.2.2.17.2.2 | audit | 1h | 2009-11-03 08:00 | 2009-11-03 09:00 | 178 | 26.5d | 0d |
| 180 | 1.1.2.2.17.3 | Indexes | 1h | 2009-11-03 08:00 | 2009-11-03 09:00 | 178 | 26.88d |  |
| 181 | 1.1.2.2.17.4 | **280 Triggers** | 0.25d | 2009-11-03 08:00 | 2009-11-03 10:00 |  | 26.75d |  |
| 182 | 1.1.2.2.17.4.1 | sequence | 1h | 2009-11-03 08:00 | 2009-11-03 09:00 | 178 | 26.88d |  |
| 183 | 1.1.2.2.17.4.2 | audit | 1h | 2009-11-03 09:00 | 2009-11-03 10:00 | 179 | 26.75d |  |
| 184 | 1.1.2.2.17.5 | 310 Schema_Post_Deployment | 1h | 2009-11-03 09:00 | 2009-11-03 10:00 | 177 | 26.5d | 0d |
| 185 | 1.1.2.2.17.6 | grants | 1h | 2009-11-03 10:00 | 2009-11-03 11:00 | 184 | 26.5d | 0d |
| 186 | 1.1.2.2.17.7 | synonums | 1h | 2009-11-03 11:00 | 2009-11-03 12:00 | 185 | 26.5d |  |

| ID | WBS | Task | Duration | Start | Finish | Total slack |
| --- | --- | --- | --- | --- | --- | --- |
| 188 | 1.1.2.2.18 | **170 Sequences** | 0.12d | 2009-11-02 08:00 | 2009-11-02 09:00 | 27.88d |
| 189 | 1.1.2.2.18.1 | ccbmdw_crea_tabl_seq | 1h | 2009-11-02 08:00 | 2009-11-02 09:00 | 27.88d |
| 190 | 1.1.2.2.18.2 | ccbmdw_func_warn_seq | 1h | 2009-11-02 08:00 | 2009-11-02 09:00 | 27.88d |
| 191 | 1.1.2.2.18.3 | ccbmdw_process_control_seq | 1h | 2009-11-02 08:00 | 2009-11-02 09:00 | 27.88d |
| 192 | 1.1.2.2.18.4 | ccbmdw_process_log_seq | 1h | 2009-11-02 08:00 | 2009-11-02 09:00 | 27.88d |
| 193 | 1.1.2.2.18.5 | ccbmdw_process_ref_seq | 1h | 2009-11-02 08:00 | 2009-11-02 09:00 | 27.88d |
| 194 | 1.1.2.2.18.6 | ccbmdw_table_ref_seq | 1h | 2009-11-02 08:00 | 2009-11-02 09:00 | 27.88d |
| 195 | 1.1.2.2.18.7 | ccbmdw_val_tabl_seq | 1h | 2009-11-02 08:00 | 2009-11-02 09:00 | 27.88d |
| 196 | 1.1.2.2.18.8 | std_ccbmdw_debug_tbl_seq | 1h | 2009-11-02 08:00 | 2009-11-02 09:00 | 27.88d |
| 197 | 1.1.2.2.19 | 230 Views | 1d | 2009-11-02 08:00 | 2009-11-02 17:00 | 27d |
| 198 | 1.1.2.2.20 | **260 Functions** | 0.12d | 2009-11-02 08:00 | 2009-11-02 09:00 | 27.88d |
| 199 | 1.1.2.2.20.1 | ccbmdw_get_prcss_cntrl_id | 1h | 2009-11-02 08:00 | 2009-11-02 09:00 | 27.88d |
| 200 | 1.1.2.2.20.2 | ccbmdw_get_prcss_run_val | 1h | 2009-11-02 08:00 | 2009-11-02 09:00 | 27.88d |
| 201 | 1.1.2.2.20.3 | run_today | 1h | 2009-11-02 08:00 | 2009-11-02 09:00 | 27.88d |
| 202 | 1.1.2.2.21 | **270 Procedures** | 0.25d | 2009-11-02 08:00 | 2009-11-02 10:00 | 27.75d |
| 203 | 1.1.2.2.21.1 | **maintain_ccbmdw_world** | 0.25d | 2009-11-02 08:00 | 2009-11-02 10:00 | 27.75d |
| 204 | 1.1.2.2.21.1.1 | ccbmdw_insupd_processlog | 2h | 2009-11-02 08:00 | 2009-11-02 10:00 | 27.75d |
| 205 | 1.1.2.2.21.1.2 | get_ccbmdw_process_info | 2h | 2009-11-02 08:00 | 2009-11-02 10:00 | 27.75d |
| 206 | 1.1.2.2.21.1.3 | updt_ccbmdw_processes | 2h | 2009-11-02 08:00 | 2009-11-02 10:00 | 27.75d |
| 207 | 1.1.2.2.21.1.4 | ccbmdw_log_cleanup | 2h | 2009-11-02 08:00 | 2009-11-02 10:00 | 27.75d |
| 208 | 1.1.2.2.21.1.5 | ccbmdw_debugtbl_cleanup | 2h | 2009-11-02 08:00 | 2009-11-02 10:00 | 27.75d |
| 209 | 1.1.2.2.21.1.6 | cleanup_weekly | 2h | 2009-11-02 08:00 | 2009-11-02 10:00 | 27.75d |
| 210 | 1.1.2.2.21.1.7 | table_size_tracking | 2h | 2009-11-02 08:00 | 2009-11-02 10:00 | 27.75d |
| 211 | 1.1.2.2.22 | **280 Triggers** | 0.12d | 2009-11-02 08:00 | 2009-11-02 09:00 | 27.88d |
| 212 | 1.1.2.2.22.1 | tr_i_ccbmdw_crea_tabl_seq | 1h | 2009-11-02 08:00 | 2009-11-02 09:00 | 27.88d |
| 213 | 1.1.2.2.22.2 | tr_i_ccbmdw_proces_ctrl_seq | 1h | 2009-11-02 08:00 | 2009-11-02 09:00 | 27.88d |
| 214 | 1.1.2.2.22.3 | tr_i_ccbmdw_process_log_seq | 1h | 2009-11-02 08:00 | 2009-11-02 09:00 | 27.88d |
| 215 | 1.1.2.2.22.4 | tr_i_ccbmdw_process_ref_seq | 1h | 2009-11-02 08:00 | 2009-11-02 09:00 | 27.88d |
| 216 | 1.1.2.2.22.5 | tr_ccbmdw_table_ref_seq | 1h | 2009-11-02 08:00 | 2009-11-02 09:00 | 27.88d |
| 217 | 1.1.2.2.22.6 | tr_ccbmdw_val_ref_seq | 1h | 2009-11-02 08:00 | 2009-11-02 09:00 | 27.88d |
| 218 | 1.1.2.2.22.7 | tr_i_ccbmdw_debg_tbl_seq | 1h | 2009-11-02 08:00 | 2009-11-02 09:00 | 27.88d |
| 219 | 1.1.2.2.22.8 | tr_i_ccbmdw_run_tabl_seq | 1h | 2009-11-02 08:00 | 2009-11-02 09:00 | 27.88d |
| 220 | 1.1.2.2.22.9 | tr_ccbmdw_func_warn | 1h | 2009-11-02 08:00 | 2009-11-02 09:00 | 27.88d |
| 221 | 1.1.2.2.22.10 | tr_ccbmdw_proces_ctrl_audt | 1h | 2009-11-02 08:00 | 2009-11-02 09:00 | 27.88d |
| 222 | 1.1.2.2.22.11 | tr_ccbmdw_process_ref_audt | 1h | 2009-11-02 08:00 | 2009-11-02 09:00 | 27.88d |
| 223 | 1.1.2.2.22.12 | tr_ccbmdw_table_ref_audt | 1h | 2009-11-02 08:00 | 2009-11-02 09:00 | 27.88d |
| 224 | 1.1.2.2.22.13 | tr_u_ccbmdw_proc_ctrl_updt | 1h | 2009-11-02 08:00 | 2009-11-02 09:00 | 27.88d |
| 225 | 1.1.2.2.22.14 | tr_u_ccbmdw_proces_ref_updt | 1h | 2009-11-02 08:00 | 2009-11-02 09:00 | 27.88d |

| ID | WBS | Task | Type | Duration | Start | Finish | Predecessors | Total slack | Free slack | Constraint |
| --- | --- | --- | --- | --- | --- | --- | --- | --- | --- | --- |
| 226 | 1.1.2.2.23 | **310 Schema_Post_Deployment** |  | 0.25d | 2009-11-02 08:00 | 2009-11-02 10:00 |  | 27.75d |  |  |
| 227 | 1.1.2.2.23.1 | merge_into_ccbmdw_process_control |  | 2h | 2009-11-02 08:00 | 2009-11-02 10:00 |  | 27.75d |  |  |
| 228 | 1.1.2.2.23.2 | merge_into_ccbmdw_process_ref |  | 2h | 2009-11-02 08:00 | 2009-11-02 10:00 |  | 27.75d |  |  |
| 229 | 1.1.3 | **Build** |  | 0.38d | 2009-11-02 08:00 | 2009-11-02 11:00 |  | 27.62d |  |  |
| 230 | 1.1.3.1 | Roles |  | 1h | 2009-11-02 08:00 | 2009-11-02 09:00 |  | 27.62d | 0d |  |
| 231 | 1.1.3.2 | **Grants** |  | 0.25d | 2009-11-02 09:00 | 2009-11-02 11:00 |  | 27.62d |  |  |
| 232 | 1.1.3.2.1 | Tables |  | 1h | 2009-11-02 09:00 | 2009-11-02 10:00 | 230 | 27.62d | 0d |  |
| 233 | 1.1.3.2.2 | Procedures |  | 1h | 2009-11-02 10:00 | 2009-11-02 11:00 | 232 | 27.62d |  |  |
| 234 | 1.1.4 | **Pre-Production Support** |  | 2d | 2009-11-02 08:00 | 2009-11-03 17:00 |  | 26d |  |  |
| 235 | 1.1.4.1 | Logs |  | 1d | 2009-11-02 08:00 | 2009-11-02 17:00 |  | 26d | 0d |  |
| 236 | 1.1.4.2 | Job |  | 1d | 2009-11-03 08:00 | 2009-11-03 17:00 | 235 | 26d |  |  |
| 237 | 1.2 | **DEV ccbmdw** |  | 1d | 2009-12-01 08:00 | 2009-12-01 17:00 |  | 0d |  |  |
| 238 | 1.2.1 | Code freeze |  | 1d | 2009-12-01 08:00 | 2009-12-01 17:00 |  | 0d |  | start no earlier than 2009-12-01 08:00 |
| 239 | 1.3 | **TST ccbmdw** |  | 4d | 2009-12-02 08:00 | 2009-12-07 17:00 |  | 0d |  |  |
| 240 | 1.3.1 | Functional test |  | 4d | 2009-12-02 08:00 | 2009-12-07 17:00 | 238 | 0d |  |  |
| 241 | 1.4 | **PRD ccbmdw** |  | 2d | 2009-12-08 08:00 | 2009-12-09 17:00 |  | 0d |  |  |
| 242 | 1.4.1 | Production deployment | milestone | 1d | 2009-12-08 08:00 | 2009-12-08 17:00 | 240 | 0d |  | start no earlier than 2009-12-08 08:00 |
| 243 | 1.4.2 | Production test |  | 1d | 2009-12-09 08:00 | 2009-12-09 17:00 | 242 | 0d |  |  |
