# LOGSA CCBMER MIMOSA (views)

Schedule from MS Project, 2009-09-14 to 2009-12-09, A marks actual dates.

## Calendars

- Standard: Mon-Fri 08:00-12:00, 13:00-17:00; Sat-Sun off.

## Resources

| Resource |
| --- |
| 46 |

## Schedule

| ID | WBS | Task | Duration | Start | Finish | Predecessors | Complete | Remaining | Total slack | Free slack | Constraint |
| --- | --- | --- | --- | --- | --- | --- | --- | --- | --- | --- | --- |
| 1 | 1 | **MIMOSA Views (MIMOSA)** | 63d? | 2009-09-14 08:00 A | 2009-12-09 17:00 |  | 27% | 46.28d? | 220d |  |  |
| 2 | 1.1 | **RDR** | 19.5d? | 2009-09-14 08:00 A | 2009-10-09 12:00 |  | 40% | 11.64d? | 263.5d |  |  |
| 3 | 1.1.1 | **Take over RDR00008** | 8.62d? | 2009-09-14 08:00 A | 2009-09-24 14:00 |  | 24% | 6.53d? | 274.38d |  |  |
| 4 | 1.1.1.1 | Get password | 4h | 2009-09-18 08:00 A | 2009-09-18 12:00 A |  | 100% |  |  |  | finish no earlier than 2009-08-28 00:00 |
| 5 | 1.1.1.2 | Backup schema | 1h | 2009-09-24 08:00 A | 2009-09-24 09:00 A | 4 | 100% |  |  |  |  |
| 6 | 1.1.1.3 | Burn CD | 1h | 2009-09-24 09:00 | 2009-09-24 10:00 | 5 |  |  | 98.75d |  |  |
| 7 | 1.1.1.4 | Clear the schema | 4h | 2009-09-24 08:00 A | 2009-09-24 12:00 A | 5 | 100% |  |  |  | finish no earlier than 2009-09-14 00:00 |
| 8 | 1.1.1.5 | Request RDR | 1h | 2009-09-24 13:00 | 2009-09-24 14:00 | 7 |  |  | 98.38d |  |  |
| 9 | 1.1.1.6 | **Request RDP** | 1d? | 2009-09-14 08:00 | 2009-09-14 17:00 |  |  |  | 279.75d |  |  |
| 10 | 1.1.1.6.1 | Pre-Production Checkbox | 1d? | 2009-09-14 08:00 | 2009-09-14 17:00 |  |  |  | 279.75d | 0d |  |
| 11 | 1.1.1.7 | Request ECP | 1h | 2009-09-15 08:00 | 2009-09-15 09:00 | 10 |  |  | 103.75d | 0d |  |
| 12 | 1.1.1.8 | Team Track | 1h | 2009-09-15 09:00 | 2009-09-15 10:00 | 11 |  |  | 279.75d | 0d |  |
| 13 | 1.1.1.9 | Do we need to adjust anything in TeamTrack for Susan/Gene | 1d | 2009-09-15 10:00 | 2009-09-16 10:00 | 12 |  |  | 279.75d | 0d |  |
| 14 | 1.1.1.10 | FAB -> TAB -> Estimates -> Tasks | 1d | 2009-09-16 10:00 | 2009-09-17 10:00 | 13 |  |  | 279.75d |  |  |
| 15 | 1.1.2 | **View Build Control** | 4.5d | 2009-09-16 08:00 A | 2009-09-22 12:00 |  | 71% | 1.29d | 276.5d |  |  |
| 16 | 1.1.2.1 | **mimosa_bl_view_ref** | 1.12d | 2009-09-16 08:00 | 2009-09-17 09:00 |  |  |  | 279.88d |  |  |
| 17 | 1.1.2.1.1 | 170 Sequence | 1h | 2009-09-16 08:00 | 2009-09-16 09:00 |  |  |  | 279.88d | 0d | start no earlier than 2009-09-16 08:00 |
| 18 | 1.1.2.1.2 | 180 Table | 4h | 2009-09-16 09:00 | 2009-09-16 14:00 | 17 |  |  | 279.88d | 0d |  |
| 19 | 1.1.2.1.3 | 210 Constraints | 1h | 2009-09-16 14:00 | 2009-09-16 15:00 | 18 |  |  | 279.88d | 0d |  |
| 20 | 1.1.2.1.4 | 220 Indexes | 1h | 2009-09-16 15:00 | 2009-09-16 16:00 | 19 |  |  | 279.88d | 0d |  |
| 21 | 1.1.2.1.5 | 280 Triggers | 1h | 2009-09-16 16:00 | 2009-09-16 17:00 | 20 |  |  | 279.88d | 0d |  |
| 22 | 1.1.2.1.6 | 310 Schema Post Deployment | 1h | 2009-09-17 08:00 | 2009-09-17 09:00 | 21 |  |  | 279.88d |  |  |
| 23 | 1.1.2.2 | **mimosa_bl_cmd_tabl** | 2.25d | 2009-09-16 08:00 A | 2009-09-18 10:00 |  | 95% | 0.11d | 48.64d |  |  |
| 24 | 1.1.2.2.1 | 170 Sequence | 1h | 2009-09-16 08:00 A | 2009-09-16 09:00 |  | 95% | 0.05h | 50.71d | 1.12d | start no earlier than 2009-09-16 08:00 |
| 25 | 1.1.2.2.2 | 180 Table | 4h | 2009-09-17 10:00 A | 2009-09-17 15:00 | 24 | 95% | 0.2h | 49.11d | 0d |  |
| 26 | 1.1.2.2.3 | 210 Constraints | 1h | 2009-09-17 15:00 A | 2009-09-17 16:00 | 25 | 95% | 0.05h | 48.99d | 0d |  |
| 27 | 1.1.2.2.4 | 220 Indexes | 1h | 2009-09-17 16:00 A | 2009-09-17 17:00 | 26 | 95% | 0.05h | 48.88d | 0d |  |
| 28 | 1.1.2.2.5 | 280 Triggers | 1h | 2009-09-18 08:00 A | 2009-09-18 09:00 | 27 | 95% | 0.05h | 48.76d | 0d |  |
| 29 | 1.1.2.2.6 | 310 Schema Post Deployment | 1h | 2009-09-18 09:00 A | 2009-09-18 10:00 | 28 | 95% | 0.05h | 48.64d | 0d |  |

| ID | WBS | Task | Duration | Start | Finish | Predecessors | Complete | Remaining | Total slack | Free slack | Constraint |
| --- | --- | --- | --- | --- | --- | --- | --- | --- | --- | --- | --- |
| 30 | 1.1.2.3 | **mimosa_bl_crea_tabl** | 1.12d | 2009-09-18 10:00 A | 2009-09-21 11:00 |  | 95% | 0.06d | 277.62d |  |  |
| 31 | 1.1.2.3.1 | 170 Sequence | 1h | 2009-09-18 10:00 A | 2009-09-18 11:00 |  | 95% | 0.05h | 278.57d | 0d | start no earlier than 2009-09-16 08:00 |
| 32 | 1.1.2.3.2 | 180 Table | 4h | 2009-09-18 11:00 A | 2009-09-18 16:00 | 31 | 95% | 0.2h | 278.1d | 0d |  |
| 33 | 1.1.2.3.3 | 210 Constraints | 1h | 2009-09-18 16:00 A | 2009-09-18 17:00 | 32 | 95% | 0.05h | 277.98d | 0d |  |
| 34 | 1.1.2.3.4 | 220 Indexes | 1h | 2009-09-21 08:00 A | 2009-09-21 09:00 | 33 | 95% | 0.05h | 277.86d | 0d |  |
| 35 | 1.1.2.3.5 | 280 Triggers | 1h | 2009-09-21 09:00 A | 2009-09-21 10:00 | 34 | 95% | 0.05h | 277.74d | 0d |  |
| 36 | 1.1.2.3.6 | 310 Schema Post Deployment | 1h | 2009-09-21 10:00 A | 2009-09-21 11:00 | 35 | 95% | 0.05h | 277.62d |  |  |
| 37 | 1.1.2.4 | **mimosa_bl_val_tabl** | 1.12d | 2009-09-21 11:00 A | 2009-09-22 12:00 |  | 95% | 0.06d | 276.5d |  |  |
| 38 | 1.1.2.4.1 | 170 Sequence | 1h | 2009-09-21 11:00 A | 2009-09-21 12:00 |  | 95% | 0.05h | 277.45d | 0d | start no earlier than 2009-09-16 08:00 |
| 39 | 1.1.2.4.2 | 180 Table | 4h | 2009-09-21 13:00 A | 2009-09-21 17:00 | 38 | 95% | 0.2h | 276.98d | 0d |  |
| 40 | 1.1.2.4.3 | 210 Constraints | 1h | 2009-09-22 08:00 A | 2009-09-22 09:00 | 39 | 95% | 0.05h | 276.86d | 0d |  |
| 41 | 1.1.2.4.4 | 220 Indexes | 1h | 2009-09-22 09:00 A | 2009-09-22 10:00 | 40 | 95% | 0.05h | 276.74d | 0d |  |
| 42 | 1.1.2.4.5 | 280 Triggers | 1h | 2009-09-22 10:00 A | 2009-09-22 11:00 | 41 | 95% | 0.05h | 276.62d | 0d |  |
| 43 | 1.1.2.4.6 | 310 Schema Post Deployment | 1h | 2009-09-22 11:00 A | 2009-09-22 12:00 | 42 | 95% | 0.05h | 276.5d |  |  |
| 44 | 1.1.3 | **View Build Script** | 15.25d | 2009-09-18 10:00 A | 2009-10-09 12:00 |  | 62% | 5.75d | 263.5d |  |  |
| 45 | 1.1.3.1 | **260 Functions** | 0.12d | 2009-09-18 10:00 A | 2009-09-18 11:00 |  | 90% | 0.01d | 48.52d |  |  |
| 46 | 1.1.3.1.1 | proc_ctrl_char_val | 1h | 2009-09-18 10:00 A | 2009-09-18 11:00 | 29 | 90% | 0.1h | 48.52d | 0d |  |
| 47 | 1.1.3.2 | **270 Procedures** | 15.12d | 2009-09-18 11:00 A | 2009-10-09 12:00 |  | 60% | 6.05d | 263.5d |  |  |
| 48 | 1.1.3.2.1 | bld_view_4_mimosa | 1d | 2009-09-18 11:00 A | 2009-09-21 11:00 | 46 | 90% | 0.1d | 47.62d | 0d |  |
| 49 | 1.1.3.2.2 | view control on rec_type_code | 4h | 2009-10-09 08:00 | 2009-10-09 12:00 |  |  |  | 87.5d |  | start no earlier than 2009-10-09 08:00 |
| 50 | 1.1.4 | **View Test** | 3d | 2009-09-14 08:00 | 2009-09-16 17:00 |  |  |  | 280d |  |  |
| 51 | 1.1.4.1 | 290 Grants | 2h | 2009-09-14 08:00 | 2009-09-14 10:00 |  |  |  | 106.75d |  |  |
| 52 | 1.1.4.2 | 320 Synonyms | 2h | 2009-09-14 08:00 | 2009-09-14 10:00 |  |  |  | 106.75d |  |  |
| 53 | 1.1.4.3 | **Pre-Production Support** | 2d | 2009-09-15 08:00 | 2009-09-16 17:00 |  |  |  | 280d |  |  |
| 54 | 1.1.4.3.1 | Logs | 1d | 2009-09-15 08:00 | 2009-09-15 17:00 | 10 |  |  | 104d | 0d | finish no earlier than 2009-09-15 17:00 |
| 55 | 1.1.4.3.2 | Job | 1d | 2009-09-16 08:00 | 2009-09-16 17:00 | 54 |  |  | 104d |  | finish no earlier than 2009-09-15 17:00 |

| ID | WBS | Task | Type | Duration | Start | Finish | Predecessors | Complete | Remaining | Total slack | Free slack | Constraint |
| --- | --- | --- | --- | --- | --- | --- | --- | --- | --- | --- | --- | --- |
| 56 | 1.2 | **DEV MIMOSA** |  | 51.62d | 2009-09-21 11:00 A | 2009-12-01 17:00 |  | 22% | 40.29d | 220d |  |  |
| 57 | 1.2.1 | **VM folders** |  | 3d | 2009-10-05 08:00 A | 2009-10-07 17:00 A |  | 100% |  |  |  |  |
| 58 | 1.2.1.1 | E-mail with folder details |  | 1h | 2009-10-05 08:00 A | 2009-10-05 09:00 A |  | 100% |  |  |  |  |
| 59 | 1.2.1.2 | Folders created |  | 1d | 2009-10-07 08:00 A | 2009-10-07 17:00 A | 58 | 100% |  |  |  |  |
| 60 | 1.2.2 | Deployment code check-in |  | 4d | 2009-09-21 11:00 | 2009-09-25 11:00 | 48 |  |  | 47.62d |  | finish no later than 2009-12-01 17:00 |
| 61 | 1.2.3 | Code freeze | milestone | 0d | 2009-12-01 17:00 | 2009-12-01 17:00 | 60 |  |  | 220d | 0d | finish no earlier than 2009-12-01 17:00 |
| 62 | 1.3 | **TST MIMOSA** |  | 4d | 2009-12-02 08:00 | 2009-12-07 17:00 |  |  |  | 220d |  |  |
| 63 | 1.3.1 | Functional test |  | 4d | 2009-12-02 08:00 | 2009-12-07 17:00 | 61 |  |  | 44d | 0d | finish no earlier than 2009-09-15 17:00 |
| 64 | 1.4 | **PRD MIMOSA** |  | 2d | 2009-12-08 08:00 | 2009-12-09 17:00 |  |  |  | 220d |  |  |
| 65 | 1.4.1 | Production deployment |  | 1d | 2009-12-08 08:00 | 2009-12-08 17:00 | 63 |  |  | 44d | 0d | finish no earlier than 2009-09-15 17:00 |
| 66 | 1.4.2 | Production test |  | 1d | 2009-12-09 08:00 | 2009-12-09 17:00 | 65 |  |  | 44d |  | finish no earlier than 2009-09-15 17:00 |
