# LOGSA CCBMER MIMOSA_BL

Schedule from MS Project, 2009-08-28 to 2009-11-12, A marks actual dates.

## Calendars

- Standard: Mon-Fri 08:00-12:00, 13:00-17:00; Sat-Sun off.

## Schedule

| ID | WBS | Task | Type | Duration | Start | Finish | Predecessors | Complete | Remaining | Total slack | Free slack | Constraint |
| --- | --- | --- | --- | --- | --- | --- | --- | --- | --- | --- | --- | --- |
| 1 | 1 | **MIMOSA Baseline (MIMOSA_BL)** |  | 55d? | 2009-08-28 00:00 A | 2009-11-12 17:00 |  | 74% | 14.57d? | 239d |  |  |
| 2 | 1.1 | **RDR** |  | 41d? | 2009-08-28 00:00 A | 2009-10-23 17:00 |  | 89% | 4.5d? | 253d |  |  |
| 3 | 1.1.1 | **Take over RDR00001** |  | 26.12d | 2009-08-28 00:00 A | 2009-10-05 09:00 |  | 99% | 0.24d | 267.88d |  |  |
| 4 | 1.1.1.1 | Get password | milestone | 0d | 2009-08-28 00:00 A | 2009-08-28 00:00 A |  | 100% |  |  |  | finish no earlier than 2009-08-28 00:00 |
| 5 | 1.1.1.2 | Clear the schema |  | 11d | 2009-08-28 08:00 A | 2009-09-14 00:00 A | 4 | 100% |  |  |  | finish no earlier than 2009-09-14 00:00 |
| 6 | 1.1.1.3 | Chris's SAR approval |  | 1h | 2009-09-14 08:00 A | 2009-09-14 09:00 A | 5 | 100% |  |  |  |  |
| 7 | 1.1.1.4 | Request RDR |  | 1h | 2009-09-14 09:00 A | 2009-09-14 10:00 A | 6 | 100% |  |  |  |  |
| 8 | 1.1.1.5 | Request RDP |  | 1h | 2009-09-30 14:00 A | 2009-09-30 15:00 A |  | 100% |  |  |  |  |
| 9 | 1.1.1.6 | Pre-Production Checkbox |  | 1h | 2009-09-30 15:00 | 2009-09-30 16:00 | 8 |  |  | 105.03d | 0d |  |
| 10 | 1.1.1.7 | Request ECP |  | 1h | 2009-09-30 16:00 A | 2009-09-30 17:00 A | 9 | 100% |  |  |  |  |
| 11 | 1.1.1.8 | Team Track |  | 1h | 2009-10-01 08:00 A | 2009-10-01 09:00 A | 10 | 100% |  |  |  |  |
| 12 | 1.1.1.9 | Do we need to adjust anything in TeamTrack for Susan/Gene |  | 1d | 2009-10-01 09:00 A | 2009-10-02 09:00 A | 11 | 100% |  |  |  |  |
| 13 | 1.1.1.10 | FAB -> TAB -> Estimates -> Tasks |  | 1d | 2009-10-02 09:00 A | 2009-10-05 09:00 A | 12 | 100% |  |  |  |  |
| 15 | 1.1.2 | **LEC Core Schema Setup** |  | 20.12d? | 2009-08-28 08:00 A | 2009-09-25 09:00 | 4 | 84% | 3.18d? | 273.88d |  |  |
| 16 | 1.1.2.1 | **E-mail account "logsa.mimosa@conus.army.mil"** |  | 9.12d | 2009-09-14 08:00 A | 2009-09-25 09:00 A |  | 100% |  |  |  |  |
| 17 | 1.1.2.1.1 | Dave Hendricks input |  | 1h | 2009-09-14 08:00 A | 2009-09-14 09:00 A |  | 100% |  |  |  | start no earlier than 2009-09-14 08:00 |
| 18 | 1.1.2.1.2 | Chris Booth input (3 od e-mail addresses) |  | 1h | 2009-09-15 16:00 A | 2009-09-15 17:00 A | 17 | 100% |  |  |  | finish no earlier than 2009-09-15 17:00 |
| 19 | 1.1.2.1.3 | E-mail the helpdesk about the setup process |  | 1h | 2009-09-16 08:00 A | 2009-09-16 09:00 A | 18 | 100% |  |  |  | start no earlier than 2009-09-15 08:00 |
| 20 | 1.1.2.1.4 | Request e-mail addresses |  | 1h | 2009-09-16 09:00 A | 2009-09-16 10:00 A | 19 | 100% |  |  |  | finish no earlier than 2009-09-15 17:00 |
| 21 | 1.1.2.1.5 | Incorporate into maintain_mimosa_bl_world procedure |  | 1h | 2009-09-25 08:00 A | 2009-09-25 09:00 A | 20 | 100% |  |  |  | start no earlier than 2009-09-25 08:00 |
| 22 | 1.1.2.2 | **Control Processes** |  | 13.12d? | 2009-08-28 08:00 A | 2009-09-16 09:00 |  | 83% | 2.22d? | 280.88d |  |  |
| 23 | 1.1.2.2.1 | Merge for reloads |  | 1d? | 2009-08-28 08:00 | 2009-08-28 17:00 |  |  |  | 130.16d |  |  |
| 24 | 1.1.2.2.2 | **170 Sequences** |  | 4.12d | 2009-09-10 00:00 A | 2009-09-16 09:00 A |  | 100% |  |  |  |  |
| 25 | 1.1.2.2.2.1 | mimosa_bl_cmd_tabl_seq |  | 1h | 2009-09-16 08:00 A | 2009-09-16 09:00 A |  | 100% |  |  |  | start no earlier than 2009-09-16 08:00 |
| 26 | 1.1.2.2.2.2 | mimosa_bl_crea_tabl_seq |  | 1h | 2009-09-16 08:00 A | 2009-09-16 09:00 A |  | 100% |  |  |  | start no earlier than 2009-09-16 08:00 |
| 27 | 1.1.2.2.2.3 | mimosa_bl_func_warn_seq |  | 1h | 2009-09-16 08:00 A | 2009-09-16 09:00 A |  | 100% |  |  |  | start no earlier than 2009-09-16 08:00 |
| 28 | 1.1.2.2.2.4 | mimosa_bl_process_control_seq |  | 1h | 2009-09-10 00:00 A | 2009-09-10 09:00 A |  | 100% |  |  |  | finish no earlier than 2009-09-15 17:00 |
| 29 | 1.1.2.2.2.5 | mimosa_bl_process_log_seq |  | 1h | 2009-09-10 00:00 A | 2009-09-15 17:00 A |  | 100% |  |  |  | finish no earlier than 2009-09-15 17:00 |
| 30 | 1.1.2.2.2.6 | mimosa_bl_process_ref_seq |  | 1h | 2009-09-10 00:00 A | 2009-09-15 17:00 A |  | 100% |  |  |  | finish no earlier than 2009-09-15 17:00 |
| 31 | 1.1.2.2.2.7 | mimosa_bl_table_ref_seq |  | 1h | 2009-09-10 08:00 A | 2009-09-10 09:00 A |  | 100% |  |  |  | start no earlier than 2009-09-10 00:00 |
| 32 | 1.1.2.2.2.8 | mimosa_bl_val_tabl_seq |  | 1h | 2009-09-10 08:00 A | 2009-09-10 09:00 A |  | 100% |  |  |  | start no earlier than 2009-09-10 00:00 |
| 33 | 1.1.2.2.2.9 | std_mimosa_bl_debug_tbl_seq |  | 1h | 2009-09-10 08:00 A | 2009-09-10 09:00 A |  | 100% |  |  |  | start no earlier than 2009-09-10 00:00 |

| ID | WBS | Task | Duration | Start | Finish | Predecessors | Complete | Remaining | Total slack | Constraint |
| --- | --- | --- | --- | --- | --- | --- | --- | --- | --- | --- |
| 34 | 1.1.2.2.3 | **180 Tables** | 13d | 2009-08-28 08:00 A | 2009-09-15 17:00 |  | 83% | 2.17d | 118.16d |  |
| 35 | 1.1.2.2.3.1 | mimosa_bl_cmd_tabl | 1h | 2009-08-28 08:00 A | 2009-08-28 09:00 A |  | 100% |  |  |  |
| 36 | 1.1.2.2.3.2 | mimosa_bl_crea_tabl | 1h | 2009-08-28 08:00 A | 2009-08-28 09:00 A |  | 100% |  |  |  |
| 37 | 1.1.2.2.3.3 | mimosa_bl_run_tabl | 1h | 2009-08-28 08:00 A | 2009-08-28 09:00 A |  | 100% |  |  |  |
| 38 | 1.1.2.2.3.4 | mimosa_bl_func_warn | 1h | 2009-09-01 00:00 A | 2009-09-15 17:00 A |  | 100% |  |  | finish no earlier than 2009-09-15 17:00 |
| 39 | 1.1.2.2.3.5 | mimosa_bl_process_control | 1h | 2009-09-09 00:00 A | 2009-09-09 09:00 A | 28 | 100% |  |  | finish no earlier than 2009-09-15 17:00 |
| 40 | 1.1.2.2.3.6 | mimosa_bl_process_control_audt | 1h | 2009-09-10 00:00 A | 2009-09-10 09:00 A | 39 | 100% |  |  | finish no earlier than 2009-09-15 17:00 |
| 41 | 1.1.2.2.3.7 | mimosa_bl_process_log | 1h | 2009-09-09 00:00 A | 2009-09-09 09:00 A |  | 100% |  |  | finish no earlier than 2009-09-15 17:00 |
| 42 | 1.1.2.2.3.8 | mimosa_bl_process_ref | 1h | 2009-09-09 00:00 A | 2009-09-09 09:00 A |  | 100% |  |  | finish no earlier than 2009-09-15 17:00 |
| 43 | 1.1.2.2.3.9 | mimosa_bl_process_ref_audt | 1h | 2009-09-10 00:00 A | 2009-09-10 09:00 A |  | 100% |  |  | finish no earlier than 2009-09-15 17:00 |
| 44 | 1.1.2.2.3.10 | mimosa_bl_processes | 1h | 2009-09-09 00:00 A | 2009-09-09 09:00 A |  | 100% |  |  | finish no earlier than 2009-09-15 17:00 |
| 45 | 1.1.2.2.3.11 | mimosa_bl_processes_hist | 1h | 2009-09-09 00:00 A | 2009-09-09 09:00 A |  | 100% |  |  | finish no earlier than 2009-09-15 17:00 |
| 46 | 1.1.2.2.3.12 | **mimosa_bl_tab_size_trk** | 0.12d | 2009-08-28 08:00 A | 2009-08-28 09:00 |  | 50% | 0.06d | 293.88d |  |
| 47 | 1.1.2.2.3.12.1 | create tabel | 1h | 2009-08-28 08:00 A | 2009-08-28 09:00 A |  | 100% |  |  |  |
| 48 | 1.1.2.2.3.12.2 | index | 1h | 2009-08-28 08:00 | 2009-08-28 09:00 |  |  |  | 293.88d |  |
| 49 | 1.1.2.2.3.13 | **mimosa_bl_tabl_ref** | 0.12d | 2009-08-28 08:00 A | 2009-08-28 09:00 |  | 33% | 0.08d | 293.88d |  |
| 50 | 1.1.2.2.3.13.1 | create table | 1h | 2009-08-28 08:00 A | 2009-08-28 09:00 A |  | 100% |  |  |  |
| 51 | 1.1.2.2.3.13.2 | index | 1h | 2009-08-28 08:00 | 2009-08-28 09:00 |  |  |  | 293.88d |  |
| 52 | 1.1.2.2.3.13.3 | trigger | 1h | 2009-08-28 08:00 | 2009-08-28 09:00 |  |  |  | 293.88d |  |
| 53 | 1.1.2.2.3.14 | mimosa_bl_tabl_ref_audt | 1h | 2009-09-01 08:00 A | 2009-09-01 09:00 A |  | 100% |  |  |  |
| 54 | 1.1.2.2.3.15 | std_mimosa_bl_debug_tbl | 1h | 2009-09-01 00:00 A | 2009-09-01 09:00 A |  | 100% |  |  | finish no earlier than 2009-09-15 17:00 |
| 55 | 1.1.2.2.4 | **260 Functions** | 5d | 2009-09-09 00:00 A | 2009-09-15 17:00 A |  | 100% |  |  |  |
| 56 | 1.1.2.2.4.1 | mimosa_bl_get_prcss_cntrl_id | 1h | 2009-09-09 00:00 A | 2009-09-09 09:00 A |  | 100% |  |  | finish no earlier than 2009-09-15 17:00 |
| 57 | 1.1.2.2.4.2 | mimosa_bl_get_prcss_run_val | 1h | 2009-09-09 08:00 A | 2009-09-09 09:00 A |  | 100% |  |  | start no earlier than 2009-09-09 08:00 |
| 58 | 1.1.2.2.4.3 | run_today | 1h | 2009-09-09 00:00 A | 2009-09-15 17:00 A |  | 100% |  |  | finish no earlier than 2009-09-15 17:00 |

| ID | WBS | Task | Duration | Start | Finish | Complete | Remaining | Total slack | Constraint |
| --- | --- | --- | --- | --- | --- | --- | --- | --- | --- |
| 59 | 1.1.2.2.5 | **270 Procedures** | 5d | 2009-09-09 00:00 A | 2009-09-15 17:00 A | 100% |  |  |  |
| 60 | 1.1.2.2.5.1 | **maintain_mimosa_bl_world** | 5d | 2009-09-09 00:00 A | 2009-09-15 17:00 A | 100% |  |  |  |
| 61 | 1.1.2.2.5.1.1 | mimosa_bl_insupd_processlog | 2h | 2009-09-09 00:00 A | 2009-09-15 17:00 A | 100% |  |  | finish no earlier than 2009-09-15 17:00 |
| 62 | 1.1.2.2.5.1.2 | get_mimosa_bl_process_info | 2h | 2009-09-09 00:00 A | 2009-09-15 17:00 A | 100% |  |  | finish no earlier than 2009-09-15 17:00 |
| 63 | 1.1.2.2.5.1.3 | updt_mimosa_bl_processes | 2h | 2009-09-09 00:00 A | 2009-09-15 17:00 A | 100% |  |  | finish no earlier than 2009-09-15 17:00 |
| 64 | 1.1.2.2.5.1.4 | mimosa_bl_log_cleanup | 2h | 2009-09-09 00:00 A | 2009-09-15 17:00 A | 100% |  |  | finish no earlier than 2009-09-15 17:00 |
| 65 | 1.1.2.2.5.1.5 | mimosa_bl_debugtbl_cleanup | 2h | 2009-09-09 00:00 A | 2009-09-15 17:00 A | 100% |  |  | finish no earlier than 2009-09-15 17:00 |
| 66 | 1.1.2.2.5.1.6 | cleanup_weekly | 2h | 2009-09-09 00:00 A | 2009-09-15 17:00 A | 100% |  |  | finish no earlier than 2009-09-15 17:00 |
| 67 | 1.1.2.2.5.1.7 | table_size_tracking | 2h | 2009-09-09 00:00 A | 2009-09-15 17:00 A | 100% |  |  | finish no earlier than 2009-09-15 17:00 |
| 68 | 1.1.2.2.6 | **280 Triggers** | 4.12d | 2009-09-10 00:00 A | 2009-09-16 09:00 | 93% | 0.28d | 275.88d |  |
| 69 | 1.1.2.2.6.1 | tr_i_mimosa_bl_cmd_tabl_seq | 1h | 2009-09-16 08:00 A | 2009-09-16 09:00 A | 100% |  |  | finish no earlier than 2009-09-15 17:00 |
| 70 | 1.1.2.2.6.2 | tr_i_mimosa_bl_crea_tabl_seq | 1h | 2009-09-16 08:00 A | 2009-09-16 09:00 A | 100% |  |  | start no earlier than 2009-09-16 08:00 |
| 71 | 1.1.2.2.6.3 | tr_i_mimosa_bl_proces_ctrl_seq | 1h | 2009-09-10 00:00 A | 2009-09-15 17:00 A | 100% |  |  | finish no earlier than 2009-09-15 17:00 |
| 72 | 1.1.2.2.6.4 | tr_i_mimosa_bl_process_log_seq | 1h | 2009-09-10 00:00 A | 2009-09-15 17:00 A | 100% |  |  | finish no earlier than 2009-09-15 17:00 |
| 73 | 1.1.2.2.6.5 | tr_i_mimosa_bl_process_ref_seq | 1h | 2009-09-10 00:00 A | 2009-09-10 09:00 A | 100% |  |  | finish no earlier than 2009-09-15 17:00 |
| 74 | 1.1.2.2.6.6 | tr_mimosa_bl_table_ref_seq | 1h | 2009-09-10 08:00 A | 2009-09-10 09:00 A | 100% |  |  |  |
| 75 | 1.1.2.2.6.7 | tr_mimosa_bl_val_ref_seq | 1h | 2009-09-16 08:00 A | 2009-09-16 09:00 A | 100% |  |  |  |
| 76 | 1.1.2.2.6.8 | tr_i_mimosa_bl_debg_tbl_seq | 1h | 2009-09-10 08:00 A | 2009-09-10 09:00 A | 100% |  |  |  |
| 77 | 1.1.2.2.6.9 | tr_i_mimosa_bl_run_tabl_seq | 1h | 2009-09-16 08:00 | 2009-09-16 09:00 |  |  | 275.88d | start no earlier than 2009-09-16 08:00 |
| 78 | 1.1.2.2.6.10 | tr_mimosa_bl_func_warn | 1h | 2009-09-10 08:00 A | 2009-09-10 09:00 A | 100% |  |  | start no earlier than 2009-09-10 08:00 |
| 79 | 1.1.2.2.6.11 | tr_mimosa_bl_proces_ctrl_audt | 1h | 2009-09-10 00:00 A | 2009-09-15 17:00 A | 100% |  |  | finish no earlier than 2009-09-15 17:00 |
| 80 | 1.1.2.2.6.12 | tr_mimosa_bl_process_ref_audt | 1h | 2009-09-10 00:00 A | 2009-09-15 17:00 A | 100% |  |  | finish no earlier than 2009-09-15 17:00 |
| 81 | 1.1.2.2.6.13 | tr_mimosa_bl_table_ref_audt | 1h | 2009-09-10 08:00 A | 2009-09-10 09:00 A | 100% |  |  |  |
| 82 | 1.1.2.2.6.14 | tr_u_mimosa_bl_proc_ctrl_updt | 1h | 2009-09-10 00:00 A | 2009-09-15 17:00 A | 100% |  |  | finish no earlier than 2009-09-15 17:00 |
| 83 | 1.1.2.2.6.15 | tr_u_mimosa_bl_proces_ref_updt | 1h | 2009-09-10 00:00 A | 2009-09-15 17:00 A | 100% |  |  | finish no earlier than 2009-09-15 17:00 |

| ID | WBS | Task | Duration | Start | Finish | Predecessors | Complete | Remaining | Total slack | Free slack | Constraint |
| --- | --- | --- | --- | --- | --- | --- | --- | --- | --- | --- | --- |
| 84 | 1.1.2.2.7 | **310 Schema_Post_Deployment** | 3d | 2009-09-11 00:00 A | 2009-09-15 17:00 A |  | 100% |  |  |  |  |
| 85 | 1.1.2.2.7.1 | merge_into_mimosa_bl_process_control | 2h | 2009-09-11 00:00 A | 2009-09-15 17:00 A |  | 100% |  |  |  | finish no earlier than 2009-09-15 17:00 |
| 86 | 1.1.2.2.7.2 | merge_into_mimosa_bl_process_ref | 2h | 2009-09-11 00:00 A | 2009-09-15 17:00 A |  | 100% |  |  |  | finish no earlier than 2009-09-15 17:00 |
| 87 | 1.1.3 | **Build** | 41d? | 2009-08-28 08:00 A | 2009-10-23 17:00 |  | 99% | 0.45d? | 253d |  |  |
| 88 | 1.1.3.1 | MIMOSA_32_Step00_ORACLE_SQLPlus_Drop_Tables | 2h | 2009-08-31 00:00 A | 2009-08-31 10:00 |  | 75% | 0.5h | 287.75d |  | finish no earlier than 2009-08-31 00:00 |
| 89 | 1.1.3.2 | **MIMOSA_32_Step10_ORACLE_SQLPlus_Create_Tables_and_PKs** | 1d | 2009-08-28 08:00 A | 2009-08-28 17:00 A |  | 100% |  |  |  |  |
| 90 | 1.1.3.2.1 | Bever scripts | 1d | 2009-08-28 08:00 A | 2009-08-28 17:00 A | 88 | 100% |  |  |  |  |
| 91 | 1.1.3.2.2 | Mimosa.org Website 3.2.1 scripts | 4h | 2009-08-28 08:00 A | 2009-08-28 12:00 A | 90 | 100% |  |  |  |  |
| 92 | 1.1.3.3 | **MIMOSA_32_Step13_ORACLE_SQLPlus_Enterprise** | 1d | 2009-08-28 08:00 A | 2009-08-28 17:00 A |  | 100% |  |  |  |  |
| 93 | 1.1.3.3.1 | Bever scripts | 1d | 2009-08-28 08:00 A | 2009-08-28 17:00 A | 91 | 100% |  |  |  |  |
| 94 | 1.1.3.3.2 | Mimosa.org Website 3.2.1 scripts | 4h | 2009-08-28 08:00 A | 2009-08-28 12:00 A | 93 | 100% |  |  |  |  |
| 95 | 1.1.3.4 | **MIMOSA_32_Step20_ORACLE_SQLPlus_Insert_Ref_Data** | 1d | 2009-08-28 08:00 A | 2009-08-28 17:00 A |  | 100% |  |  |  |  |
| 96 | 1.1.3.4.1 | Bever scripts | 1d | 2009-08-28 08:00 A | 2009-08-28 17:00 A | 94 | 100% |  |  |  |  |
| 97 | 1.1.3.4.2 | Mimosa.org Website 3.2.1 scripts | 4h | 2009-08-28 08:00 A | 2009-08-28 12:00 A | 96 | 100% |  |  |  |  |
| 98 | 1.1.3.5 | **MIMOSA_32_Step30_ORACLE_SQLPlus_Create_FKs** | 1d | 2009-08-28 08:00 A | 2009-08-28 17:00 A |  | 100% |  |  |  |  |
| 99 | 1.1.3.5.1 | Bever scripts | 1d | 2009-08-28 08:00 A | 2009-08-28 17:00 A | 97 | 100% |  |  |  |  |
| 100 | 1.1.3.5.2 | Mimosa.org Website 3.2.1 scripts | 4h | 2009-08-28 08:00 A | 2009-08-28 12:00 A | 99 | 100% |  |  |  |  |
| 101 | 1.1.3.6 | MIMOSA_32_Step00_PLSQL_Insert_MIL-STD-3008B_DD_2009_01_28 | 1d | 2009-10-23 08:00 A | 2009-10-23 17:00 A |  | 100% |  |  |  | start no earlier than 2009-10-23 08:00 |
| 102 | 1.1.3.7 | MIMOSA_32_Step00_PLSQL_Insert_LOGSA_CBM_Ontology_DD_2009_01_28 | 1d? | 2009-10-23 08:00 A | 2009-10-23 17:00 A |  | 100% |  |  |  |  |
| 103 | 1.1.3.8 | Roles | 1h | 2009-10-02 08:00 A | 2009-10-02 09:00 A |  | 100% |  |  |  |  |
| 104 | 1.1.3.9 | **Grants** | 0.25d | 2009-10-02 09:00 A | 2009-10-02 11:00 |  | 88% | 0.03d | 268.62d |  |  |
| 105 | 1.1.3.9.1 | Tables | 1h | 2009-10-02 09:00 A | 2009-10-02 10:00 A | 103 | 100% |  |  |  | finish no earlier than 2009-09-15 17:00 |
| 106 | 1.1.3.9.2 | Procedures | 1h | 2009-10-02 10:00 A | 2009-10-02 11:00 | 105 | 75% | 0.25h | 268.62d |  | finish no earlier than 2009-09-15 17:00 |
| 107 | 1.1.4 | **Pre-Production Support** | 2d | 2009-09-30 14:00 | 2009-10-02 14:00 |  |  |  | 263.38d |  |  |
| 108 | 1.1.4.1 | Logs | 1d | 2009-09-30 14:00 | 2009-10-01 14:00 |  |  |  | 263.38d | 0d | finish no earlier than 2009-09-15 17:00 |
| 109 | 1.1.4.2 | Job | 1d | 2009-10-01 14:00 | 2009-10-02 14:00 | 108 |  |  | 263.38d |  | finish no earlier than 2009-09-15 17:00 |

| ID | WBS | Task | Duration | Start | Finish | Predecessors | Complete | Remaining | Total slack | Free slack | Constraint |
| --- | --- | --- | --- | --- | --- | --- | --- | --- | --- | --- | --- |
| 110 | 1.2 | **DEV MIMOSA_BL** | 21d | 2009-10-05 08:00 A | 2009-11-02 17:00 |  | 84% | 3.43d | 239d |  |  |
| 111 | 1.2.1 | **VM folders** | 3d | 2009-10-05 08:00 A | 2009-10-07 17:00 A |  | 100% |  |  |  |  |
| 112 | 1.2.1.1 | E-mail with folder details | 1h | 2009-10-05 08:00 A | 2009-10-05 09:00 A |  | 100% |  |  |  |  |
| 113 | 1.2.1.2 | Folders created | 1d | 2009-10-07 08:00 A | 2009-10-07 17:00 A | 112 | 100% |  |  |  |  |
| 114 | 1.2.2 | Deployment code check-in | 4d | 2009-10-08 08:00 A | 2009-10-13 17:00 A | 113, 7 | 100% |  |  |  | finish no later than 2009-10-26 17:00 |
| 115 | 1.2.3 | Code freeze | 1d | 2009-11-02 08:00 | 2009-11-02 17:00 | 114 |  |  | 234d | 0d | start no earlier than 2009-11-02 08:00 |
| 116 | 1.3 | **TST MIMOSA_BL** | 6d | 2009-11-03 08:00 | 2009-11-10 17:00 |  |  |  | 239d |  |  |
| 117 | 1.3.1 | Functional test | 6d | 2009-11-03 08:00 | 2009-11-10 17:00 | 115 |  |  | 239d | 0d | finish no earlier than 2009-10-05 00:00 |
| 118 | 1.4 | **PRD MIMOSA_BL** | 2d | 2009-11-11 08:00 | 2009-11-12 17:00 |  |  |  | 239d |  |  |
| 119 | 1.4.1 | Production deployment | 1d | 2009-11-11 08:00 | 2009-11-11 17:00 | 117 |  |  | 239d | 0d | finish no earlier than 2009-10-07 00:00 |
| 120 | 1.4.2 | Production test | 1d | 2009-11-12 08:00 | 2009-11-12 17:00 | 119 |  |  | 239d |  | finish no earlier than 2009-10-08 00:00 |
