# LOGSA CCBMER Master Plan

Schedule from MS Project, 2009-08-28 to 2010-10-13, status date 2009-09-26, A marks actual dates.

## Calendars

- Standard: Mon-Fri 08:00-12:00, 13:00-17:00; Sat-Sun off. Exceptions (off unless hours are given): 2009-10-12 (Columbus Day), 2009-11-11 (Veterans Day), 2009-11-26 (Thanksgiving Day), 2009-12-25 (Christmas Day), 2010-01-01 (New Year's Day), 2010-01-18 (Martin Luther King Day), 2010-02-15 (President's Day), 2010-05-31 (Memorial Day), 2010-07-05 (Independence Day), 2010-09-06 (Labor Day), 2010-10-11 (Columbus Day).

## Schedule

| ID | WBS | Task | Duration | Start | Finish | Predecessors | Complete | Remaining | Total slack | Free slack |
| --- | --- | --- | --- | --- | --- | --- | --- | --- | --- | --- |
| 1 | 1 | **Staffing** | 113d | 2009-09-28 A | 2010-03-12 |  | 68% | 35.76d | 149d |  |
| 2 | 1.1 | **Technical Writer** | 77d | 2009-09-28 A | 2010-01-20 A |  | 100% |  |  |  |
| 3 | 1.1.1 | Job description write-up | 1d | 2009-09-28 A | 2009-09-28 A |  | 100% |  |  |  |
| 4 | 1.1.2 | Job posting | 1d | 2009-09-29 A | 2009-09-29 A | 3 | 100% |  |  |  |
| 5 | 1.1.3 | TBD | 1d | 2009-09-30 A | 2009-09-30 A | 4 | 100% |  |  |  |
| 6 | 1.1.4 | Hire | 60d | 2009-10-01 A | 2009-12-29 A | 5 | 100% |  |  |  |
| 7 | 1.1.5 | Start | 14d | 2009-12-30 A | 2010-01-20 A | 6 | 100% |  |  |  |
| 8 | 1.2 | **Java/Oracle Developer** | 113d | 2009-09-28 A | 2010-03-12 |  | 38% | 69.75d | 149d |  |
| 9 | 1.2.1 | Job description write-up | 1d | 2009-09-28 A | 2009-09-28 A |  | 100% |  |  |  |
| 10 | 1.2.2 | Job posting | 30d | 2009-11-16 A | 2009-12-29 A | 9 | 100% |  |  |  |
| 11 | 1.2.3 | Interviews | 30d | 2009-12-30 | 2010-02-11 | 10 |  |  | 149d | 0d |
| 12 | 1.2.4 | Hire | 10d | 2010-02-12 | 2010-02-26 | 11 |  |  | 149d | 0d |
| 13 | 1.2.5 | Start | 10d | 2010-03-01 | 2010-03-12 | 12 |  |  | 149d |  |
| 14 | 2 | **Memorandum of Agreement** | 91d | 2009-09-28 A | 2010-02-09 |  | 33% | 61d | 171d |  |
| 15 | 2.1 | **SED** | 91d | 2009-09-28 A | 2010-02-09 |  | 33% | 61d | 171d |  |
| 16 | 2.1.1 | Draft | 30d | 2009-09-28 A | 2009-11-09 A |  | 100% |  |  |  |
| 17 | 2.1.2 | TBD | 1d | 2009-11-10 | 2009-11-10 | 16 |  |  | 12.16d | 0d |
| 18 | 2.1.3 | Signed | 60d | 2009-11-12 | 2010-02-09 | 17 |  |  | 12.16d |  |
| 19 | 3 | LOGSA CCBMER DoDAF | 14d | 2009-09-28 A | 2009-10-16 |  | 8% | 12.88d | 244d |  |
| 20 | 4 | LOGSA CCBMER MIMOSA_BL | 176.28d? | 2009-08-28 A | 2010-03-16 |  | 74% | 135.85d? | 147.15d |  |
| 21 | 5 | 3.2.1 what does it mean | 1d? | 2009-09-28 A | 2009-09-28 |  | 50% | 0.5d? | 90d |  |
| 22 | 6 | How do we valid it? | 1d? | 2009-09-28 | 2009-09-28 |  |  |  | 90d |  |
| 23 | 7 | **How does it get implemented?** | 1d? | 2009-09-28 | 2009-09-28 |  |  |  | 261d |  |
| 24 | 7.1 | Oracle | 1d? | 2009-09-28 | 2009-09-28 |  |  |  | 90d |  |
| 25 | 7.2 | MS SQL | 1d? | 2009-09-28 | 2009-09-28 |  |  |  | 90d |  |
| 26 | 7.3 | XML | 1d? | 2009-09-28 | 2009-09-28 |  |  |  | 90d |  |
| 27 | 7.4 | Sybase | 1d? | 2009-09-28 | 2009-09-28 |  |  |  | 90d |  |
| 28 | 8 | row_status_type | 1d? | 2009-09-28 | 2009-09-28 |  |  |  | 90d |  |
| 29 | 9 | enterprise | 1d? | 2009-09-28 | 2009-09-28 |  |  |  | 90d |  |
| 30 | 10 | LOGSA CCBMER MIMOSA (views) | 113.16d? | 2009-09-14 A | 2010-02-03 |  | 27% | 96.44d? | 175.56d |  |
| 31 | 11 | CLOE TCI Configuration 1.0 | 37d? | 2009-09-30 A | 2009-11-23 |  | 1% | 36.8d? | 223d |  |
| 32 | 12 | LOGSA CCBMER MIMOSA_BL (next gen) | 13.62d? | 2009-11-02 A | 2009-11-20 |  |  | 13.62d? | 224.38d |  |
| 33 | 13 | LOGSA CCBMER CCBMDW | 14.12d? | 2009-10-19 | 2009-11-06 |  |  |  | 229.88d |  |
| 34 | 14 | LOGSA CCBMER EAMR Core | 23.25d? | 2009-10-19 | 2009-11-20 |  |  |  | 224.75d |  |
| 35 | 15 | CCBMER Bulk File Handler | 210d | 2009-11-02 | 2010-09-01 |  |  |  | 28d |  |
| 36 | 16 | CCBMER Bulk File Handler Receiving | 117d | 2009-11-02 A | 2010-04-13 |  | 1% | 115.57d | 127d |  |
| 37 | 17 | LOGSA CCBMER EAMR TACOM | 182d? | 2009-12-01 | 2010-08-19 |  |  |  | 37d |  |
| 38 | 18 | LOGSA CCBMER EAMR AMCOM | 178d? | 2010-02-01 | 2010-10-13 |  |  |  | 0d |  |
