# EOA Project Plan as of 20110720

Schedule from MS Project, 2011-05-24 to 2013-04-05.
Booz Allen Hamiton

## Calendars

- Standard: Mon-Fri 08:00-12:00, 13:00-17:00; Sat-Sun off. Exceptions (off unless hours are given): 2011-10-15 08:00-12:00, 13:00-17:00, 2011-10-29 08:00-12:00, 13:00-17:00, 2012-04-21 08:00-12:00, 13:00-17:00.

## Resources

| Resource |
| --- |
| Brian White |
| Charles Crabb |
| Anthony Tignola |
| Matt Guardascione |
| Jacqueline Lubinski |
| Thomas Smith |
| Dan Reineke |
| Linda Martino |
| John White |

## Schedule

| ID | WBS | Task | Type | Duration | Start | Finish | Total slack | Constraint | Location |
| --- | --- | --- | --- | --- | --- | --- | --- | --- | --- |
| 1 | 1 | **Application of Technology TQG- SIAD** |  | 129d? | 2011-07-01 | 2011-12-26 | 88d |  | SIAD |
| 2 | 1.1 | **Develop MOAs for SIAD** |  | 35d | 2011-07-01 | 2011-08-18 | 429d |  | APG |
| 3 | 1.1.1 | Submit draft MOA to SIAD |  | 15d | 2011-07-01 | 2011-07-21 | 449d | start no earlier than 2011-07-01 | APG |
| 4 | 1.1.2 | Receive SIAD MOA Comments | milestone | 0d | 2011-07-21 | 2011-07-21 | 450d | start no earlier than 2011-07-21 | APG |
| 5 | 1.1.3 | Submit final MOA to SIAD | milestone | 0d | 2011-08-03 | 2011-08-03 | 441d | start no earlier than 2011-08-03 | APG |
| 6 | 1.1.4 | Coordinate MOA signature with SIAD |  | 12d | 2011-08-03 | 2011-08-18 | 429d | start no earlier than 2011-08-03 | SIAD |
| 7 | 1.2 | **Test Plan - SIAD** |  | 21d | 2011-08-08 | 2011-09-06 | 417d |  | APG |
| 8 | 1.2.1 | Develop Test Plan for SIAD |  | 10d | 2011-08-08 | 2011-08-19 | 428d | start no earlier than 2011-08-08 | Rochester |
| 9 | 1.2.2 | Submit draft Operational Test Plan- SIAD |  | 1d | 2011-08-29 | 2011-08-29 | 422d | start no earlier than 2011-08-29 | APG |
| 10 | 1.2.3 | Receive CECOM LRC Test Plan Comments |  | 5d | 2011-08-29 | 2011-09-02 | 418d | finish no earlier than 2011-09-02 | APG |
| 11 | 1.2.4 | Submit final Operational Test Plan- SIAD Phase I | milestone | 0d | 2011-09-06 | 2011-09-06 | 417d | start no earlier than 2011-09-06 | APG |
| 12 | 1.3 | Coordinate Deployment of CBM+ enabled Equipment to SIAD |  | 5d | 2011-08-29 | 2011-09-02 | 418d | finish no earlier than 2011-09-02 | APG |
| 13 | 1.4 | Deploy CBM+ enabled equipment to SIAD |  | 6d | 2011-09-07 | 2011-09-14 | 410d | finish no earlier than 2011-09-14 | Rochester |
| 14 | 1.5 | **Conduct CBM+ Operational Assessment on CBM+ enabled equipment at SIAD Phase I** |  | 36d | 2011-09-14 | 2011-10-31 | 375d |  | SIAD |
| 15 | 1.5.1 | In Brief to SIAD Leadership | milestone | 0d | 2011-09-15 | 2011-09-15 | 410d | start no earlier than 2011-09-15 | SIAD |
| 16 | 1.5.2 | Receive CBM+ enabled equipment at SIAD |  | 1d | 2011-09-14 | 2011-09-14 | 410d | start no earlier than 2011-09-14 | SIAD |
| 17 | 1.5.3 | **Conduct operational CBM+ test Phase I to include data transfers** |  | 33d | 2011-09-19 | 2011-10-31 | 375d |  | SIAD |
| 18 | 1.5.3.1 | SIAD Operational CBM+ test Phase I |  | 32d | 2011-09-19 | 2011-10-29 | 376d | finish no earlier than 2011-10-29 | SIAD |
| 19 | 1.5.3.2 | Daily FTP Data transfer |  | 32d | 2011-09-20 | 2011-10-31 | 375d | finish no earlier than 2011-10-31 | SIAD |
| 20 | 1.5.3.3 | Daily CD Data transfer |  | 32d | 2011-09-20 | 2011-10-31 | 375d | finish no earlier than 2011-10-31 | SIAD |
| 21 | 1.5.3.4 | Training for SIAD personnel |  | 4d | 2011-10-24 | 2011-10-27 | 378d | start no earlier than 2011-10-24 | SIAD |
| 22 | 1.5.4 | Operational Assessment at SIAD Complete | milestone | 0d | 2011-10-29 | 2011-10-29 | 377d | start no earlier than 2011-10-29 | SIAD |
| 23 | 1.6 | **Conduct CBM+ Operational Assessment on CBM+ enabled equipment at SIAD Phase II** |  | 41d? | 2011-10-31 | 2011-12-26 | 0d |  | SIAD |
| 24 | 1.6.1 | Conduct CBM+ Operational Assessment on CBM+ enabled equipment at SIAD Phase II | milestone | 0d? | 2011-10-31 | 2011-10-31 | 0d | must start on 2011-10-31 |  |
| 25 | 1.6.2 | Conduct CBM+ Operational Assessment on CBM+ enabled equipment at SIAD Phase II | milestone | 0d? | 2011-12-26 | 2011-12-26 | 0d | must finish on 2011-12-26 |  |

| ID | WBS | Task | Type | Duration | Start | Finish | Total slack | Constraint | Location |
| --- | --- | --- | --- | --- | --- | --- | --- | --- | --- |
| 26 | 1.6.3 | **Conduct operational CBM+ test Phase II to include data transfers** |  | 29d? | 2011-10-31 | 2011-12-08 | 0d |  | SIAD |
| 27 | 1.6.3.1 | Conduct operational CBM+ test Phase II to include data transfers | milestone | 0d? | 2011-10-31 | 2011-10-31 | 0d | must start on 2011-10-31 |  |
| 28 | 1.6.3.2 | Conduct operational CBM+ test Phase II to include data transfers | milestone | 0d? | 2011-12-08 | 2011-12-08 | 0d | must finish on 2011-12-08 |  |
| 29 | 1.6.3.3 | SIAD Operational CBM+ test Phase II |  | 29d | 2011-10-31 | 2011-12-08 | 346d | start no earlier than 2011-10-31 | SIAD |
| 30 | 1.6.3.4 | Daily FTP Data transfer |  | 28d | 2011-11-01 | 2011-12-08 | 346d | finish no earlier than 2011-12-08 | SIAD |
| 31 | 1.6.3.5 | Daily CD Data transfer |  | 28d | 2011-11-01 | 2011-12-08 | 346d | finish no earlier than 2011-12-08 | SIAD |
| 32 | 1.6.4 | Operational Test Phase II at SIAD Complete | milestone | 0d | 2011-12-08 | 2011-12-08 | 347d | start no earlier than 2011-12-08 | SIAD |
| 33 | 1.6.5 | Outbrief to SIAD Leadership |  | 1d | 2011-12-08 | 2011-12-08 | 346d | start no earlier than 2011-12-08 | SIAD |
| 34 | 1.6.6 | Equipment Tear-Down |  | 1d | 2011-12-09 | 2011-12-09 | 345d | start no earlier than 2011-12-09 | SIAD |
| 35 | 1.6.7 | Coordinate Transportation for CPP and TQG |  | 4d | 2011-11-18 | 2011-11-23 | 357d | start no earlier than 2011-11-18 | SIAD |
| 36 | 1.6.8 | Transport CBM+ enabled equipment to Rochester, NY |  | 5d | 2011-12-09 | 2011-12-15 | 341d | start no earlier than 2011-12-09 | SIAD |
| 37 | 2 | **Application of Technology TQG- Ft. Campbell** |  | 315d? | 2011-07-01 | 2012-09-10 | 0d |  | Ft Campbell |
| 38 | 2.1 | Application of Technology TQG- Ft. Campbell | milestone | 0d? | 2011-07-01 | 2011-07-01 | 0d | must start on 2011-07-01 |  |
| 39 | 2.2 | Application of Technology TQG- Ft. Campbell | milestone | 0d? | 2012-09-10 | 2012-09-10 | 0d | must finish on 2012-09-10 |  |
| 40 | 2.3 | **Develop MOAs for Ft. Campbell** |  | 26d | 2011-07-01 | 2011-08-05 | 438d |  | APG |
| 41 | 2.3.1 | Submit draft MOA to Ft. Campbell |  | 15d | 2011-07-01 | 2011-07-21 | 449d | start no earlier than 2011-07-01 | APG |
| 42 | 2.3.2 | Receive Ft. Campbell MOA Comments | milestone | 0d | 2011-07-21 | 2011-07-21 | 450d | start no earlier than 2011-07-21 | APG |
| 43 | 2.3.3 | Submit final MOA to Ft. Campbell | milestone | 0d | 2011-07-21 | 2011-07-21 | 450d | start no earlier than 2011-07-21 | APG |
| 44 | 2.3.4 | Coordinate MOA signature with Ft. Campbell |  | 12d | 2011-07-21 | 2011-08-05 | 438d | start no earlier than 2011-07-21 | Ft. Campbell |
| 45 | 2.4 | **Test Plan - Ft. Campbell** |  | 28d | 2011-11-29 | 2012-01-05 | 327d |  | APG |
| 46 | 2.4.1 | Develop Test Plan for Ft. Campbell |  | 10d | 2011-11-29 | 2011-12-12 | 345d | finish no earlier than 2011-12-12 | Rochester |
| 47 | 2.4.2 | Submit draft Operational Test Plan- Ft. Campbell |  | 1d | 2011-12-12 | 2011-12-12 | 345d | start no earlier than 2011-12-12 | APG |
| 48 | 2.4.3 | Receive CECOM LRC Test Plan Comments |  | 16d | 2011-12-12 | 2012-01-02 | 330d | finish no earlier than 2012-01-02 | APG |
| 49 | 2.4.4 | Submit final Operational Test Plan- Ft. Campbell |  | 1d | 2012-01-05 | 2012-01-05 | 327d | finish no earlier than 2012-01-05 | APG |
| 50 | 2.5 | Coordinate Transportation of CBM+ enabled Equipment to Ft. Campbell |  | 5d | 2012-02-14 | 2012-02-20 | 295d | start no earlier than 2012-02-14 | APG |

| ID | WBS | Task | Type | Duration | Start | Finish | Total slack | Constraint | Location |
| --- | --- | --- | --- | --- | --- | --- | --- | --- | --- |
| 51 | 2.6 | **Conduct CBM+ Operational Assessment on CBM+ enabled equipment at Ft. Campbell** |  | 40d? | 2012-03-05 | 2012-04-26 | 0d |  | Ft Campbell |
| 52 | 2.6.1 | Conduct CBM+ Operational Assessment on CBM+ enabled equipment at Ft. Campbell | milestone | 0d? | 2012-03-05 | 2012-03-05 | 0d | must start on 2012-03-05 |  |
| 53 | 2.6.2 | Conduct CBM+ Operational Assessment on CBM+ enabled equipment at Ft. Campbell | milestone | 0d? | 2012-04-26 | 2012-04-26 | 0d | must finish on 2012-04-26 |  |
| 54 | 2.6.3 | Bayesian Belief Networks |  | 31d | 2012-03-12 | 2012-04-21 | 249d | finish no earlier than 2012-04-21 | Ft. Campbell |
| 55 | 2.6.4 | Transport CBM+ enabled CPP equipment to Ft. Campbell |  | 4d | 2012-03-05 | 2012-03-08 | 281d | start no earlier than 2012-03-05 | Ft. Campbell |
| 56 | 2.6.5 | Receive CBM+ enabled equipment at Ft Campbell |  | 1d | 2012-03-08 | 2012-03-08 | 281d | start no earlier than 2012-03-08 | Ft Campbell |
| 57 | 2.6.6 | Inbrief to Ft. Campbell Leadership |  | 1d | 2012-03-12 | 2012-03-12 | 279d | start no earlier than 2012-03-12 | Ft Campbell |
| 58 | 2.6.7 | **Conduct operational CBM+ test to include data transfers** |  | 37d? | 2012-03-05 | 2012-04-23 | 5d |  | Ft Campbell |
| 59 | 2.6.7.1 | Conduct operational CBM+ test to include data transfers | milestone | 0d? | 2012-03-12 | 2012-03-12 | 0d | must start on 2012-03-12 |  |
| 60 | 2.6.7.2 | Daily FTP Data transfer |  | 31d | 2012-03-13 | 2012-04-23 | 248d | finish no earlier than 2012-04-23 | Ft Campbell |
| 61 | 2.6.7.3 | Daily CD Data transfer |  | 31d | 2012-03-13 | 2012-04-23 | 248d | finish no earlier than 2012-04-23 | Ft Campbell |
| 62 | 2.6.7.4 | Operational CBM+ Test at Ft Campbell Complete | milestone | 0d | 2012-04-21 | 2012-04-21 | 250d | start no earlier than 2012-04-21 | Ft Campbell |
| 63 | 2.6.7.5 | **60kw Generator Testing** |  | 36d? | 2012-03-05 | 2012-04-21 | 249d |  |  |
| 64 | 2.6.7.5.1 | Apply CECOM CBM+ Sensor Suite to 60 kw generator |  | 5d | 2012-03-05 | 2012-03-09 | 280d | finish no earlier than 2012-03-09 | Ft Campbell |
| 65 | 2.6.7.5.2 | ApplyAMSAA Sensor Suite to 60 kw generator |  | 5d? | 2012-03-05 | 2012-03-09 | 280d | finish no earlier than 2012-03-09 | Ft Campbell |
| 66 | 2.6.7.5.3 | IRM Model AMSAA Generator |  | 31d | 2012-03-12 | 2012-04-21 | 249d | start no earlier than 2012-03-12 | Ft Campbell |
| 67 | 2.6.7.5.4 | CIMS BETA test CECOM CBM+ Generator |  | 31d | 2012-03-12 | 2012-04-21 | 249d | start no earlier than 2012-03-12 | Ft Campbell |
| 68 | 2.6.8 | Coordinate Transportation for CPP and Generator |  | 5d | 2012-04-09 | 2012-04-13 | 255d | start no earlier than 2012-04-09 | Ft. Campbell |
| 69 | 2.6.9 | Outbrief to Ft. Campbell Leadership |  | 1d | 2012-04-20 | 2012-04-20 | 250d | start no earlier than 2012-04-20 | Ft. Campbell |
| 70 | 2.6.10 | Deploy CBM+ enabled equipment to Rochester |  | 4d | 2012-04-23 | 2012-04-26 | 245d | start no earlier than 2012-04-23 | Ft. Campbell |
| 71 | 2.6.11 | Receive CBM+ enabled equipment in Rochester |  | 1d | 2012-04-26 | 2012-04-26 | 245d | start no earlier than 2012-04-26 | Rochester |
| 72 | 3 | AMSAA CONUS Generator Instrumentation |  | 1d? | 2011-07-14 | 2011-07-14 | 454d |  |  |
| 73 | 4 | AMSAA OCONUS Generator Instrumentation |  | 1d? | 2011-07-14 | 2011-07-14 | 454d |  |  |
| 74 | 5 | **Application of Technology TQG- CENTCOM** |  | 137d? | 2011-07-01 | 2012-01-05 | 78d |  | Afghanistan |
| 75 | 5.1 | **Develop MOA between CECOM LRC and AMSAA** |  | 26d | 2011-07-01 | 2011-08-05 | 438d |  | APG |
| 76 | 5.1.1 | Submit draft MOA to AMSAA |  | 15d | 2011-07-01 | 2011-07-21 | 449d | start no earlier than 2011-07-01 | APG |
| 77 | 5.1.2 | Receive AMSAA MOA Comments | milestone | 0d | 2011-07-01 | 2011-07-01 | 464d | start no earlier than 2011-07-01 | APG |
| 78 | 5.1.3 | Submit final MOA to AMSAA | milestone | 0d | 2011-07-21 | 2011-07-21 | 450d | start no earlier than 2011-07-21 | APG |
| 79 | 5.1.4 | Coordinate MOA signature with AMSAA |  | 12d | 2011-07-21 | 2011-08-05 | 438d | start no earlier than 2011-07-21 | APG |

Notes:
- 74: Awaiting input from AMSAA

| ID | WBS | Task | Type | Duration | Start | Finish | Total slack | Constraint | Location |
| --- | --- | --- | --- | --- | --- | --- | --- | --- | --- |
| 80 | 5.2 | **Select TQG Platforms to CBM+ enable** |  | 45d | 2011-08-01 | 2011-09-30 | 398d |  | Afghanistan |
| 81 | 5.2.1 | Select 10kw TQG Platforms and Units |  | 45d | 2011-08-01 | 2011-09-30 | 398d | start no earlier than 2011-08-01 | Afghanistan |
| 82 | 5.2.2 | Select 15kw TQG Platforms and Units |  | 45d | 2011-08-01 | 2011-09-30 | 398d | start no earlier than 2011-08-01 | Afghanistan |
| 83 | 5.2.3 | Select 30kw TQG Platforms and Units |  | 45d | 2011-08-01 | 2011-09-30 | 398d | start no earlier than 2011-08-01 | Afghanistan |
| 84 | 5.2.4 | Select 60kw TQG Platforms and Units |  | 45d | 2011-08-01 | 2011-09-30 | 398d | start no earlier than 2011-08-01 | Afghanistan |
| 85 | 5.2.5 | Select 100kw TQG Platforms and Units |  | 45d | 2011-08-01 | 2011-09-30 | 398d | start no earlier than 2011-08-01 | Afghanistan |
| 86 | 5.3 | **Test Plan - Afghanistan** |  | 9d | 2011-08-08 | 2011-08-19 | 429d |  | APG |
| 87 | 5.3.1 | Submit draft Operational Test Plan- Afghanistan | milestone | 0d | 2011-08-08 | 2011-08-08 | 438d | start no earlier than 2011-08-08 | APG |
| 88 | 5.3.2 | Receive CECOM LRC Test Plan Comments |  | 5d | 2011-08-09 | 2011-08-15 | 432d | start no earlier than 2011-08-09 | APG |
| 89 | 5.3.3 | Submit final Operational Test Plan- Afghanistan | milestone | 0d | 2011-08-19 | 2011-08-19 | 429d | start no earlier than 2011-08-19 | APG |
| 90 | 5.4 | **Conduct CBM+ Operational Analysis on CBM+ enabled equipment in Afghanistan** |  | 77d? | 2011-09-12 | 2011-12-26 | 27d |  | Afghanistan |
| 91 | 5.4.1 | **Transport CBM+ hardware to Afghanistan** |  | 27d? | 2011-09-12 | 2011-10-17 | 27d |  | APG |
| 92 | 5.4.1.1 | Transport CBM+ hardware to Afghanistan | milestone | 0d? | 2011-10-17 | 2011-10-17 | 0d | must finish on 2011-10-17 |  |
| 93 | 5.4.1.2 | Coordinate Transportation for CBM+ Hardware |  | 15d | 2011-09-12 | 2011-09-30 | 398d | start no earlier than 2011-09-12 | APG |
| 94 | 5.4.2 | Install CBM+ hardware on selected platform |  | 20d | 2011-10-18 | 2011-11-11 | 366d | start no earlier than 2011-10-18 | Afghanistan |
| 95 | 5.4.3 | Conduct operational CBM+ test |  | 16d | 2011-11-15 | 2011-12-06 | 349d | start no earlier than 2011-11-15 | Afghanistan |
| 96 | 5.4.4 | Operational CBM+ test in Afghanistan complete | milestone | 0d | 2011-12-26 | 2011-12-26 | 336d | start no earlier than 2011-12-26 | Afghanistan |
| 97 | 5.4.5 | Remove CBM+ hardware from platform |  | 11d | 2011-12-07 | 2011-12-21 | 338d | start no earlier than 2011-12-07 | Afghanistan |
| 98 | 5.5 | Coordinate Transportation for CBM+ Hardware |  | 10d | 2011-11-28 | 2011-12-09 | 346d | start no earlier than 2011-11-28 | Afghanistan |
| 99 | 5.6 | Transport CBM+ hardware to APG |  | 11d | 2011-12-22 | 2012-01-05 | 327d | start no earlier than 2011-12-22 | Afghanistan |
| 100 | 6 | **AMSAA Corrosion Study** |  | 1d? | 2011-07-14 | 2011-07-14 | 454d |  |  |
| 101 | 6.1 | **Application of Technology Shelters- Korea** |  | 1d? | 2011-07-14 | 2011-07-14 | 454d |  | Korea |
| 102 | 6.1.1 | **Develop MOA between AMSAA and 8th Army** |  | 1d | 2011-07-14 | 2011-07-14 | 454d |  | Korea |
| 103 | 6.1.1.1 | Submit draft MOA to 8th Army Unit |  | 1d | 2011-07-14 | 2011-07-14 | 454d |  | Korea |
| 104 | 6.1.1.2 | Submit final MOA to 8th Army Unit | milestone | 0d | 2011-07-14 | 2011-07-14 | 455d |  | Korea |
| 105 | 6.1.1.3 | Coordinate MOA signature with 8th Army Unit |  | 1d | 2011-07-14 | 2011-07-14 | 454d |  | Korea |

Notes:
- 80: Awaiting input from AMSAA
- 90: Awaiting input from AMSAA
- 101: Awaiting input from AMSAA

| ID | WBS | Task | Type | Duration | Start | Finish | Total slack | Constraint | Location |
| --- | --- | --- | --- | --- | --- | --- | --- | --- | --- |
| 106 | 6.1.1.4 | **Test Plan - Korea** |  | 1d | 2011-07-14 | 2011-07-14 | 454d |  | APG |
| 107 | 6.1.1.4.1 | Submit draft Operational Test Plan- Korea |  | 1d | 2011-07-14 | 2011-07-14 | 454d | start no earlier than 2011-07-14 | APG |
| 108 | 6.1.1.4.2 | Submit final Operational Test Plan- Korea | milestone | 0d | 2011-07-14 | 2011-07-14 | 455d |  | APG |
| 109 | 6.1.2 | Select 8th Army Unit to CBM+ enable |  | 1d? | 2011-07-14 | 2011-07-14 | 454d |  | Korea |
| 110 | 6.1.3 | Coordinate Transportation for CBM+ Hardware |  | 1d | 2011-07-14 | 2011-07-14 | 454d | start no earlier than 2011-07-14 | APG |
| 111 | 6.1.4 | Transport CBM+ hardware to Korea |  | 1d? | 2011-07-14 | 2011-07-14 | 454d | start no earlier than 2011-07-14 | APG |
| 112 | 6.1.5 | Receive CBM+ enabled equipment in Korea |  | 1d | 2011-07-14 | 2011-07-14 | 454d |  | Korea |
| 113 | 6.1.6 | Install CBM+ Hardware on selected Platform |  | 1d? | 2011-07-14 | 2011-07-14 | 454d |  | Korea |
| 114 | 6.1.7 | Conduct operational CBM+ test |  | 1d | 2011-07-14 | 2011-07-14 | 454d |  | Korea |
| 115 | 6.1.8 | Operational CBM+ test in Korea Complete | milestone | 0d | 2011-07-14 | 2011-07-14 | 455d |  | Korea |
| 116 | 6.1.9 | Coordinate transportation for corrosion detection strips |  | 1d? | 2011-07-14 | 2011-07-14 | 454d |  | APG |
| 117 | 6.1.10 | Transport corrosion detection strips to lab |  | 1d? | 2011-07-14 | 2011-07-14 | 454d |  | Germany |
| 118 | 6.2 | **Application of Technology Shelters- Hawaii** |  | 1d? | 2011-07-14 | 2011-07-14 | 454d |  | Hawaii |
| 119 | 6.2.1 | **Develop MOA between AMSAA and USARPAC Unit** |  | 1d? | 2011-07-14 | 2011-07-14 | 454d |  | Hawaii |
| 120 | 6.2.1.1 | Submit draft MOA to USARPAC Unit |  | 1d? | 2011-07-14 | 2011-07-14 | 454d |  | Hawaii |
| 121 | 6.2.1.2 | Submit final MOA to USARPAC Unit | milestone | 0d | 2011-07-14 | 2011-07-14 | 455d |  | Hawaii |
| 122 | 6.2.1.3 | Coordinate MOA signature with USARPAC Unit |  | 1d? | 2011-07-14 | 2011-07-14 | 454d |  | Hawaii |
| 123 | 6.2.1.4 | **Test Plan - Hawaii** |  | 1d | 2011-07-14 | 2011-07-14 | 454d |  | APG |
| 124 | 6.2.1.4.1 | Submit draft Operational Test Plan- Hawaii |  | 1d | 2011-07-14 | 2011-07-14 | 454d |  | APG |
| 125 | 6.2.1.4.2 | Submit final Operational Test Plan- Hawaii | milestone | 0d | 2011-07-14 | 2011-07-14 | 455d |  | APG |
| 126 | 6.2.2 | Select USARPAC Unit to CBM+ enable |  | 1d? | 2011-07-14 | 2011-07-14 | 454d |  | Hawaii |
| 127 | 6.2.3 | Receive CBM+ enabled equipment in Hawaii |  | 1d | 2011-07-14 | 2011-07-14 | 454d |  | Hawaii |
| 128 | 6.2.4 | Install CBM+ Hardware on selected Platform |  | 1d? | 2011-07-14 | 2011-07-14 | 454d |  | Hawaii |
| 129 | 6.2.5 | Conduct operational CBM+ test |  | 1d | 2011-07-14 | 2011-07-14 | 454d |  | Hawaii |
| 130 | 6.2.6 | Operational CBM+ test in Hawaii complete | milestone | 0d | 2011-07-14 | 2011-07-14 | 455d |  | Hawaii |
| 131 | 6.2.7 | Coordinate transportation for corrosion detection strips |  | 1d? | 2011-07-14 | 2011-07-14 | 454d |  | APG |
| 132 | 6.2.8 | Transport corrosion detection strips to lab |  | 1d? | 2011-07-14 | 2011-07-14 | 454d |  | Germany |

Notes:
- 118: Awaiting input from AMSAA
- 123: Changed to AMSAA responsibility
- 124: Changed to AMSAA responsibility
- 125: Changed to AMSAA responsibility

| ID | WBS | Task | Type | Duration | Start | Finish | Total slack | Constraint | Location |
| --- | --- | --- | --- | --- | --- | --- | --- | --- | --- |
| 133 | 6.3 | **Application of Technology Shelters- Germany** |  | 1d? | 2011-07-14 | 2011-07-14 | 454d |  | Germany |
| 134 | 6.3.1 | **Develop MOA between AMSAA and USAREUR Unit** |  | 1d? | 2011-07-14 | 2011-07-14 | 454d |  | Germany |
| 135 | 6.3.1.1 | Submit draft MOA to USAREUR |  | 1d? | 2011-07-14 | 2011-07-14 | 454d |  | Germany |
| 136 | 6.3.1.2 | Submit final MOA to USAREUR Unit | milestone | 0d | 2011-07-14 | 2011-07-14 | 455d |  | Germany |
| 137 | 6.3.1.3 | Coordinate MOA signature with USAREUR Unit |  | 1d? | 2011-07-14 | 2011-07-14 | 454d |  | Germany |
| 138 | 6.3.1.4 | **Test Plan - Germany** |  | 1d | 2011-07-14 | 2011-07-14 | 454d |  | APG |
| 139 | 6.3.1.4.1 | Submit draft Operational Test Plan- Germany |  | 1d | 2011-07-14 | 2011-07-14 | 454d |  | APG |
| 140 | 6.3.1.4.2 | Submit final Operational Test Plan- Germany | milestone | 0d | 2011-07-14 | 2011-07-14 | 455d |  | APG |
| 141 | 6.3.1.5 | Select USAREUR Unit to CBM+ enable |  | 1d? | 2011-07-14 | 2011-07-14 | 454d |  | Germany |
| 142 | 6.3.1.6 | Receive CBM+ enabled equipment in Germany |  | 1d | 2011-07-14 | 2011-07-14 | 454d |  | Germany |
| 143 | 6.3.1.7 | Install CBM+ Hardware on selected Platform |  | 1d? | 2011-07-14 | 2011-07-14 | 454d |  | Germany |
| 144 | 6.3.1.8 | Conduct operational CBM+ test |  | 1d | 2011-07-14 | 2011-07-14 | 454d |  | Germany |
| 145 | 6.3.1.9 | Operational CBM+ test in Germany complete | milestone | 0d | 2011-07-14 | 2011-07-14 | 455d |  | Germany |
| 146 | 6.3.1.10 | Coordinate transportation for corrosion detection strips |  | 1d? | 2011-07-14 | 2011-07-14 | 454d |  | APG |
| 147 | 6.3.1.11 | Transport corrosion detection strips to lab |  | 1d | 2011-07-14 | 2011-07-14 | 454d |  | Germany |
| 148 | 7 | LOGSA | milestone | 0d | 2011-07-14 | 2011-07-14 | 455d |  |  |
| 149 | 8 | CCBMD Requirement Document |  | 24d | 2011-07-14 | 2011-08-16 | 431d |  | Jackson, NJ |
| 150 | 9 | Repository |  | 62d | 2011-07-25 | 2011-10-17 | 386d | finish no earlier than 2011-10-17 | Jackson, NJ |
| 151 | 10 | PFSA |  | 72d | 2011-07-14 | 2011-10-20 | 383d |  |  |
| 152 | 11 | **SEC** |  | 237d? | 2011-08-30 | 2012-07-20 | 0d |  |  |
| 153 | 11.1 | SEC | milestone | 0d? | 2011-08-30 | 2011-08-30 | 0d | must start on 2011-08-30 |  |
| 154 | 11.2 | SEC | milestone | 0d? | 2012-07-20 | 2012-07-20 | 0d | must finish on 2012-07-20 |  |
| 155 | 11.3 | Critical Tasks |  | 237d | 2011-08-30 | 2012-07-20 | 185d | start no earlier than 2011-08-30 |  |
| 156 | 12 | **On System Data Capture- Afghanistan** |  | 16d | 2011-11-15 | 2011-12-06 | 349d |  | Afghanistan |
| 157 | 12.1 | **Collect CBM+ data from CBM+ enabled equipment** |  | 16d | 2011-11-15 | 2011-12-06 | 349d |  | Afghanistan |
| 158 | 12.1.1 | Send CBM+ data to AMSAA Database |  | 16d | 2011-11-15 | 2011-12-06 | 349d | start no earlier than 2011-11-15 | APG |
| 159 | 12.1.2 | Send CBM+ data to CECOM Database |  | 16d | 2011-11-15 | 2011-12-06 | 349d | start no earlier than 2011-11-15 | APG |
| 160 | 12.1.3 | Send CBM+ data to LOGSA Database |  | 16d | 2011-11-15 | 2011-12-06 | 349d | start no earlier than 2011-11-15 | Huntsville |

Notes:
- 138: Changed to AMSAA responsibility
- 139: Changed to AMSAA responsibility
- 140: Changed to AMSAA responsibility

| ID | WBS | Task | Duration | Start | Finish | Predecessors | Total slack | Constraint | Location |
| --- | --- | --- | --- | --- | --- | --- | --- | --- | --- |
| 161 | 13 | **On System Data Capture- Ft. Campbell** | 1d? | 2012-04-27 | 2012-04-27 | 51 | 245d |  | Ft Campbell |
| 162 | 13.1 | Data Communications Plan | 1d? | 2012-04-27 | 2012-04-27 |  | 245d |  | Jackson, NJ |
| 163 | 13.2 | **Collect CBM+ data from CBM+ enabled equipment** | 1d | 2012-04-27 | 2012-04-27 |  | 245d |  | Ft Campbell |
| 164 | 13.2.1 | Send CBM+ data to CECOM Database | 1d | 2012-04-27 | 2012-04-27 |  | 245d | start no earlier than 2012-04-19 | APG |
| 165 | 13.2.2 | Send CBM+ data to LOGSA Database | 1d | 2012-04-27 | 2012-04-27 |  | 245d | start no earlier than 2012-04-20 | Huntsville |
| 166 | 14 | **On System Data Capture- SIAD** | 1d | 2011-12-27 | 2011-12-27 | 23 | 334d |  | SIAD |
| 167 | 14.1 | **Collect CBM+ data from CBM+ enabled equipment** | 1d | 2011-12-27 | 2011-12-27 |  | 334d |  | SIAD |
| 168 | 14.1.1 | Send CBM+ data to CECOM Database | 1d | 2011-12-27 | 2011-12-27 |  | 334d | start no earlier than 2011-12-22 | APG |
| 169 | 14.1.2 | Send CBM+ data to LOGSA Database | 1d | 2011-12-27 | 2011-12-27 |  | 334d | start no earlier than 2011-12-27 | Huntsville |
| 170 | 15 | **On System Data Capture- Korea** | 1d? | 2011-07-14 | 2011-07-14 |  | 454d |  | Korea |
| 171 | 15.1 | **Collect CBM+ data from CBM+ enabled equipment** | 1d? | 2011-07-14 | 2011-07-14 |  | 454d |  | Korea |
| 172 | 15.1.1 | Send CBM+ data to AMSAA Database | 1d? | 2011-07-14 | 2011-07-14 |  | 454d |  | APG |
| 173 | 15.1.2 | Send CBM+ data to CECOM Database | 1d? | 2011-07-14 | 2011-07-14 |  | 454d |  | APG |
| 174 | 15.1.3 | Send CBM+ data to LOGSA Database | 1d? | 2011-07-14 | 2011-07-14 |  | 454d |  | Huntsville |
| 175 | 16 | **On System Data Capture- Hawaii** | 1d? | 2011-07-14 | 2011-07-14 |  | 454d |  | Hawaii |
| 176 | 16.1 | **Collect CBM+ data from CBM+ enabled equipment** | 1d? | 2011-07-14 | 2011-07-14 |  | 454d |  | Hawaii |
| 177 | 16.1.1 | Send CBM+ data to AMSAA Database | 1d? | 2011-07-14 | 2011-07-14 |  | 454d |  | APG |
| 178 | 16.1.2 | Send CBM+ data to CECOM Database | 1d? | 2011-07-14 | 2011-07-14 |  | 454d |  | APG |
| 179 | 16.1.3 | Send CBM+ data to LOGSA Database | 1d? | 2011-07-14 | 2011-07-14 |  | 454d |  | Huntsville |
| 180 | 17 | **On System Data Capture- Germany** | 1d? | 2011-07-14 | 2011-07-14 |  | 454d |  | Germany |
| 181 | 17.1 | **Collect CBM+ data from CBM+ enabled equipment** | 1d? | 2011-07-14 | 2011-07-14 |  | 454d |  | Germany |
| 182 | 17.1.1 | Send CBM+ data to AMSAA Database | 1d? | 2011-07-14 | 2011-07-14 |  | 454d |  | APG |
| 183 | 17.1.2 | Send CBM+ data to CECOM Database | 1d? | 2011-07-14 | 2011-07-14 |  | 454d |  | APG |
| 184 | 17.1.3 | Send CBM+ data to LOGSA Database | 1d? | 2011-07-14 | 2011-07-14 |  | 454d |  | Huntsville |
| 185 | 18 | Perform Degrader Analysis and Program TQG Platform Sensor Simulator | 224d | 2011-08-23 | 2012-06-26 |  | 203d | start no earlier than 2011-08-23 | Jackson, NJ |

Notes:
- 161: Depends on if the data is moved via CAISI and VSAT vs. sneaker net.task already captured above- data sent every week
- 162: Depends on if the data is moved via CAISI and VSAT vs. sneaker net
- 163: Depends on if the data is moved via CAISI and VSAT vs. sneaker net
- 164: Depends on if the data is moved via CAISI and VSAT vs. sneaker net
- 165: Depends on if the data is moved via CAISI and VSAT vs. sneaker net
- 166: Depends on if the data is moved via CAISI and VSAT vs. sneaker net. task already captured above- data sent every week
- 167: Depends on if the data is moved via CAISI and VSAT vs. sneaker net
- 168: Depends on if the data is moved via CAISI and VSAT vs. sneaker net
- 169: Depends on if the data is moved via CAISI and VSAT vs. sneaker net

| ID | WBS | Task | Duration | Start | Finish | Predecessors | Total slack | Free slack | Constraint | Resources | Work | Location |
| --- | --- | --- | --- | --- | --- | --- | --- | --- | --- | --- | --- | --- |
| 186 | 19 | **Architecture Build Phase IIIb** | 350.5d | 2011-05-24 | 2012-09-20 |  | 141.5d |  |  |  | 6897.62h | Jackson, NJ |
| 187 | 19.1 | **Data Collection** | 111d | 2011-07-14 | 2011-12-13 |  | 344d |  |  |  | 848h | Jackson, NJ |
| 188 | 19.1.1 | TQG Locations for SBCT, IBCT, HBCT | 5d | 2011-07-14 | 2011-07-20 |  | 344d | 0d |  |  |  | Jackson, NJ |
| 189 | 19.1.2 | At-Platform Configuration | 10d | 2011-07-21 | 2011-08-03 | 188 | 344d | 0d |  | Charles Crabb | 80h | Jackson, NJ |
| 190 | 19.1.3 | On-Platform Configuration | 10d | 2011-08-04 | 2011-08-17 | 189 | 344d | 0d |  | Anthony Tignola | 80h | Jackson, NJ |
| 191 | 19.1.4 | CIMS Interface to Platform | 15d | 2011-08-18 | 2011-09-07 | 190 | 344d | 0d |  | Matt Guardascione | 120h | Jackson, NJ |
| 192 | 19.1.5 | Sensor Configurations | 12d | 2011-09-08 | 2011-09-23 | 191 | 344d | 0d |  | Jacqueline Lubinski | 96h | Jackson, NJ |
| 193 | 19.1.6 | CECOM ABCD Files | 15d | 2011-09-26 | 2011-10-14 | 192 | 344d | 0d |  | Charles Crabb | 120h | Jackson, NJ |
| 194 | 19.1.7 | DLB / CML Configuration | 12d | 2011-10-15 | 2011-10-29 | 193 | 344d | 0d |  | Anthony Tignola | 96h | Jackson, NJ |
| 195 | 19.1.8 | Data Storage Types and Locations | 11d | 2011-10-31 | 2011-11-14 | 194 | 344d | 0d |  | Matt Guardascione | 88h | Jackson, NJ |
| 196 | 19.1.9 | TQG Interface to MSD | 10d | 2011-11-15 | 2011-11-28 | 195 | 344d | 0d |  | Jacqueline Lubinski | 80h | Jackson, NJ |
| 197 | 19.1.10 | MSD configurations for CECOM | 11d | 2011-11-29 | 2011-12-13 | 196 | 344d |  |  | Charles Crabb | 88h | Jackson, NJ |
| 198 | 19.2 | **Planning Phase** | 82d | 2011-05-24 | 2011-09-14 |  | 174.5d |  |  |  | 1488h | Jackson, NJ |
| 199 | 19.2.1 | Architecture Project Plan | 15d | 2011-05-24 | 2011-06-13 |  | 410d | 0d | start no earlier than 2011-05-24 | Brian White | 120h | Jackson, NJ |
| 200 | 19.2.2 | **CECOM Architecture Requirements Document** | 67d | 2011-06-14 | 2011-09-14 | 199 | 410d |  |  | Charles Crabb [50%]; Anthony Tignola [50%] | 536h | Jackson, NJ |
| 201 | 19.2.2.1 | Meet with LIA to discuss CIMS Requirements | 5d | 2011-06-14 | 2011-06-20 |  | 410d | 0d |  |  |  | Jackson, NJ |
| 202 | 19.2.2.2 | Review DSC Requirements with Impact | 3d | 2011-06-21 | 2011-06-23 | 201 | 410d | 0d |  |  |  | Jackson, NJ |
| 203 | 19.2.2.3 | Meet with PMs to discuss PM Requirements | 7d | 2011-06-24 | 2011-07-04 | 202 | 410d | 0d |  |  |  | Jackson, NJ |
| 204 | 19.2.2.4 | Meet with LOGSA to discuss CCBMDW requirements | 7d | 2011-07-05 | 2011-07-13 | 203 | 410d | 0d |  |  |  | Jackson, NJ |
| 205 | 19.2.2.5 | Write requiremetns document | 45d | 2011-07-14 | 2011-09-14 | 204 | 410d |  |  |  |  | Jackson, NJ |
| 206 | 19.2.3 | **Develop Project Schedule** | 5d | 2011-07-25 | 2011-07-29 |  | 443d |  |  | Brian White [75%]; John White [25%] | 80h | Jackson, NJ |
| 207 | 19.2.3.1 | Develop High Level Schedule | 2d | 2011-07-25 | 2011-07-26 |  | 443d | 0d | start no earlier than 2011-07-25 | Brian White | 16h | Jackson, NJ |
| 208 | 19.2.3.2 | Develop Phase IIIb WBS | 3d | 2011-07-27 | 2011-07-29 | 207 | 443d |  |  | Brian White | 24h | Jackson, NJ |
| 209 | 19.2.4 | **Perform AILA Assessment** | 47d | 2011-07-08 | 2011-09-12 |  | 141.5d | 0d |  | Dan Reineke [50%]; Anthony Tignola [50%] | 752h | Jackson, NJ |
| 210 | 19.2.4.1 | Review OV-2 | 3d | 2011-07-08 | 2011-07-12 |  | 141.5d | 0d | start no earlier than 2011-07-08 | Dan Reineke | 24h | Jackson, NJ |
| 211 | 19.2.4.2 | Review OV-3 | 2d | 2011-07-13 | 2011-07-14 | 210 | 141.5d | 0d |  | Anthony Tignola | 16h | Jackson, NJ |
| 212 | 19.2.4.3 | Review OV-4 | 4d | 2011-07-15 | 2011-07-20 | 211 | 141.5d | 0d |  | Dan Reineke | 32h | Jackson, NJ |
| 213 | 19.2.4.4 | Review OV-5 | 3d | 2011-07-21 | 2011-07-25 | 212 | 141.5d | 0d |  | Anthony Tignola | 24h | Jackson, NJ |
| 214 | 19.2.4.5 | Review OV-6 | 5d | 2011-07-26 | 2011-08-01 | 213 | 141.5d | 0d |  | Dan Reineke | 40h | Jackson, NJ |
| 215 | 19.2.4.6 | Review OV-7 | 2d | 2011-08-02 | 2011-08-03 | 214 | 141.5d | 0d |  | Anthony Tignola | 16h | Jackson, NJ |
| 216 | 19.2.4.7 | Review TV-1 | 4d | 2011-08-04 | 2011-08-09 | 215 | 141.5d | 0d |  | Dan Reineke | 32h | Jackson, NJ |
| 217 | 19.2.4.8 | Review TV-2 | 4d | 2011-08-10 | 2011-08-15 | 216 | 141.5d | 0d |  | Dan Reineke [50%]; Anthony Tignola [50%] | 32h | Jackson, NJ |
| 218 | 19.2.4.9 | Document Results | 20d | 2011-08-16 | 2011-09-12 | 217 | 141.5d |  |  | Dan Reineke [50%]; Anthony Tignola [50%] | 160h | Jackson, NJ |

| ID | WBS | Task | Duration | Start | Finish | Predecessors | Total slack | Free slack | Constraint | Resources | Work | Location |
| --- | --- | --- | --- | --- | --- | --- | --- | --- | --- | --- | --- | --- |
| 219 | 19.3 | **Iteration 1 Design Phase** | 20d | 2011-09-13 | 2011-10-10 | 209 | 141.5d | 0d |  |  | 400h | Jackson, NJ |
| 220 | 19.3.1 | **Product Design** | 20d | 2011-09-13 | 2011-10-10 |  | 141.5d |  |  | Dan Reineke [25%]; Thomas Smith [50%]; Brian White [25%] | 392h | Jackson, NJ |
| 221 | 19.3.1.1 | **SV-1 Design** | 20d | 2011-09-13 | 2011-10-10 |  | 141.5d |  |  |  | 232h | Jackson, NJ |
| 222 | 19.3.1.1.1 | SBCT | 5d | 2011-09-13 | 2011-09-19 |  | 156.5d |  |  | Dan Reineke | 40h | Jackson, NJ |
| 223 | 19.3.1.1.2 | IBCT | 4d | 2011-09-13 | 2011-09-16 |  | 157.5d |  |  | Thomas Smith | 32h | Jackson, NJ |
| 224 | 19.3.1.1.3 | HBCT | 5d | 2011-09-13 | 2011-09-19 |  | 141.5d | 0d |  | Thomas Smith | 40h | Jackson, NJ |
| 225 | 19.3.1.1.4 | **SV-2 Design** | 15d | 2011-09-20 | 2011-10-10 | 224 | 141.5d |  |  |  | 120h | Jackson, NJ |
| 226 | 19.3.1.1.4.1 | Leverage / Integrate to CERDEC Comms SBCT | 5d | 2011-09-20 | 2011-09-26 |  | 141.5d | 0d |  | Dan Reineke | 40h | Jackson, NJ |
| 227 | 19.3.1.1.4.2 | Leverage / Integrate to CERDEC Comms IBCT | 5d | 2011-09-27 | 2011-10-03 | 226 | 141.5d | 0d |  | Thomas Smith | 40h | Jackson, NJ |
| 228 | 19.3.1.1.4.3 | Leverage / Integrate to CERDEC Comms HBCT | 5d | 2011-10-04 | 2011-10-10 | 227 | 141.5d | 0d |  | Thomas Smith | 40h | Jackson, NJ |
| 229 | 19.3.2 | Risk Management and Assumptions | 1d | 2011-09-13 | 2011-09-13 |  | 160.5d |  |  | Brian White | 8h | Jackson, NJ |
| 230 | 19.4 | **Iteration 1 Development Phase** | 17d | 2011-10-11 | 2011-10-31 | 219 | 141.5d |  |  |  | 520h | Jackson, NJ |
| 231 | 19.4.1 | **System View Development** | 17d | 2011-10-11 | 2011-10-31 |  | 141.5d |  |  |  | 520h | Jackson, NJ |
| 232 | 19.4.1.1 | **SV-1 Development** | 7d | 2011-10-11 | 2011-10-18 |  | 141.5d | 0d |  |  | 152h | Jackson, NJ |
| 233 | 19.4.1.1.1 | SBCT | 7d | 2011-10-11 | 2011-10-18 |  | 141.5d |  |  | Charles Crabb | 56h | Jackson, NJ |
| 234 | 19.4.1.1.2 | IBCT | 6d | 2011-10-11 | 2011-10-17 |  | 142.5d |  |  | Anthony Tignola | 48h | Jackson, NJ |
| 235 | 19.4.1.1.3 | HBCT | 6d | 2011-10-11 | 2011-10-17 |  | 142.5d | 1d |  | Matt Guardascione | 48h | Jackson, NJ |
| 236 | 19.4.1.2 | **SV-2 Development** | 5d | 2011-10-11 | 2011-10-15 | 228 | 382d |  |  |  | 120h | Jackson, NJ |
| 237 | 19.4.1.2.1 | SBCT | 5d | 2011-10-11 | 2011-10-15 |  | 387d |  |  | Jacqueline Lubinski | 40h | Jackson, NJ |
| 238 | 19.4.1.2.2 | IBCT | 5d | 2011-10-11 | 2011-10-15 |  | 387d |  |  | Matt Guardascione | 40h | Jackson, NJ |
| 239 | 19.4.1.2.3 | HBCT | 5d | 2011-10-11 | 2011-10-15 |  | 382d | 2d |  | Charles Crabb | 40h | Jackson, NJ |
| 240 | 19.4.1.3 | **Peer Reviews** | 1d | 2011-10-19 | 2011-10-19 | 232 | 384d |  |  |  | 32h | Jackson, NJ |
| 241 | 19.4.1.3.1 | SV-1 Peer Review Development | 1d | 2011-10-19 | 2011-10-19 |  | 384d |  | start no earlier than 2011-06-06 | Thomas Smith | 8h | Jackson, NJ |
| 242 | 19.4.1.3.2 | SV-2 Peer Review Development | 1d | 2011-10-19 | 2011-10-19 |  | 384d |  |  | Thomas Smith | 8h | Jackson, NJ |
| 243 | 19.4.1.3.3 | Conduct Peer Review SV-1 | 1d | 2011-10-19 | 2011-10-19 | 235 | 384d |  |  | Thomas Smith | 8h | Jackson, NJ |
| 244 | 19.4.1.3.4 | Conduct Peer Review SV-2 | 1d | 2011-10-19 | 2011-10-19 | 239 | 384d |  |  | Thomas Smith | 8h | Jackson, NJ |

| ID | WBS | Task | Duration | Start | Finish | Predecessors | Total slack | Free slack | Resources | Work | Location |
| --- | --- | --- | --- | --- | --- | --- | --- | --- | --- | --- | --- |
| 245 | 19.4.1.4 | **Testing- V & V** | 10d | 2011-10-19 | 2011-10-31 | 232 | 141.5d |  |  | 216h | Jackson, NJ |
| 246 | 19.4.1.4.1 | Test Plan Development | 5d | 2011-10-19 | 2011-10-25 | 228 | 375d | 0d | Thomas Smith | 40h | Jackson, NJ |
| 247 | 19.4.1.4.2 | Collect IETM Data | 5d | 2011-10-26 | 2011-10-31 | 246 | 375d |  | Thomas Smith | 40h | Jackson, NJ |
| 248 | 19.4.1.4.3 | Actionable and Status | 5d | 2011-10-26 | 2011-10-31 | 246 | 375d |  | Thomas Smith | 40h | Jackson, NJ |
| 249 | 19.4.1.4.4 | V & V of SV-1 | 5d | 2011-10-19 | 2011-10-25 | 235 | 380d |  | Thomas Smith | 40h | Jackson, NJ |
| 250 | 19.4.1.4.5 | V & V of SV-2 | 5d | 2011-10-19 | 2011-10-25 | 239 | 380d |  | Thomas Smith | 40h | Jackson, NJ |
| 251 | 19.4.1.4.6 | Test Report | 2d | 2011-10-19 | 2011-10-20 |  | 141.5d | 0d | Thomas Smith | 16h | Jackson, NJ |
| 252 | 19.5 | **Architecture Iteration two (2)** | 102d | 2011-10-21 | 2012-03-09 | 251 | 141.5d |  |  | 2389.62h | Jackson, NJ |
| 253 | 19.5.1 | **Design Phase** | 102d | 2011-10-21 | 2012-03-09 |  | 141.5d |  | Dan Reineke [25%]; Thomas Smith [50%]; Brian White [25%] | 2389.62h | Jackson, NJ |
| 254 | 19.5.1.1 | **Product Design** | 25d | 2011-10-21 | 2011-11-23 |  | 141.5d | 0d |  | 284.29h | Jackson, NJ |
| 255 | 19.5.1.1.1 | SV-3 | 6d | 2011-10-21 | 2011-10-28 |  | 145.5d | 0d | Dan Reineke | 48h | Jackson, NJ |
| 256 | 19.5.1.1.2 | SV-4 | 8d | 2011-10-29 | 2011-11-08 | 255 | 145.5d | 0d | Thomas Smith | 64h | Jackson, NJ |
| 257 | 19.5.1.1.3 | SV-5 | 7d | 2011-11-09 | 2011-11-17 | 256 | 145.5d |  | Thomas Smith | 56h | Jackson, NJ |
| 258 | 19.5.1.1.4 | Data Collection (Continued) | 25d | 2011-10-21 | 2011-11-23 |  | 141.5d |  | Charles Crabb [25%]; Jacqueline Lubinski [25%]; Matt Guardascione [25%]; Anthony Tignola [25%] | 84.29h | Jackson, NJ |
| 259 | 19.5.1.1.5 | Risk Management and Assumptions | 1d | 2011-10-21 | 2011-10-21 |  | 165.5d |  | Dan Reineke | 8h | Jackson, NJ |
| 260 | 19.5.1.1.6 | Design Document | 3d | 2011-10-21 | 2011-10-25 |  | 163.5d | 22d | Thomas Smith | 24h | Jackson, NJ |
| 261 | 19.5.1.2 | **Development Phase** | 77d | 2011-11-24 | 2012-03-09 | 254 | 141.5d |  | Dan Reineke | 1289.33h | Jackson, NJ |
| 262 | 19.5.1.2.1 | SV-3 Development | 20d | 2011-11-24 | 2011-12-21 | 260 | 141.5d | 0d | Anthony Tignola | 160h | Jackson, NJ |
| 263 | 19.5.1.2.2 | SV-4 Development | 25d | 2011-12-22 | 2012-01-25 | 262 | 141.5d | 0d | Charles Crabb | 200h | Jackson, NJ |
| 264 | 19.5.1.2.3 | SV-5 Development | 29d | 2012-01-26 | 2012-03-06 | 263 | 141.5d | 0d | Jacqueline Lubinski [50%]; Matt Guardascione [50%] | 129.33h | Jackson, NJ |
| 265 | 19.5.1.2.4 | **Peer Reviews** | 7d | 2011-11-24 | 2011-12-02 |  | 351d |  |  | 72h | Jackson, NJ |
| 266 | 19.5.1.2.4.1 | SV-3 Peer Review Development | 2d | 2011-11-24 | 2011-11-25 |  | 351d | 0d | Thomas Smith | 16h | Jackson, NJ |
| 267 | 19.5.1.2.4.2 | SV-4 Peer Review Development | 2d | 2011-11-28 | 2011-11-29 | 266 | 351d | 0d | Thomas Smith | 16h | Jackson, NJ |
| 268 | 19.5.1.2.4.3 | SV-5 Peer Review Development | 2d | 2011-11-30 | 2011-12-01 | 267 | 351d | 0d | Thomas Smith | 16h | Jackson, NJ |
| 269 | 19.5.1.2.4.4 | Conduct Peer Review SV-3 | 1d | 2011-11-28 | 2011-11-28 | 266 | 355d |  | Thomas Smith | 8h | Jackson, NJ |
| 270 | 19.5.1.2.4.5 | Conduct Peer Review SV-4 | 1d | 2011-11-30 | 2011-11-30 | 267 | 353d |  | Thomas Smith | 8h | Jackson, NJ |
| 271 | 19.5.1.2.4.6 | Conduct Peer Review SV-5 | 1d | 2011-12-02 | 2011-12-02 | 268 | 351d |  | Thomas Smith | 8h | Jackson, NJ |

| ID | WBS | Task | Duration | Start | Finish | Predecessors | Total slack | Free slack | Resources | Work | Location |
| --- | --- | --- | --- | --- | --- | --- | --- | --- | --- | --- | --- |
| 272 | 19.5.1.2.5 | **Testing- V & V** | 77d | 2011-11-24 | 2012-03-09 |  | 215.5d |  |  | 112h | Jackson, NJ |
| 273 | 19.5.1.2.5.1 | Test Plan Development | 5d | 2011-11-24 | 2011-11-30 |  | 353d |  | Thomas Smith | 40h | Jackson, NJ |
| 274 | 19.5.1.2.5.2 | V & V of SV-3 | 3d | 2011-12-22 | 2011-12-26 | 262 | 335d |  | Thomas Smith | 24h | Jackson, NJ |
| 275 | 19.5.1.2.5.3 | V & V of SV-4 | 3d | 2012-01-26 | 2012-01-30 | 263 | 310d |  | Thomas Smith | 24h | Jackson, NJ |
| 276 | 19.5.1.2.5.4 | V & V of SV-5 | 2d | 2012-03-07 | 2012-03-08 | 264 | 141.5d | 0d | Thomas Smith | 16h | Jackson, NJ |
| 277 | 19.5.1.2.5.5 | Test Report | 1d | 2012-03-09 | 2012-03-09 | 276 | 141.5d | 0d | Thomas Smith | 8h | Jackson, NJ |
| 278 | 19.6 | **Architecture Iteration Three (3)** | 139.5d | 2012-03-12 | 2012-09-20 | 277 | 141.5d |  |  | 1252h | Jackson, NJ |
| 279 | 19.6.1 | **Iteration Three Design Phase** | 12d | 2012-03-12 | 2012-03-27 |  | 141.5d | 0d | Dan Reineke [25%]; Thomas Smith [50%]; Brian White [25%] | 224h | Jackson, NJ |
| 280 | 19.6.1.1 | Product Design | 6d | 2012-03-12 | 2012-03-19 |  | 141.5d | 0d | Dan Reineke | 48h | Jackson, NJ |
| 281 | 19.6.1.2 | Data Collection (Continued) | 4d | 2012-03-20 | 2012-03-23 | 280 | 143.5d |  | Charles Crabb [25%]; Jacqueline Lubinski [25%]; Matt Guardascione [25%]; Anthony Tignola [25%] | 32h | Jackson, NJ |
| 282 | 19.6.1.3 | Risk Mgt / Assumptions | 1d | 2012-03-20 | 2012-03-20 | 280 | 141.5d | 0d | Brian White | 8h | Jackson, NJ |
| 283 | 19.6.1.4 | Design Document | 5d | 2012-03-21 | 2012-03-27 | 282 | 141.5d | 0d | Thomas Smith | 40h | Jackson, NJ |
| 284 | 19.6.2 | **Development Phase** | 92d | 2012-03-28 | 2012-08-01 | 279 | 141.5d |  |  | 784h | Jackson, NJ |
| 285 | 19.6.2.1 | **System View Development** | 90d | 2012-03-28 | 2012-07-30 |  | 141.5d |  |  | 720h | Jackson, NJ |
| 286 | 19.6.2.1.1 | SV-6 Development | 25d | 2012-03-28 | 2012-04-30 |  | 141.5d | 0d | Charles Crabb | 200h | Jackson, NJ |
| 287 | 19.6.2.1.2 | SV-10a Development | 30d | 2012-05-01 | 2012-06-11 | 286 | 141.5d | 0d | Anthony Tignola | 240h | Jackson, NJ |
| 288 | 19.6.2.1.3 | SV-10c Development | 35d | 2012-06-12 | 2012-07-30 | 287 | 141.5d | 0d | Charles Crabb [25%]; Anthony Tignola [25%]; Jacqueline Lubinski [25%]; Matt Guardascione [25%] | 280h | Jackson, NJ |
| 289 | 19.6.2.2 | **Peer Reviews** | 92d | 2012-03-28 | 2012-08-01 | 283 | 177d |  |  | 64h | Jackson, NJ |
| 290 | 19.6.2.2.1 | Peer Review Development | 2d | 2012-03-28 | 2012-03-29 | 283 | 267d |  | Thomas Smith | 16h | Jackson, NJ |
| 291 | 19.6.2.2.2 | SV-6 Development | 2d | 2012-05-01 | 2012-05-02 | 286 | 242d |  | Thomas Smith | 16h | Jackson, NJ |
| 292 | 19.6.2.2.3 | SV-10a Development | 2d | 2012-06-12 | 2012-06-13 | 287 | 212d |  | Thomas Smith | 16h | Jackson, NJ |
| 293 | 19.6.2.2.4 | SV-10c Development | 2d | 2012-07-31 | 2012-08-01 | 288 | 141.5d | 0d | Thomas Smith | 16h | Jackson, NJ |
| 294 | 19.6.3 | **Testing - V&V** | 27d | 2012-08-02 | 2012-09-07 |  | 141.5d |  |  | 176h | Jackson, NJ |
| 295 | 19.6.3.1 | Test Plan Development | 5d | 2012-08-02 | 2012-08-08 | 293 | 141.5d | 0d | Thomas Smith | 40h | Jackson, NJ |
| 296 | 19.6.3.2 | SV-6 Development | 5d | 2012-08-09 | 2012-08-15 | 295 | 141.5d | 0d |  |  | Jackson, NJ |
| 297 | 19.6.3.3 | SV-10a Development | 5d | 2012-08-16 | 2012-08-22 | 296 | 141.5d | 0d | Thomas Smith | 40h | Jackson, NJ |
| 298 | 19.6.3.4 | SV-10c Development | 5d | 2012-08-23 | 2012-08-29 | 297 | 141.5d | 0d | Thomas Smith | 40h | Jackson, NJ |
| 299 | 19.6.3.5 | Test Report | 7d | 2012-08-30 | 2012-09-07 | 298 | 141.5d | 0d | Thomas Smith | 56h | Jackson, NJ |

| ID | WBS | Task | Duration | Start | Finish | Predecessors | Total slack | Free slack | Constraint | Resources | Work | Location |
| --- | --- | --- | --- | --- | --- | --- | --- | --- | --- | --- | --- | --- |
| 300 | 19.6.4 | **Packaging** | 8.5d | 2012-09-10 | 2012-09-20 | 299 | 141.5d |  |  |  | 68h | Jackson, NJ |
| 301 | 19.6.4.1 | Transition products to word documents | 5d | 2012-09-10 | 2012-09-14 |  | 141.5d | 0d |  | Linda Martino | 40h | Jackson, NJ |
| 302 | 19.6.4.2 | Format deliverable document | 2d | 2012-09-17 | 2012-09-18 | 301 | 141.5d | 0d |  | Linda Martino | 16h | Jackson, NJ |
| 303 | 19.6.4.3 | Record document numbers in internal registry | 0.5d | 2012-09-19 | 2012-09-19 | 302 | 141.5d | 0d |  | Linda Martino | 4h | Jackson, NJ |
| 304 | 19.6.4.4 | Package deliverables | 1d | 2012-09-19 | 2012-09-20 | 303 | 141.5d |  |  | Linda Martino | 8h | Jackson, NJ |
| 305 | 20 | **Cataloging, Taxonomy, and Ontology** | 235d | 2011-08-01 | 2012-06-19 |  | 208d |  |  |  |  | APG |
| 306 | 20.1 | **Define CECOM CBM+ Data Cataloging requirements for LOGSA** | 235d | 2011-08-01 | 2012-06-19 |  | 208d |  |  |  |  | Jackson, NJ |
| 307 | 20.1.1 | **Coordinate and Collaborate with LOGSA** | 51d | 2011-09-12 | 2011-11-17 |  | 362d |  |  |  |  | Jackson, NJ |
| 308 | 20.1.1.1 | Define data flows between CECOM and LOGSA (Tactical to Enterprise) | 9d | 2011-09-12 | 2011-09-22 |  | 404d |  | finish no earlier than 2011-09-22 |  |  | Jackson, NJ |
| 309 | 20.1.1.2 | Define System Interfaces between CECOM and LOGSA (Tactical to Enterprise) | 40d | 2011-09-27 | 2011-11-17 |  | 362d |  | finish no earlier than 2011-11-17 |  |  | Jackson, NJ |
| 310 | 20.1.1.3 | Research ILAP Server locations and capacity | 5d | 2011-09-23 | 2011-09-29 |  | 399d |  | finish no earlier than 2011-09-29 |  |  | Jackson, NJ |
| 311 | 20.1.2 | **Develop Operational Concept Document** | 10d | 2011-09-23 | 2011-10-06 |  | 394d |  |  |  |  | Jackson, NJ |
| 312 | 20.1.2.1 | Diagram Data Flows and System Interfaces | 10d | 2011-09-23 | 2011-10-06 |  | 394d |  | start no earlier than 2011-09-23 |  |  | Jackson, NJ |
| 313 | 20.1.2.2 | Review / Modify Diagram with LOGSA and CECOM CBM+ Team | 5d | 2011-09-23 | 2011-09-29 |  | 399d |  | start no earlier than 2011-09-23 |  |  | Jackson, NJ |
| 314 | 20.1.3 | **ID Standards** | 35d | 2011-09-30 | 2011-11-15 |  | 364d |  |  |  |  | Jackson, NJ |
| 315 | 20.1.3.1 | MIMOSA OSA CBM | 35d | 2011-09-30 | 2011-11-15 |  | 364d |  | start no earlier than 2011-09-30 |  |  | Jackson, NJ |
| 316 | 20.1.3.2 | CLOE SV-11 (Physical Schema) | 5d | 2011-09-30 | 2011-10-06 |  | 394d |  | start no earlier than 2011-09-30 |  |  | Jackson, NJ |
| 317 | 20.1.3.3 | ABCD | 5d | 2011-10-07 | 2011-10-13 |  | 389d |  | start no earlier than 2011-10-07 |  |  | Jackson, NJ |
| 318 | 20.1.4 | **Collect TQG Sensor Data Specifications** | 5d | 2011-10-21 | 2011-10-27 |  | 378d |  |  |  |  | Jackson, NJ |
| 319 | 20.1.4.1 | Coordinate with IMPACT Technologies | 5d | 2011-10-21 | 2011-10-27 |  | 378d |  | start no earlier than 2011-10-21 |  |  | Jackson, NJ |
| 320 | 20.1.4.2 | Coordinate with AMSAA | 5d | 2011-10-21 | 2011-10-27 |  | 378d |  | start no earlier than 2011-10-21 |  |  | Jackson, NJ |
| 321 | 20.1.5 | **Develop CECOM-LOGSA Data Requirements Document** | 235d | 2011-08-01 | 2012-06-19 |  | 208d |  |  |  |  | Jackson, NJ |
| 322 | 20.1.5.1 | Document sensor data in CCBM DW Requirements Document | 5d | 2011-11-04 | 2011-11-10 |  | 367d |  | start no earlier than 2011-11-04 |  |  | Jackson, NJ |
| 323 | 20.1.5.2 | Document Stakeholder Requirements | 5d | 2011-11-11 | 2011-11-17 |  | 362d |  | start no earlier than 2011-11-11 |  |  | Jackson, NJ |
| 324 | 20.1.5.3 | Document Functional Requirements | 197d | 2011-08-23 | 2012-05-18 |  | 230d |  | start no earlier than 2011-08-23 |  |  | Jackson, NJ |
| 325 | 20.1.5.4 | Document System Requirements | 219d | 2011-08-23 | 2012-06-19 |  | 208d |  | start no earlier than 2011-08-23 |  |  | Jackson, NJ |
| 326 | 20.1.5.5 | Document Data Requirements | 5d | 2011-11-18 | 2011-11-24 |  | 357d |  | start no earlier than 2011-11-18 |  |  | Jackson, NJ |
| 327 | 20.1.5.6 | Document Operational Requirements | 5d | 2011-11-18 | 2011-11-24 |  | 357d |  | start no earlier than 2011-11-18 |  |  | Jackson, NJ |
| 328 | 20.1.5.7 | Identify Business Rules | 40d | 2011-08-01 | 2011-09-23 |  | 403d |  | start no earlier than 2011-08-01 |  |  | Jackson, NJ |

| ID | WBS | Task | Duration | Start | Finish | Total slack | Constraint | Location |
| --- | --- | --- | --- | --- | --- | --- | --- | --- |
| 329 | 21 | **Receive and Store Data / Cataloging, Taxonomy, and Ontology** | 455d | 2011-07-14 | 2013-04-05 | 0d |  | APG |
| 330 | 21.1 | Future Force Warrior Architecture Gap Assessment | 66d | 2011-08-23 | 2011-11-18 | 361d | finish no earlier than 2011-11-18 | Jackson, NJ |
| 331 | 21.2 | **Develop the CECOM LRC CBM+ Database** | 226d | 2011-08-23 | 2012-06-28 | 201d |  | Jackson, NJ |
| 332 | 21.2.1 | **Requirements Definition** | 20d | 2011-08-23 | 2011-09-19 | 407d |  | Jackson, NJ |
| 333 | 21.2.1.1 | Leverage the LOGSA CCBMDW Requirements Document | 20d | 2011-08-23 | 2011-09-19 | 407d | start no earlier than 2011-08-23 | Jackson, NJ |
| 334 | 21.2.2 | **Design CECOM LRC CBM+ Database** | 47d | 2011-08-30 | 2011-10-31 | 375d |  | Jackson, NJ |
| 335 | 21.2.2.1 | Analyze data structure | 1d | 2011-08-30 | 2011-08-30 | 421d | start no earlier than 2011-08-30 | Jackson, NJ |
| 336 | 21.2.2.2 | Determine most efficient database schema | 10d | 2011-08-31 | 2011-09-13 | 411d | start no earlier than 2011-08-31 | Jackson, NJ |
| 337 | 21.2.2.3 | Document database schema | 10d | 2011-09-14 | 2011-09-27 | 401d | start no earlier than 2011-09-14 | Jackson, NJ |
| 338 | 21.2.2.4 | Ensure proper database relationships | 26d | 2011-09-28 | 2011-10-31 | 375d | start no earlier than 2011-09-28 | Jackson, NJ |
| 339 | 21.2.3 | **Develop Database** | 197d | 2011-09-29 | 2012-06-26 | 203d |  | Jackson, NJ |
| 340 | 21.2.3.1 | Install database server software | 25d | 2011-09-29 | 2011-10-31 | 375d | start no earlier than 2011-09-29 | Jackson, NJ |
| 341 | 21.2.3.2 | Develop database structure (tables, fields, columns, meta data) | 170d | 2011-11-03 | 2012-06-26 | 203d | start no earlier than 2011-11-03 | Jackson, NJ |
| 342 | 21.2.3.3 | Perform Q/A testing on database structure | 2d | 2011-11-03 | 2011-11-04 | 371d | start no earlier than 2011-11-03 | Jackson, NJ |
| 343 | 21.2.4 | **Populate the Database** | 106d | 2011-11-28 | 2012-04-21 | 250d |  | Jackson, NJ |
| 344 | 21.2.4.1 | Coordinate with ARL Penn State to receive software code to populate database | 15d | 2011-11-28 | 2011-12-16 | 341d | start no earlier than 2011-11-28 | Jackson, NJ |
| 345 | 21.2.4.2 | Populate database with data from EOA (Afghanistan, Sierra, Fort Campbell) | 91d | 2011-12-19 | 2012-04-21 | 250d | start no earlier than 2011-12-19 | Jackson, NJ |
| 346 | 21.2.5 | **Perform Analysis** | 226d | 2011-08-23 | 2012-06-28 | 201d |  | Jackson, NJ |
| 347 | 21.2.5.1 | Install SQL Database Miner | 120d | 2012-01-12 | 2012-06-26 | 203d | start no earlier than 2012-01-12 | Jackson, NJ |
| 348 | 21.2.5.2 | Write queries to mine data within SQL Data Miner | 219d | 2011-08-23 | 2012-06-19 | 208d | start no earlier than 2011-08-23 | Jackson, NJ |
| 349 | 21.2.5.3 | Produce trend and statistical analysis | 8d | 2011-08-23 | 2011-09-01 | 419d | start no earlier than 2011-08-23 | Jackson, NJ |
| 350 | 21.2.5.4 | Initial Produce fuel consumption analysis | 135d | 2011-08-23 | 2012-02-23 | 292d | start no earlier than 2011-08-23 | Jackson, NJ |
| 351 | 21.2.5.5 | Initial Produce analysis reports and provide feedback to value stream | 135d | 2011-08-23 | 2012-02-23 | 292d | start no earlier than 2011-08-23 | Jackson, NJ |
| 352 | 21.2.5.6 | Continue to receive, populate and analyze data | 91d | 2012-02-24 | 2012-06-28 | 201d | start no earlier than 2012-02-24 | Jackson, NJ |

| ID | WBS | Task | Duration | Start | Finish | Predecessors | Total slack | Free slack | Constraint | Location | EOA/CBM IIIb |
| --- | --- | --- | --- | --- | --- | --- | --- | --- | --- | --- | --- |
| 353 | 8 | **CIMS integration - beta (Impact is platform and maintainer)** | 455d | 2011-07-14 | 2013-04-05 |  | 0d |  |  | Rochester |  |
| 354 | 8.1 | **Coordinate hardware and software required with stakeholders** | 154d | 2011-07-14 | 2012-02-10 |  | 1d |  |  | Rochester |  |
| 355 | 8.1.1 | LIA-Ground Digital Logbook and CIMS software | 10d | 2012-01-30 | 2012-02-10 |  | 1d | 0d | start no earlier than 2012-01-30 | Rochester |  |
| 356 | 8.1.2 | PD-TMDE- MSD hardware | 10d | 2011-07-14 | 2011-07-27 |  | 145d | 144d |  | Rochester |  |
| 357 | 8.2 | **Establish Beta test infrastructure on and at platform** | 80d | 2012-02-13 | 2012-05-31 |  | 1d |  |  | Rochester |  |
| 358 | 8.2.1 | Coordinate CIMS software install on and at platform | 60d | 2012-02-13 | 2012-05-03 | 355, 356 | 1d | 0d |  | Rochester |  |
| 359 | 8.2.2 | Establish VPN connections | 20d | 2012-05-04 | 2012-05-31 | 358 | 1d |  |  | Rochester |  |
| 360 | 8.3 | **TQG CBM+ data transmission** | 14d | 2012-06-04 | 2012-06-21 |  | 0d |  |  | Rochester |  |
| 361 | 8.3.1 | Communicate data from platform (producer) to off platform consumers | 14d | 2012-06-04 | 2012-06-21 | 358, 359 | 0d |  | start no earlier than 2012-06-04 | Rochester |  |
| 362 | 8.4 | **CIMS evaluation** | 220d | 2012-06-04 | 2013-04-05 |  | 0d |  |  | Rochester |  |
| 363 | 8.4.1 | ID configuration issues on and at platform | 220d | 2012-06-04 | 2013-04-05 | 361SS | 0d |  | start no earlier than 2011-08-23 | Rochester |  |
| 364 | 8.4.2 | Determine functionality of CIMS interfacing capabilities on and at platform | 20d | 2012-06-04 | 2012-06-29 | 361SS | 200d |  |  | Rochester |  |
| 365 | 21.4 | **CIMS Operational Beta Test** | 243d | 2011-08-01 | 2012-06-29 |  | 200d |  |  | Jackson, NJ | IIIb |
| 366 | 21.4.1 | **Coordinate with LIA on Operational Concept** | 8d | 2011-08-23 | 2011-09-01 |  | 419d |  |  | Jackson, NJ | IIIb |
| 367 | 21.4.1.1 | Develop CIMS Operational Concept Diagram | 8d | 2011-08-23 | 2011-09-01 |  | 419d |  | start no earlier than 2011-08-23 | Jackson, NJ | IIIb |
| 368 | 21.4.1.2 | Review concept diagram with LIA | 8d | 2011-08-23 | 2011-09-01 |  | 419d |  | start no earlier than 2011-08-23 | Jackson, NJ | IIIb |
| 369 | 21.4.1.3 | Develop MOA | 8d | 2011-08-23 | 2011-09-01 |  | 419d |  | start no earlier than 2011-08-23 | Jackson, NJ | IIIb |
| 370 | 21.4.2 | **Define CIMS roles in beta test** | 57d | 2011-08-11 | 2011-10-27 |  | 378d |  |  | Jackson, NJ | IIIb |
| 371 | 21.4.2.1 | Embedded on system | 10d | 2011-08-11 | 2011-08-24 |  | 425d |  | start no earlier than 2011-08-11 | Jackson, NJ | IIIb |
| 372 | 21.4.2.2 | At system | 10d | 2011-08-29 | 2011-09-09 |  | 413d |  | start no earlier than 2011-08-29 | Jackson, NJ | IIIb |
| 373 | 21.4.2.3 | Storage | 10d | 2011-08-29 | 2011-09-09 |  | 413d |  | start no earlier than 2011-08-29 | Jackson, NJ | IIIb |
| 374 | 21.4.2.4 | Enterprise | 40d | 2011-09-05 | 2011-10-27 |  | 378d |  | start no earlier than 2011-09-05 | Jackson, NJ | IIIb |
| 375 | 21.4.3 | **Coordinate hardware and software required with stakeholders** | 30d | 2011-09-08 | 2011-10-18 |  | 385d |  |  | Jackson, NJ | IIIb |
| 376 | 21.4.3.1 | LIA-Ground Digital Logbook and CIMS software | 10d | 2011-09-08 | 2011-09-21 |  | 405d |  | start no earlier than 2011-09-08 | Jackson, NJ | IIIb |
| 377 | 21.4.3.2 | PD-TMDE- MSD hardware | 10d | 2011-09-22 | 2011-10-05 |  | 395d |  | start no earlier than 2011-09-22 | Jackson, NJ | IIIb |
| 378 | 21.4.3.3 | ARL Penn State- Populating database software | 10d | 2011-10-06 | 2011-10-18 |  | 385d |  | start no earlier than 2011-10-06 | Jackson, NJ | IIIb |

| ID | WBS | Task | Type | Duration | Start | Finish | Total slack | Constraint | Location | EOA/CBM IIIb |
| --- | --- | --- | --- | --- | --- | --- | --- | --- | --- | --- |
| 379 | 21.4.4 | **Establish Beta test infrastructure** |  | 78d | 2011-10-27 | 2012-02-10 | 301d |  | Jackson, NJ | IIIb |
| 380 | 21.4.4.1 | Install CIMS software at various nodes |  | 20d | 2011-10-27 | 2011-11-22 | 359d | start no earlier than 2011-10-27 | Jackson, NJ | IIIb |
| 381 | 21.4.4.2 | Establish VPN connections |  | 45d | 2011-11-29 | 2012-01-30 | 310d | start no earlier than 2011-11-29 | Jackson, NJ | IIIb |
| 382 | 21.4.4.3 | Set up battalion server node |  | 15d | 2011-11-29 | 2011-12-19 | 340d | start no earlier than 2011-11-29 | Jackson, NJ | IIIb |
| 383 | 21.4.4.4 | Set up enterprise node |  | 30d | 2012-01-02 | 2012-02-10 | 301d | start no earlier than 2012-01-02 | Jackson, NJ | IIIb |
| 384 | 21.4.5 | **TQG CBM+ data transmission** |  | 30d | 2011-08-23 | 2011-10-03 | 397d |  | Jackson, NJ | IIIb |
| 385 | 21.4.5.1 | Communicate data from platform (producer) to consumers (Maintainer, Storage, Enterprise) |  | 30d | 2011-08-23 | 2011-10-03 | 397d | start no earlier than 2011-08-23 | Jackson, NJ | IIIb |
| 386 | 21.4.6 | **CIMS evaluation** |  | 227d | 2011-08-23 | 2012-06-29 | 200d |  | Jackson, NJ | IIIb |
| 387 | 21.4.6.1 | ID configuration issues at various roles |  | 220d | 2011-08-23 | 2012-06-20 | 207d | start no earlier than 2011-08-23 | Jackson, NJ | IIIb |
| 388 | 21.4.6.2 | Determine functionality of CIMS interfacing capabilities at various nodes |  | 20d | 2012-06-04 | 2012-06-29 | 200d | start no earlier than 2012-06-04 | Jackson, NJ | IIIb |
| 389 | 21.4.7 | **EOA Data Transmission** |  | 243d | 2011-08-01 | 2012-06-29 | 200d |  | Jackson, NJ |  |
| 390 | 21.4.7.1 | Assist in establishing CBM+ data transmission network |  | 30d | 2011-08-01 | 2011-09-09 | 413d | start no earlier than 2011-08-01 | Jackson, NJ |  |
| 391 | 21.4.7.2 | Set up network monitoring equipment |  | 30d | 2011-08-01 | 2011-09-09 | 413d | start no earlier than 2011-08-01 | Jackson, NJ |  |
| 392 | 21.4.7.3 | Monitor network |  | 220d | 2011-08-01 | 2012-05-29 | 223d | start no earlier than 2011-08-01 | Jackson, NJ |  |
| 393 | 21.4.7.4 | Develop network analysis report |  | 20d | 2012-06-04 | 2012-06-29 | 200d | start no earlier than 2012-06-04 | Jackson, NJ |  |
| 394 | 22 | **Network Analysis** |  | 168d? | 2011-10-14 | 2012-05-31 | 221d |  | All | IIIb |
| 395 | 22.1 | **Network Analysis SIAD, Ft. Campbell, AMCOM, TACOM and AMSAA** |  | 121d? | 2011-12-16 | 2012-05-31 | 221d |  | APG | IIIb |
| 396 | 22.1.1 | First Draft |  | 1d? | 2011-12-16 | 2011-12-16 | 341d | start no earlier than 2011-12-16 | APG |  |
| 397 | 22.1.2 | Second Draft |  | 1d? | 2012-03-16 | 2012-03-16 | 276d | start no earlier than 2012-03-16 | APG |  |
| 398 | 22.1.3 | Final Draft |  | 1d? | 2012-05-31 | 2012-05-31 | 221d | start no earlier than 2012-05-31 | APG |  |
| 399 | 22.2 | **Site Survey** |  | 57d | 2011-10-14 | 2011-12-30 | 332d |  | APG | IIIb |
| 400 | 22.2.1 | Initial Draft | milestone | 0d | 2011-10-14 | 2011-10-14 | 389d | start no earlier than 2011-10-14 | APG |  |
| 401 | 22.2.2 | Final Draft | milestone | 0d | 2011-12-30 | 2011-12-30 | 332d | start no earlier than 2011-12-30 | APG |  |
| 402 | 23 | **BCA / CBA** |  | 207d | 2011-08-19 | 2012-05-31 | 222d |  | APG |  |
| 403 | 23.1 | **Family of Generator CBA** |  | 189d | 2011-08-30 | 2012-05-15 | 233d |  | APG |  |
| 404 | 23.1.1 | **TQG 10kw CBA** |  | 189d | 2011-08-30 | 2012-05-15 | 233d |  | APG |  |
| 405 | 23.1.1.1 | Initial Draft Due |  | 55d | 2012-03-01 | 2012-05-15 | 233d | finish no earlier than 2012-05-15 | APG |  |
| 406 | 23.1.1.2 | Cost Analysis |  | 189d | 2011-08-30 | 2012-05-15 | 233d | start no earlier than 2011-08-30 | APG |  |
| 407 | 23.1.1.3 | Benefits Analysis |  | 189d | 2011-08-30 | 2012-05-15 | 233d | start no earlier than 2011-08-30 | APG |  |
| 408 | 23.1.1.4 | Risk Analysis |  | 189d | 2011-08-30 | 2012-05-15 | 233d | start no earlier than 2011-08-30 | APG |  |

Notes:
- 394: Depends on if the data is moved via CAISI and VSAT vs. sneaker net. cecom sec cannot do this.
- 395: Depends on if the data is moved via CAISI and VSAT vs. sneaker net
- 399: Depends on if the data is moved via CAISI and VSAT vs. sneaker net

| ID | WBS | Task | Type | Duration | Start | Finish | Total slack | Constraint | Location |
| --- | --- | --- | --- | --- | --- | --- | --- | --- | --- |
| 409 | 23.1.2 | **TQG 15kw CBA** |  | 189d | 2011-08-30 | 2012-05-15 | 233d |  | APG |
| 410 | 23.1.2.1 | Initial Draft Due | milestone | 0d | 2012-03-01 | 2012-03-01 | 288d | start no earlier than 2012-03-01 | APG |
| 411 | 23.1.2.2 | Cost Analysis |  | 189d | 2011-08-30 | 2012-05-15 | 233d | start no earlier than 2011-08-30 | APG |
| 412 | 23.1.2.3 | Benefits Analysis |  | 189d | 2011-08-30 | 2012-05-15 | 233d | start no earlier than 2011-08-30 | APG |
| 413 | 23.1.2.4 | Risk Analysis |  | 189d | 2011-08-30 | 2012-05-15 | 233d | start no earlier than 2011-08-30 | APG |
| 414 | 23.1.3 | **TQG 30kw CBA** |  | 189d | 2011-08-30 | 2012-05-15 | 233d |  | APG |
| 415 | 23.1.3.1 | Draft with only SIAD Data |  | 36d | 2011-12-09 | 2012-01-27 | 311d | finish no earlier than 2012-01-27 | APG |
| 416 | 23.1.3.2 | Initial Draft Due | milestone | 0d | 2012-03-01 | 2012-03-01 | 287d | finish no earlier than 2012-03-01 | APG |
| 417 | 23.1.3.3 | Cost Analysis |  | 189d | 2011-08-30 | 2012-05-15 | 233d | start no earlier than 2011-08-30 | APG |
| 418 | 23.1.3.4 | Benefits Analysis |  | 189d | 2011-08-30 | 2012-05-15 | 233d | start no earlier than 2011-08-30 | APG |
| 419 | 23.1.3.5 | Risk Analysis |  | 189d | 2011-08-30 | 2012-05-15 | 233d | start no earlier than 2011-08-30 | APG |
| 420 | 23.1.4 | **TQG 60kw CBA** |  | 189d | 2011-08-30 | 2012-05-15 | 233d |  | APG |
| 421 | 23.1.4.1 | Initial Draft Due | milestone | 0d | 2012-03-01 | 2012-03-01 | 288d | start no earlier than 2012-03-01 | APG |
| 422 | 23.1.4.2 | Cost Analysis |  | 189d | 2011-08-30 | 2012-05-15 | 233d | start no earlier than 2011-08-30 | APG |
| 423 | 23.1.4.3 | Benefits Analysis |  | 189d | 2011-08-30 | 2012-05-15 | 233d | start no earlier than 2011-08-30 | APG |
| 424 | 23.1.4.4 | Risk Analysis |  | 189d | 2011-08-30 | 2012-05-15 | 233d | start no earlier than 2011-08-30 | APG |
| 425 | 23.2 | CBM+ BCA for Family of Generators |  | 196d | 2011-08-19 | 2012-05-15 | 233d | finish no earlier than 2012-05-15 | APG |
| 426 | 23.3 | Submit to CECOM CBM+ PMO | milestone | 0d | 2012-05-01 | 2012-05-01 | 244d | start no earlier than 2012-05-01 | APG |
| 427 | 23.4 | Submit BCA/CBA to DASA CE for Approval | milestone | 0d | 2012-05-31 | 2012-05-31 | 222d | start no earlier than 2012-05-31 | APG |
| 428 | 24 | **Value Stream Analysis** |  | 86d | 2012-01-02 | 2012-04-27 | 245d |  | APG |
| 429 | 24.1 | Initial Draft Due | milestone | 0d | 2012-03-01 | 2012-03-01 | 288d | start no earlier than 2012-03-01 | APG |
| 430 | 24.2 | Value Stream Analysis Second Draft | milestone | 0d | 2012-03-30 | 2012-03-30 | 267d | start no earlier than 2012-03-30 | APG |
| 431 | 24.3 | Value Stream Analysis Final |  | 86d | 2012-01-02 | 2012-04-27 | 245d | start no earlier than 2012-01-02 | APG |
| 432 | 25 | LOGSA Data Extraction |  | 241d | 2011-08-23 | 2012-07-19 | 186d | start no earlier than 2011-08-23 | Huntsville |

| ID | WBS | Task | Duration | Start | Finish | Predecessors | Total slack | Free slack | Constraint | Location |
| --- | --- | --- | --- | --- | --- | --- | --- | --- | --- | --- |
| 433 | 1 | **Determine DSC/Data Collection requirements for generators - family of DSCs** | 31d | 2011-08-01 | 2011-09-12 |  | 383d |  |  | Rochester |
| 434 | 1.1 | Determine DSC/Data Collection requirements | 15d | 2011-08-01 | 2011-08-19 |  | 383d | 0d | start no earlier than 2011-08-01 | Rochester |
| 435 | 1.2 | DSC trade study | 15d | 2011-08-22 | 2011-09-09 | 434 | 383d | 0d |  | Rochester |
| 436 | 1.3 | Examine Packaging DSC to smaller form factor | 15d | 2011-08-23 | 2011-09-12 |  | 402d | 0d | start no earlier than 2011-08-23 | Rochester |
| 437 | 2 | **Deployment Package** | 164d? | 2011-07-14 | 2012-02-24 |  | 291d |  |  | Rochester |
| 438 | 2.1 | **Develop initial CBM+ Kit Specification Document (MEP 805B)** | 53d | 2011-07-14 | 2011-09-26 |  | 402d |  |  | Rochester |
| 439 | 2.1.1 | Wiring Harnesses | 10d | 2011-07-14 | 2011-07-27 |  | 440d | 38d |  | Rochester |
| 440 | 2.1.2 | DSC Specs | 5d | 2011-09-12 | 2011-09-16 | 435 | 383d | 0d |  | Rochester |
| 441 | 2.1.3 | DSC Enclosure | 5d | 2011-09-13 | 2011-09-19 | 436 | 402d | 0d |  | Rochester |
| 442 | 2.1.4 | Sensors | 10d | 2011-07-14 | 2011-07-27 |  | 430d | 0d |  | Rochester |
| 443 | 2.1.5 | Mounting Hardware | 10d | 2011-07-28 | 2011-08-10 | 442 | 430d | 28d |  | Rochester |
| 444 | 2.1.6 | Installation Documentation | 5d | 2011-09-20 | 2011-09-26 | 439, 440, 441, 442, 443 | 402d |  |  | Rochester |
| 445 | 2.2 | **Finalize TQG NI-based software** | 72d | 2011-07-14 | 2011-10-20 |  | 383d |  |  | Rochester |
| 446 | 2.2.1 | Analyze and integrate RS485 data into algorithms | 15d | 2011-07-14 | 2011-08-03 |  | 440d |  |  | Rochester |
| 447 | 2.2.2 | Implement appropriate sampling rates | 5d | 2011-09-19 | 2011-09-23 | 440 | 383d | 0d |  | Rochester |
| 448 | 2.2.3 | Data acquisition & storage | 5d | 2011-09-26 | 2011-09-30 | 447 | 383d | 0d |  | Rochester |
| 449 | 2.2.4 | Algorithm tuning, enhancement & implementation | 5d | 2011-10-03 | 2011-10-07 | 448 | 383d | 0d |  | Rochester |
| 450 | 2.2.5 | Interface to OSA-CBM, ABCD, other | 5d | 2011-10-10 | 2011-10-14 | 449, 453SS+5d | 383d | 0d |  | Rochester |
| 451 | 2.2.6 | Optimize data transfer to off-platform device | 5d | 2011-10-15 | 2011-10-20 | 450 | 383d |  |  | Rochester |
| 452 | 2.2.7 | Add capability to push updates to NI DSC | 5d | 2011-07-14 | 2011-07-20 |  | 450d |  |  | Rochester |
| 453 | 2.3 | **Revise OSA-CBM services** | 20d | 2011-07-14 | 2011-08-10 |  | 435d | 57d |  | Rochester |
| 454 | 2.3.1 | Implement OSA-CBM on NI DSC | 10d | 2011-07-14 | 2011-07-27 |  | 435d | 0d |  | Rochester |
| 455 | 2.3.2 | Synchronous and asynchonous OSA-CBM | 10d | 2011-07-28 | 2011-08-10 | 454 | 435d | 0d |  | Rochester |
| 456 | 2.4 | **Off platform software & ABCD packaging** | 164d? | 2011-07-14 | 2012-02-24 |  | 291d |  |  | Rochester |
| 457 | 2.4.1 | Off platform display (actionable information) | 10d | 2011-07-14 | 2011-07-27 |  | 445d |  |  | Rochester |
| 458 | 2.4.2 | Bulk data transmission (ABCD) | 10d | 2011-07-14 | 2011-07-27 |  | 445d |  |  | Rochester |
| 459 | 2.4.3 | OSA-CBM messaging | 5d | 2011-08-04 | 2011-08-10 | 455SS+5d | 435d |  |  | Rochester |

| ID | WBS | Task | Type | Duration | Start | Finish | Predecessors | Total slack | Free slack | Constraint | Location |
| --- | --- | --- | --- | --- | --- | --- | --- | --- | --- | --- | --- |
| 460 | 3 | **Lab Testing** |  | 164d? | 2011-07-14 | 2012-02-24 |  | 291d |  |  | Rochester |
| 461 | 3.1 | **Update algorithms / models (diagnostic & prognostic) for 805B** |  | 35d | 2011-08-29 | 2011-10-14 |  | 388d |  |  | Rochester |
| 462 | 3.1.1 | Equipment testing |  | 20d | 2011-08-29 | 2011-09-23 |  | 388d | 0d | start no earlier than 2011-08-29 | Rochester |
| 463 | 3.1.2 | Algorithm customization & testing |  | 20d | 2011-09-05 | 2011-09-30 | 462SS+5d | 388d | 0d |  | Rochester |
| 464 | 3.1.3 | Transition to NI platform |  | 10d | 2011-10-03 | 2011-10-14 | 463 | 388d |  |  | Rochester |
| 465 | 3.2 | **Incorporate fuel sensing (805B)** |  | 40d | 2011-08-29 | 2011-10-20 |  | 383d |  |  | Rochester |
| 466 | 3.2.1 | Run TQG as per AMSAA test plan |  | 20d | 2011-08-29 | 2011-09-23 |  | 383d | 0d | start no earlier than 2011-08-29 | Rochester |
| 467 | 3.2.2 | Validate fuel flow sensor capabilities |  | 15d | 2011-09-05 | 2011-09-23 | 466SS+5d | 383d | 0d |  | Rochester |
| 468 | 3.2.3 | Fuel consumption algorithm development |  | 10d | 2011-09-26 | 2011-10-07 | 466, 467 | 383d | 0d |  | Rochester |
| 469 | 3.2.4 | Transition to NI platform |  | 10d | 2011-10-10 | 2011-10-20 | 468 | 383d |  |  | Rochester |
| 470 | 3.3 | **Expansion to other TQG platforms (10, 15, 60, 100 kW)** |  | 164d? | 2011-07-14 | 2012-02-24 |  | 291d |  |  | Rochester |
| 471 | 3.3.1 | Receive Tech data package | milestone | 0d | 2011-08-31 | 2011-08-31 |  | 291d | 0d | start no earlier than 2011-08-31 | Rochester |
| 472 | 3.3.2 | Receive GFE (10kw) | milestone | 0d | 2011-07-14 | 2011-07-14 |  | 325d | 34d |  | Rochester |
| 473 | 3.3.3 | **Technical assesment** |  | 54d? | 2011-07-14 | 2011-09-27 |  | 325d |  |  | Rochester |
| 474 | 3.3.3.1 | Functional Decomposition |  | 2d | 2011-08-31 | 2011-09-01 | 471, 472 | 291d | 0d |  | Rochester |
| 475 | 3.3.3.2 | FMECA & Pareto Analysis |  | 3d | 2011-09-02 | 2011-09-06 | 474 | 291d | 0d |  | Rochester |
| 476 | 3.3.3.3 | Create Fault Propagation Model |  | 2d | 2011-09-07 | 2011-09-08 | 475 | 291d | 0d |  | Rochester |
| 477 | 3.3.3.4 | Generate Enhanced FMECA |  | 3d | 2011-09-09 | 2011-09-13 | 476 | 291d | 0d |  | Rochester |
| 478 | 3.3.3.5 | Perform Initial Coverage Analysis |  | 5d | 2011-09-14 | 2011-09-20 | 477 | 291d | 0d |  | Rochester |
| 479 | 3.3.3.6 | Finalize Sensor Configuration |  | 5d | 2011-09-21 | 2011-09-27 | 478 | 291d | 0d |  | Rochester |
| 480 | 27.4.4.3.3.7 | RCM Analysis |  | 1d? | 2011-07-14 | 2011-07-14 |  | 454d |  |  |  |
| 481 | 3.3.4 | **Application of Technology Prototype Integration Testing** |  | 110d | 2011-09-28 | 2012-02-24 |  | 291d |  |  | Rochester |
| 482 | 3.3.4.1 | Procure Sensors & Other Hardware |  | 45d | 2011-09-28 | 2011-11-25 | 479 | 291d | 0d |  | Rochester |
| 483 | 3.3.4.2 | Sensor Installation |  | 15d | 2011-11-28 | 2011-12-16 | 482 | 296d | 5d |  | Rochester |
| 484 | 3.3.4.3 | DSC Installation & Initial Data Collection |  | 20d | 2011-11-28 | 2011-12-23 | 482 | 291d | 0d |  | Rochester |
| 485 | 3.3.4.4 | On / At Platform Computing Device Implementation |  | 20d | 2011-11-28 | 2011-12-23 | 482 | 291d | 0d |  | Rochester |
| 486 | 3.3.5 | Software Implementation |  | 35d | 2011-12-12 | 2012-01-27 | 484SS+10d | 311d |  |  | Rochester |
| 487 | 3.3.4.5 | Application of Technology Prototype |  | 20d | 2011-12-26 | 2012-01-20 | 483, 484, 485 | 291d | 0d |  | Rochester |
| 488 | 3.3.4.6 | Develop Installation Kits |  | 25d | 2012-01-23 | 2012-02-24 | 487 | 291d |  |  | Rochester |

| ID | WBS | Task | Type | Duration | Start | Finish | Predecessors | Total slack | Free slack | Constraint | Location |
| --- | --- | --- | --- | --- | --- | --- | --- | --- | --- | --- | --- |
| 489 | 4 | **Data Analysis** |  | 160d | 2011-07-14 | 2012-02-20 |  | 295d |  |  | Rochester |
| 490 | 4.1 | **Continuous analysis of incoming parametric data** |  | 160d | 2011-07-14 | 2012-02-20 |  | 295d |  |  | Rochester |
| 491 | 4.1.1 | Analyze CONUS Data |  | 150d | 2011-07-14 | 2012-02-06 |  | 295d | 0d |  | Rochester |
| 492 | 4.1.2 | Adapt & Customize On-platform software |  | 150d | 2011-07-28 | 2012-02-20 | 491SS+10d | 295d |  |  | Rochester |
| 493 | 5 | **Develop Depot Reset Application Strategy** |  | 255d? | 2011-07-14 | 2012-06-29 |  | 0d |  |  | Rochester |
| 494 | 5.1 | **Work with TYAD, LEAD, SIAD to plan/demonstrate depot reset strategy** |  | 255d? | 2011-07-14 | 2012-06-29 |  | 0d |  |  | Rochester |
| 495 | 28.1.1 | Work with TYAD, LEAD, SIAD to plan/demonstrate depot reset strategy | milestone | 0d? | 2011-07-14 | 2011-07-14 |  | 0d |  | must start on 2011-07-14 |  |
| 496 | 5.1.1 | Power Supply |  | 131d | 2012-01-02 | 2012-06-29 |  | 200d |  | finish no earlier than 2012-06-29 | Rochester |
| 497 | 5.1.2 | TQG |  | 131d | 2012-01-02 | 2012-06-29 |  | 200d |  | finish no earlier than 2012-06-29 | Rochester |
| 498 | 5.1.3 | ECU |  | 131d | 2012-01-02 | 2012-06-29 |  | 200d |  | finish no earlier than 2012-06-29 | Rochester |
| 499 | 6 | **Systems Engineering** |  | 235d | 2011-08-23 | 2012-07-11 |  | 192d |  |  | Rochester |
| 500 | 6.1 | IPT Support (as needed) |  | 230d | 2011-08-30 | 2012-07-11 |  | 192d |  | start no earlier than 2011-08-30 | Rochester |
| 501 | 6.2 | **Process Documentation** |  | 222d | 2011-08-30 | 2012-06-29 |  | 200d |  |  | Rochester |
| 502 | 6.2.1 | Operational Concept Description Updates |  | 5d | 2011-08-30 | 2011-09-05 |  | 200d | 0d | start no earlier than 2011-08-30 | Rochester |
| 503 | 6.2.2 | System Engineering Plan Updates |  | 217d | 2011-09-06 | 2012-06-29 | 502 | 200d |  | finish no earlier than 2012-06-29 | Rochester |
| 504 | 6.2.3 | Implementation Plan Updates |  | 20d | 2012-06-04 | 2012-06-29 |  | 200d |  | finish no earlier than 2012-06-29 | Rochester |
| 505 | 6.3 | **Requirements Definition & Mangement** |  | 20d | 2011-09-06 | 2011-10-03 |  | 387d |  |  | Rochester |
| 506 | 6.3.1 | Document Use Cases |  | 5d | 2011-09-06 | 2011-09-12 | 502 | 387d | 0d |  | Rochester |
| 507 | 6.3.2 | Identify & Document On-platform requirements |  | 5d | 2011-09-13 | 2011-09-19 | 506 | 387d | 0d |  | Rochester |
| 508 | 6.3.3 | Develop Platform Interface Specifications |  | 10d | 2011-09-20 | 2011-10-03 | 507 | 387d | 0d |  | Rochester |
| 509 | 6.4 | **CBM+ System Verification & Validation (Internal Testing)** |  | 75d | 2011-08-23 | 2011-12-01 |  | 352d |  |  | Rochester |
| 510 | 6.4.1 | Develop Test Plans & Procedures |  | 15d | 2011-08-23 | 2011-09-12 |  | 352d | 0d | start no earlier than 2011-08-23 | Rochester |
| 511 | 6.4.2 | Verification & Validation of CBM+ System Design |  | 15d | 2011-09-13 | 2011-10-03 | 510 | 352d | 0d |  | Rochester |
| 512 | 6.4.3 | Unit Test & Evaluation |  | 15d | 2011-10-04 | 2011-10-21 | 511 | 352d | 0d |  | Rochester |
| 513 | 6.4.4 | Integration Testing |  | 15d | 2011-10-24 | 2011-11-10 | 512 | 352d | 0d |  | Rochester |
| 514 | 6.4.5 | System V&V |  | 15d | 2011-11-11 | 2011-12-01 | 513 | 352d |  |  | Rochester |

| ID | WBS | Task | Duration | Start | Finish | Predecessors | Total slack | Free slack | Constraint | Location | EOA/CBM IIIb |
| --- | --- | --- | --- | --- | --- | --- | --- | --- | --- | --- | --- |
| 515 | 7 | **Software Engineering** | 68d | 2011-07-14 | 2011-10-15 |  | 387d |  |  | Rochester |  |
| 516 | 7.1 | Operator & Maintainer GUI Updating | 15d | 2011-07-14 | 2011-08-03 |  | 440d |  |  | Rochester |  |
| 517 | 7.2 | Data Transmission Interfaces | 10d | 2011-10-04 | 2011-10-15 | 508 | 387d |  |  | Rochester |  |
| 518 | 7.4 | Data Integrity / Information Assurance | 20d | 2011-07-14 | 2011-08-10 |  | 435d |  |  | Rochester |  |
| 519 | 31 | **EOA After Action Report** | 227d | 2011-08-23 | 2012-06-29 |  | -67d | 0d |  | All |  |
| 520 | 31.1 | **Inputs to EOA** | 227d | 2011-08-23 | 2012-06-29 |  | -67d | 0d |  | Jackson, NJ |  |
| 521 | 31.1.1 | Data analysis reports | 45d | 2012-04-30 | 2012-06-29 |  | -67d | 0d | start no earlier than 2012-04-30 | Jackson, NJ |  |
| 522 | 31.1.2 | Additional inputs to the initial Fuel Consumption Study | 91d | 2012-02-24 | 2012-06-28 |  | -66d | 0d | start no earlier than 2012-02-24 | Jackson, NJ |  |
| 523 | 31.1.3 | Provide ABCD file sizes | 82d | 2011-08-23 | 2011-12-12 |  | 78d |  | start no earlier than 2011-08-23 | Jackson, NJ | IIIb |
| 524 | 31.2 | **Inputs to LOGSA** | 180d | 2011-10-24 | 2012-06-27 |  | -65d | 0d |  | Jackson, NJ |  |
| 525 | 31.2.1 | Updates to CECOM CBM+ data cataloging requirements | 109d | 2012-01-25 | 2012-06-22 |  | -62d | 0d | start no earlier than 2012-01-25 | Jackson, NJ |  |
| 526 | 31.2.2 | Update CIMS interface to Enterprise | 180d | 2011-10-24 | 2012-06-27 |  | -65d | 0d | start no earlier than 2011-10-24 | Jackson, NJ |  |
| 527 | 31.3 | **Inputs to Data Transmission** | 109d | 2012-02-01 | 2012-06-29 |  | -67d | 0d |  | Jackson, NJ |  |
| 528 | 31.3.1 | Network analysis inputs and bandwidth analysis | 109d | 2012-02-01 | 2012-06-29 |  | -67d | 0d | start no earlier than 2012-02-01 | Jackson, NJ |  |
| 529 | 31.4 | **Inputs to LIA** | 109d | 2012-02-01 | 2012-06-29 |  | -67d | 0d |  | Jackson, NJ |  |
| 530 | 31.4.1 | CIMS configuration issues at various nodes | 108d | 2012-02-01 | 2012-06-28 |  | -66d | 0d | start no earlier than 2012-02-01 | Jackson, NJ |  |
| 531 | 31.4.2 | CIMS functionality at various nodes | 98d | 2012-02-16 | 2012-06-29 |  | -67d | 0d | finish no earlier than 2012-06-29 | Jackson, NJ |  |
| 532 | 31.5 | **Inputs to Value Stream and CBA** | 1d | 2012-03-30 | 2012-03-30 |  | -1d | 0d |  | Jackson, NJ |  |
| 533 | 31.5.1 | Reliability Degrader Analysis inputs to VS and CBA | 1d | 2012-03-30 | 2012-03-30 |  | -1d | 0d | start no earlier than 2012-03-30 | Jackson, NJ |  |
| 534 | 31.5.2 | Data analysis from CECOM LRC database inputs to VS and CBA | 1d | 2012-03-30 | 2012-03-30 |  | -1d | 0d | start no earlier than 2012-03-30 | Jackson, NJ |  |
| 535 | 32 | Lesson Learned | 164d | 2011-11-15 | 2012-06-28 |  | -63d | 0d | start no earlier than 2011-11-15 | All |  |
| 536 | 33 | **A/B Kit Design for Manufacturing** | 240d | 2011-08-23 | 2012-07-18 |  | -77d | 0d |  | LEAD/TYAD | IIIb |
| 537 | 33.1 | A/B Kit Design for Manufacturing | 220d | 2011-08-23 | 2012-06-20 |  | -57d | 0d | start no earlier than 2011-08-23 | LEAD | IIIb |
| 538 | 33.2 | A/B Kit Design for Manufacturing | 240d | 2011-08-23 | 2012-07-18 |  | -77d | 0d | start no earlier than 2011-08-23 | TYAD | IIIb |

| ID | WBS | Task | Type | Duration | Start | Finish | Total slack | Free slack | Constraint | Deadline | Location | EOA/CBM IIIb |
| --- | --- | --- | --- | --- | --- | --- | --- | --- | --- | --- | --- | --- |
| 539 | 34 | **Reset Process Strategy** |  | 188d | 2011-08-23 | 2012-05-07 | 239d |  |  |  | LEAD/TYAD | IIIb |
| 540 | 34.1 | Reset Process Strategy |  | 154d | 2011-08-23 | 2012-03-21 | 273d |  | start no earlier than 2011-08-23 |  | LEAD | IIIb |
| 541 | 34.2 | Reset Process Strategy |  | 188d | 2011-08-23 | 2012-05-07 | 239d |  | start no earlier than 2011-08-23 |  | TYAD | IIIb |
| 542 | 35 | Information Assurance |  | 182d | 2011-08-30 | 2012-05-04 | 240d |  | start no earlier than 2011-08-30 |  | All |  |
| 543 | 36 | Log Demo Plan |  | 72d | 2012-01-02 | 2012-04-10 | 259d |  | start no earlier than 2012-01-02 |  | TBD | IIIb |
| 544 | 37 | Virtual LAR Analysis |  | 182d | 2011-08-23 | 2012-04-27 | 245d |  | start no earlier than 2011-08-23 |  | Ft Campbell | IIIb |
| 545 | 38 | Strategic Communication Plan |  | 182d | 2011-08-23 | 2012-04-27 | -24d | 0d | start no earlier than 2011-08-23 |  | APG | IIIb |
| 546 | 39 | Risk Mitigation Plan |  | 182d | 2011-08-23 | 2012-04-27 | 245d |  | start no earlier than 2011-08-23 |  | APG | EOA/IIIb |
| 547 | 40 | Technology Risk & Operational User Impact Analysis |  | 72d | 2012-01-02 | 2012-04-10 | 259d |  | start no earlier than 2012-01-02 |  | APG |  |
| 548 | 41 | **Programmatics** |  | 267d | 2011-08-02 | 2012-08-03 | 3d |  |  |  | APG |  |
| 549 | 41.1 | **Weekly Status Reports** |  | 238d | 2011-08-02 | 2012-06-26 | 4d |  |  |  | All |  |
| 550 | 41.1.1 | Weekly Status Reports | milestone | 0d | 2011-08-02 | 2011-08-02 | 4d |  | start no earlier than 2011-08-02 | 2011-08-05 | All |  |
| 551 | 41.1.2 | Weekly Status Reports | milestone | 0d | 2011-08-09 | 2011-08-09 | 4d |  | start no earlier than 2011-08-09 | 2011-08-12 | All |  |
| 552 | 41.1.3 | Weekly Status Reports | milestone | 0d | 2011-08-16 | 2011-08-16 | 4d |  | start no earlier than 2011-08-16 | 2011-08-19 | All |  |
| 553 | 41.1.4 | Weekly Status Reports | milestone | 0d | 2011-08-23 | 2011-08-23 | 4d |  | start no earlier than 2011-08-23 | 2011-08-26 | All |  |
| 554 | 41.1.5 | Weekly Status Reports | milestone | 0d | 2011-08-30 | 2011-08-30 | 4d |  | start no earlier than 2011-08-30 | 2011-09-02 | All |  |
| 555 | 41.1.6 | Weekly Status Reports | milestone | 0d | 2011-09-06 | 2011-09-06 | 4d |  | start no earlier than 2011-09-06 | 2011-09-09 | All |  |
| 556 | 41.1.7 | Weekly Status Reports | milestone | 0d | 2011-09-13 | 2011-09-13 | 4d |  | start no earlier than 2011-09-13 | 2011-09-16 | All |  |
| 557 | 41.1.8 | Weekly Status Reports | milestone | 0d | 2011-09-20 | 2011-09-20 | 4d |  | start no earlier than 2011-09-20 | 2011-09-23 | All |  |
| 558 | 41.1.9 | Weekly Status Reports | milestone | 0d | 2011-09-27 | 2011-09-27 | 4d |  | start no earlier than 2011-09-27 | 2011-09-30 | All |  |
| 559 | 41.1.10 | Weekly Status Reports | milestone | 0d | 2011-10-04 | 2011-10-04 | 4d |  | start no earlier than 2011-10-04 | 2011-10-07 | All |  |
| 560 | 41.1.11 | Weekly Status Reports | milestone | 0d | 2011-10-11 | 2011-10-11 | 4d |  | start no earlier than 2011-10-11 | 2011-10-14 | All |  |
| 561 | 41.1.12 | Weekly Status Reports | milestone | 0d | 2011-10-18 | 2011-10-18 | 4d |  | start no earlier than 2011-10-18 | 2011-10-21 | All |  |
| 562 | 41.1.13 | Weekly Status Reports | milestone | 0d | 2011-10-25 | 2011-10-25 | 4d |  | start no earlier than 2011-10-25 | 2011-10-28 | All |  |
| 563 | 41.1.14 | Weekly Status Reports | milestone | 0d | 2011-11-01 | 2011-11-01 | 4d |  | start no earlier than 2011-11-01 | 2011-11-04 | All |  |
| 564 | 41.1.15 | Weekly Status Reports | milestone | 0d | 2011-11-08 | 2011-11-08 | 4d |  | start no earlier than 2011-11-08 | 2011-11-11 | All |  |
| 565 | 41.1.16 | Weekly Status Reports | milestone | 0d | 2011-11-15 | 2011-11-15 | 4d |  | start no earlier than 2011-11-15 | 2011-11-18 | All |  |
| 566 | 41.1.17 | Weekly Status Reports | milestone | 0d | 2011-11-22 | 2011-11-22 | 4d |  | start no earlier than 2011-11-22 | 2011-11-25 | All |  |
| 567 | 41.1.18 | Weekly Status Reports | milestone | 0d | 2011-11-29 | 2011-11-29 | 4d |  | start no earlier than 2011-11-29 | 2011-12-02 | All |  |
| 568 | 41.1.19 | Weekly Status Reports | milestone | 0d | 2011-12-06 | 2011-12-06 | 4d |  | start no earlier than 2011-12-06 | 2011-12-09 | All |  |
| 569 | 41.1.20 | Weekly Status Reports | milestone | 0d | 2011-12-13 | 2011-12-13 | 4d |  | start no earlier than 2011-12-13 | 2011-12-16 | All |  |
| 570 | 41.1.21 | Weekly Status Reports | milestone | 0d | 2011-12-20 | 2011-12-20 | 4d |  | start no earlier than 2011-12-20 | 2011-12-23 | All |  |
| 571 | 41.1.22 | Weekly Status Reports | milestone | 0d | 2011-12-27 | 2011-12-27 | 4d |  | start no earlier than 2011-12-27 | 2011-12-30 | All |  |
| 572 | 41.1.23 | Weekly Status Reports | milestone | 0d | 2012-01-03 | 2012-01-03 | 4d |  | start no earlier than 2012-01-03 | 2012-01-06 | All |  |
| 573 | 41.1.24 | Weekly Status Reports | milestone | 0d | 2012-01-10 | 2012-01-10 | 4d |  | start no earlier than 2012-01-10 | 2012-01-13 | All |  |
| 574 | 41.1.25 | Weekly Status Reports | milestone | 0d | 2012-01-17 | 2012-01-17 | 4d |  | start no earlier than 2012-01-17 | 2012-01-20 | All |  |
| 575 | 41.1.26 | Weekly Status Reports | milestone | 0d | 2012-01-24 | 2012-01-24 | 4d |  | start no earlier than 2012-01-24 | 2012-01-27 | All |  |
| 576 | 41.1.27 | Weekly Status Reports | milestone | 0d | 2012-01-31 | 2012-01-31 | 4d |  | start no earlier than 2012-01-31 | 2012-02-03 | All |  |
| 577 | 41.1.28 | Weekly Status Reports | milestone | 0d | 2012-02-07 | 2012-02-07 | 4d |  | start no earlier than 2012-02-07 | 2012-02-10 | All |  |
| 578 | 41.1.29 | Weekly Status Reports | milestone | 0d | 2012-02-14 | 2012-02-14 | 4d |  | start no earlier than 2012-02-14 | 2012-02-17 | All |  |
| 579 | 41.1.30 | Weekly Status Reports | milestone | 0d | 2012-02-21 | 2012-02-21 | 4d |  | start no earlier than 2012-02-21 | 2012-02-24 | All |  |
| 580 | 41.1.31 | Weekly Status Reports | milestone | 0d | 2012-02-28 | 2012-02-28 | 4d |  | start no earlier than 2012-02-28 | 2012-03-02 | All |  |
| 581 | 41.1.32 | Weekly Status Reports | milestone | 0d | 2012-03-06 | 2012-03-06 | 4d |  | start no earlier than 2012-03-06 | 2012-03-09 | All |  |
| 582 | 41.1.33 | Weekly Status Reports | milestone | 0d | 2012-03-13 | 2012-03-13 | 4d |  | start no earlier than 2012-03-13 | 2012-03-16 | All |  |
| 583 | 41.1.34 | Weekly Status Reports | milestone | 0d | 2012-03-20 | 2012-03-20 | 4d |  | start no earlier than 2012-03-20 | 2012-03-23 | All |  |
| 584 | 41.1.35 | Weekly Status Reports | milestone | 0d | 2012-03-27 | 2012-03-27 | 4d |  | start no earlier than 2012-03-27 | 2012-03-30 | All |  |
| 585 | 41.1.36 | Weekly Status Reports | milestone | 0d | 2012-04-03 | 2012-04-03 | 4d |  | start no earlier than 2012-04-03 | 2012-04-06 | All |  |
| 586 | 41.1.37 | Weekly Status Reports | milestone | 0d | 2012-04-10 | 2012-04-10 | 4d |  | start no earlier than 2012-04-10 | 2012-04-13 | All |  |
| 587 | 41.1.38 | Weekly Status Reports | milestone | 0d | 2012-04-17 | 2012-04-17 | 4d |  | start no earlier than 2012-04-17 | 2012-04-20 | All |  |
| 588 | 41.1.39 | Weekly Status Reports | milestone | 0d | 2012-04-24 | 2012-04-24 | 4d |  | start no earlier than 2012-04-24 | 2012-04-27 | All |  |
| 589 | 41.1.40 | Weekly Status Reports | milestone | 0d | 2012-05-01 | 2012-05-01 | 4d |  | start no earlier than 2012-05-01 | 2012-05-04 | All |  |
| 590 | 41.1.41 | Weekly Status Reports | milestone | 0d | 2012-05-08 | 2012-05-08 | 4d |  | start no earlier than 2012-05-08 | 2012-05-11 | All |  |
| 591 | 41.1.42 | Weekly Status Reports | milestone | 0d | 2012-05-15 | 2012-05-15 | 4d |  | start no earlier than 2012-05-15 | 2012-05-18 | All |  |
| 592 | 41.1.43 | Weekly Status Reports | milestone | 0d | 2012-05-22 | 2012-05-22 | 4d |  | start no earlier than 2012-05-22 | 2012-05-25 | All |  |
| 593 | 41.1.44 | Weekly Status Reports | milestone | 0d | 2012-05-29 | 2012-05-29 | 4d |  | start no earlier than 2012-05-29 | 2012-06-01 | All |  |
| 594 | 41.1.45 | Weekly Status Reports | milestone | 0d | 2012-06-05 | 2012-06-05 | 4d |  | start no earlier than 2012-06-05 | 2012-06-08 | All |  |
| 595 | 41.1.46 | Weekly Status Reports | milestone | 0d | 2012-06-12 | 2012-06-12 | 4d |  | start no earlier than 2012-06-12 | 2012-06-15 | All |  |
| 596 | 41.1.47 | Weekly Status Reports | milestone | 0d | 2012-06-19 | 2012-06-19 | 4d |  | start no earlier than 2012-06-19 | 2012-06-22 | All |  |
| 597 | 41.1.48 | Weekly Status Reports | milestone | 0d | 2012-06-26 | 2012-06-26 | 4d |  | start no earlier than 2012-06-26 | 2012-06-29 | All |  |

| ID | WBS | Task | Type | Duration | Start | Finish | Total slack | Constraint | Deadline | Location |
| --- | --- | --- | --- | --- | --- | --- | --- | --- | --- | --- |
| 598 | 41.2 | **Monthly Status Reports** |  | 263d | 2011-08-05 | 2012-08-03 | 1d |  |  | All |
| 599 | 41.2.1 | Monthly Status Reports -08/2011 | milestone | 0d | 2011-08-05 | 2011-08-05 | 1d | start no earlier than 2011-08-05 | 2011-08-05 | All |
| 600 | 41.2.2 | Monthly Status Reports -09/2011 | milestone | 0d | 2011-09-02 | 2011-09-02 | 1d | start no earlier than 2011-09-02 | 2011-09-02 | All |
| 601 | 41.2.3 | Monthly Status Reports -10/2011 | milestone | 0d | 2011-10-07 | 2011-10-07 | 1d | start no earlier than 2011-10-07 | 2011-10-07 | All |
| 602 | 41.2.4 | Monthly Status Reports -11/2011 | milestone | 0d | 2011-11-04 | 2011-11-04 | 1d | start no earlier than 2011-11-04 | 2011-11-04 | All |
| 603 | 41.2.5 | Monthly Status Reports -12/2011 | milestone | 0d | 2011-12-02 | 2011-12-02 | 1d | start no earlier than 2011-12-02 | 2011-12-02 | All |
| 604 | 41.2.6 | Monthly Status Reports -01/2012 | milestone | 0d | 2012-01-06 | 2012-01-06 | 1d | start no earlier than 2012-01-06 | 2012-01-06 | All |
| 605 | 41.2.7 | Monthly Status Reports -02/2012 | milestone | 0d | 2012-02-03 | 2012-02-03 | 1d | start no earlier than 2012-02-03 | 2012-02-03 | All |
| 606 | 41.2.8 | Monthly Status Reports -03/2012 | milestone | 0d | 2012-03-02 | 2012-03-02 | 1d | start no earlier than 2012-03-02 | 2012-03-02 | All |
| 607 | 41.2.9 | Monthly Status Reports -04/2012 | milestone | 0d | 2012-04-06 | 2012-04-06 | 1d | start no earlier than 2012-04-06 | 2012-04-06 | All |
| 608 | 41.2.10 | Monthly Status Reports -05/2012 | milestone | 0d | 2012-05-04 | 2012-05-04 | 1d | start no earlier than 2012-05-04 | 2012-05-04 | All |
| 609 | 41.2.11 | Monthly Status Reports -06/2012 | milestone | 0d | 2012-06-01 | 2012-06-01 | 1d | start no earlier than 2012-06-01 | 2012-06-01 | All |
| 610 | 41.2.12 | Monthly Status Reports -07/2012 | milestone | 0d | 2012-07-06 | 2012-07-06 | 1d | start no earlier than 2012-07-06 | 2012-07-06 | All |
| 611 | 41.2.13 | Monthly Status Reports -08/2012 | milestone | 0d | 2012-08-03 | 2012-08-03 | 1d | start no earlier than 2012-08-03 | 2012-08-03 | All |
| 612 | 41.3 | **Monthly Financial Reports** |  | 264d | 2011-08-05 | 2012-08-03 | 0d |  |  | All |
| 613 | 41.3.1 | Monthly Financial Reports -08/2011 |  | 1d | 2011-08-05 | 2011-08-05 | 0d | start no earlier than 2011-08-05 | 2011-08-05 | All |
| 614 | 41.3.2 | Monthly Financial Reports -09/2011 |  | 1d | 2011-09-02 | 2011-09-02 | 0d | start no earlier than 2011-09-02 | 2011-09-02 | All |
| 615 | 41.3.3 | Monthly Financial Reports -10/2011 |  | 1d | 2011-10-07 | 2011-10-07 | 0d | start no earlier than 2011-10-07 | 2011-10-07 | All |
| 616 | 41.3.4 | Monthly Financial Reports -11/2011 |  | 1d | 2011-11-04 | 2011-11-04 | 0d | start no earlier than 2011-11-04 | 2011-11-04 | All |
| 617 | 41.3.5 | Monthly Financial Reports -12/2011 |  | 1d | 2011-12-02 | 2011-12-02 | 0d | start no earlier than 2011-12-02 | 2011-12-02 | All |
| 618 | 41.3.6 | Monthly Financial Reports -01/2012 |  | 1d | 2012-01-06 | 2012-01-06 | 0d | start no earlier than 2012-01-06 | 2012-01-06 | All |
| 619 | 41.3.7 | Monthly Financial Reports -02/2012 |  | 1d | 2012-02-03 | 2012-02-03 | 0d | start no earlier than 2012-02-03 | 2012-02-03 | All |
| 620 | 41.3.8 | Monthly Financial Reports -03/2012 |  | 1d | 2012-03-02 | 2012-03-02 | 0d | start no earlier than 2012-03-02 | 2012-03-02 | All |
| 621 | 41.3.9 | Monthly Financial Reports -04/2012 |  | 1d | 2012-04-06 | 2012-04-06 | 0d | start no earlier than 2012-04-06 | 2012-04-06 | All |
| 622 | 41.3.10 | Monthly Financial Reports -05/2012 |  | 1d | 2012-05-04 | 2012-05-04 | 0d | start no earlier than 2012-05-04 | 2012-05-04 | All |
| 623 | 41.3.11 | Monthly Financial Reports -06/2012 |  | 1d | 2012-06-01 | 2012-06-01 | 0d | start no earlier than 2012-06-01 | 2012-06-01 | All |
| 624 | 41.3.12 | Monthly Financial Reports -07/2012 |  | 1d | 2012-07-06 | 2012-07-06 | 0d | start no earlier than 2012-07-06 | 2012-07-06 | All |
| 625 | 41.3.13 | Monthly Financial Reports -08/2012 |  | 1d | 2012-08-03 | 2012-08-03 | 0d | start no earlier than 2012-08-03 | 2012-08-03 | All |

| ID | WBS | Task | Type | Duration | Start | Finish | Total slack | Constraint | Deadline | Location |
| --- | --- | --- | --- | --- | --- | --- | --- | --- | --- | --- |
| 626 | 41.4 | **GFE Report Updates** |  | 264d | 2011-08-05 | 2012-08-03 | 0d |  |  | All |
| 627 | 41.4.1 | Monthly GFE Report |  | 1d | 2011-08-05 | 2011-08-05 | 0d | start no earlier than 2011-08-05 | 2011-08-05 | All |
| 628 | 41.4.2 | Monthly GFE Report |  | 1d | 2011-09-02 | 2011-09-02 | 0d | start no earlier than 2011-09-02 | 2011-09-02 | All |
| 629 | 41.4.3 | Monthly GFE Report |  | 1d | 2011-10-07 | 2011-10-07 | 0d | start no earlier than 2011-10-07 | 2011-10-07 | All |
| 630 | 41.4.4 | Monthly GFE Report |  | 1d | 2011-11-04 | 2011-11-04 | 0d | start no earlier than 2011-11-04 | 2011-11-04 | All |
| 631 | 41.4.5 | Monthly GFE Report |  | 1d | 2011-12-02 | 2011-12-02 | 0d | start no earlier than 2011-12-02 | 2011-12-02 | All |
| 632 | 41.4.6 | Monthly GFE Report |  | 1d | 2012-01-06 | 2012-01-06 | 0d | start no earlier than 2012-01-06 | 2012-01-06 | All |
| 633 | 41.4.7 | Monthly GFE Report |  | 1d | 2012-02-03 | 2012-02-03 | 0d | start no earlier than 2012-02-03 | 2012-02-03 | All |
| 634 | 41.4.8 | Monthly GFE Report |  | 1d | 2012-03-02 | 2012-03-02 | 0d | start no earlier than 2012-03-02 | 2012-03-02 | All |
| 635 | 41.4.9 | Monthly GFE Report |  | 1d | 2012-04-06 | 2012-04-06 | 0d | start no earlier than 2012-04-06 | 2012-04-06 | All |
| 636 | 41.4.10 | Monthly GFE Report |  | 1d | 2012-05-04 | 2012-05-04 | 0d | start no earlier than 2012-05-04 | 2012-05-04 | All |
| 637 | 41.4.11 | Monthly GFE Report |  | 1d | 2012-06-01 | 2012-06-01 | 0d | start no earlier than 2012-06-01 | 2012-06-01 | All |
| 638 | 41.4.12 | Monthly GFE Report |  | 1d | 2012-07-06 | 2012-07-06 | 0d | start no earlier than 2012-07-06 | 2012-07-06 | All |
| 639 | 41.4.13 | Monthly GFE Report |  | 1d | 2012-08-03 | 2012-08-03 | 0d | start no earlier than 2012-08-03 | 2012-08-03 | All |
| 640 | 41.5 | **IPTs** |  | 218d | 2011-08-16 | 2012-06-12 | 214d |  |  | All |
| 641 | 41.5.1 | Data Management IPT | milestone | 0d | 2011-08-16 | 2011-08-16 | 432d | start no earlier than 2011-08-16 |  | All |
| 642 | 41.5.2 | Systems Engineering IPT | milestone | 0d | 2011-08-16 | 2011-08-16 | 432d | start no earlier than 2011-08-16 |  | All |
| 643 | 41.5.3 | Value Stream IPT | milestone | 0d | 2011-08-16 | 2011-08-16 | 432d | start no earlier than 2011-08-16 |  | All |
| 644 | 41.5.4 | Data AnalysisIPT | milestone | 0d | 2011-08-16 | 2011-08-16 | 432d | start no earlier than 2011-08-16 |  | All |
| 645 | 41.5.5 | Data Management IPT | milestone | 0d | 2011-09-20 | 2011-09-20 | 407d | start no earlier than 2011-09-20 |  | All |
| 646 | 41.5.6 | Systems Engineering IPT | milestone | 0d | 2011-09-20 | 2011-09-20 | 407d | start no earlier than 2011-09-20 |  | All |
| 647 | 41.5.7 | Value Stream IPT | milestone | 0d | 2011-09-20 | 2011-09-20 | 407d | start no earlier than 2011-09-20 |  | All |
| 648 | 41.5.8 | Data AnalysisIPT | milestone | 0d | 2011-09-20 | 2011-09-20 | 407d | start no earlier than 2011-09-20 |  | All |
| 649 | 41.5.9 | Data Management IPT | milestone | 0d | 2011-10-18 | 2011-10-18 | 386d | start no earlier than 2011-10-18 |  | All |
| 650 | 41.5.10 | Systems Engineering IPT | milestone | 0d | 2011-10-18 | 2011-10-18 | 386d | start no earlier than 2011-10-18 |  | All |
| 651 | 41.5.11 | Value Stream IPT | milestone | 0d | 2011-10-18 | 2011-10-18 | 386d | start no earlier than 2011-10-18 |  | All |
| 652 | 41.5.12 | Data AnalysisIPT | milestone | 0d | 2011-10-18 | 2011-10-18 | 386d | start no earlier than 2011-10-18 |  | All |
| 653 | 41.5.13 | Data Management IPT | milestone | 0d | 2011-11-15 | 2011-11-15 | 365d | start no earlier than 2011-11-15 |  | All |
| 654 | 41.5.14 | Systems Engineering IPT | milestone | 0d | 2011-11-15 | 2011-11-15 | 365d | start no earlier than 2011-11-15 |  | All |
| 655 | 41.5.15 | Value Stream IPT | milestone | 0d | 2011-11-15 | 2011-11-15 | 365d | start no earlier than 2011-11-15 |  | All |
| 656 | 41.5.16 | Data AnalysisIPT | milestone | 0d | 2011-11-15 | 2011-11-15 | 365d | start no earlier than 2011-11-15 |  | All |
| 657 | 41.5.17 | Data Management IPT | milestone | 0d | 2011-12-13 | 2011-12-13 | 345d | start no earlier than 2011-12-13 |  | All |
| 658 | 41.5.18 | Systems Engineering IPT | milestone | 0d | 2011-12-13 | 2011-12-13 | 345d | start no earlier than 2011-12-13 |  | All |
| 659 | 41.5.19 | Value Stream IPT | milestone | 0d | 2011-12-13 | 2011-12-13 | 345d | start no earlier than 2011-12-13 |  | All |
| 660 | 41.5.20 | Data AnalysisIPT | milestone | 0d | 2011-12-13 | 2011-12-13 | 345d | start no earlier than 2011-12-13 |  | All |
| 661 | 41.5.21 | Data Management IPT | milestone | 0d | 2012-01-17 | 2012-01-17 | 320d | start no earlier than 2012-01-17 |  | All |
| 662 | 41.5.22 | Systems Engineering IPT | milestone | 0d | 2012-01-17 | 2012-01-17 | 320d | start no earlier than 2012-01-17 |  | All |
| 663 | 41.5.23 | Value Stream IPT | milestone | 0d | 2012-01-17 | 2012-01-17 | 320d | start no earlier than 2012-01-17 |  | All |
| 664 | 41.5.24 | Data AnalysisIPT | milestone | 0d | 2012-01-17 | 2012-01-17 | 320d | start no earlier than 2012-01-17 |  | All |
| 665 | 41.5.25 | Data Management IPT | milestone | 0d | 2012-02-14 | 2012-02-14 | 300d | start no earlier than 2012-02-14 |  | All |
| 666 | 41.5.26 | Systems Engineering IPT | milestone | 0d | 2012-02-14 | 2012-02-14 | 300d | start no earlier than 2012-02-14 |  | All |
| 667 | 41.5.27 | Value Stream IPT | milestone | 0d | 2012-02-14 | 2012-02-14 | 300d | start no earlier than 2012-02-14 |  | All |
| 668 | 41.5.28 | Data AnalysisIPT | milestone | 0d | 2012-02-14 | 2012-02-14 | 300d | start no earlier than 2012-02-14 |  | All |
| 669 | 41.5.29 | Systems Engineering IPT | milestone | 0d | 2012-03-13 | 2012-03-13 | 280d | start no earlier than 2012-03-13 |  | All |
| 670 | 41.5.30 | Value Stream IPT | milestone | 0d | 2012-03-13 | 2012-03-13 | 280d | start no earlier than 2012-03-13 |  | All |
| 671 | 41.5.31 | Data AnalysisIPT | milestone | 0d | 2012-03-13 | 2012-03-13 | 280d | start no earlier than 2012-03-13 |  | All |
| 672 | 41.5.32 | Data Management IPT | milestone | 0d | 2012-04-17 | 2012-04-17 | 255d | start no earlier than 2012-04-17 |  | All |
| 673 | 41.5.33 | Systems Engineering IPT | milestone | 0d | 2012-04-17 | 2012-04-17 | 255d | start no earlier than 2012-04-17 |  | All |
| 674 | 41.5.34 | Value Stream IPT | milestone | 0d | 2012-04-17 | 2012-04-17 | 255d | start no earlier than 2012-04-17 |  | All |
| 675 | 41.5.35 | Data AnalysisIPT | milestone | 0d | 2012-04-17 | 2012-04-17 | 255d | start no earlier than 2012-04-17 |  | All |
| 676 | 41.5.36 | Data Management IPT | milestone | 0d | 2012-05-15 | 2012-05-15 | 234d | start no earlier than 2012-05-15 |  | All |
| 677 | 41.5.37 | Systems Engineering IPT | milestone | 0d | 2012-05-15 | 2012-05-15 | 234d | start no earlier than 2012-05-15 |  | All |
| 678 | 41.5.38 | Value Stream IPT | milestone | 0d | 2012-05-15 | 2012-05-15 | 234d | start no earlier than 2012-05-15 |  | All |
| 679 | 41.5.39 | Data AnalysisIPT | milestone | 0d | 2012-05-15 | 2012-05-15 | 234d | start no earlier than 2012-05-15 |  | All |
| 680 | 41.5.40 | Data Management IPT | milestone | 0d | 2012-06-12 | 2012-06-12 | 214d | start no earlier than 2012-06-12 |  | All |
| 681 | 41.5.41 | Systems Engineering IPT | milestone | 0d | 2012-06-12 | 2012-06-12 | 214d | start no earlier than 2012-06-12 |  | All |
| 682 | 41.5.42 | Value Stream IPT | milestone | 0d | 2012-06-12 | 2012-06-12 | 214d | start no earlier than 2012-06-12 |  | All |
| 683 | 41.5.43 | Data AnalysisIPT | milestone | 0d | 2012-06-12 | 2012-06-12 | 214d | start no earlier than 2012-06-12 |  | All |

| ID | WBS | Task | Type | Duration | Start | Finish | Predecessors | Total slack | Free slack | Constraint | Deadline | Location |
| --- | --- | --- | --- | --- | --- | --- | --- | --- | --- | --- | --- | --- |
| 684 | 41.6 | **Deliverables** |  | 240d | 2011-08-23 | 2012-07-18 |  | -12d | 0d |  |  | APG |
| 685 | 41.6.1 | **A/B Kit Design for Manufacturing** |  | 0d | 2012-07-18 | 2012-07-18 |  | -77d | 0d |  |  | LEAD/TYAD |
| 686 | 41.6.1.1 | A/B Kit Design for Manufacturing D-90 | milestone | 0d | 2012-07-18 | 2012-07-18 | 537, 538 | -77d | 0d | start no earlier than 2012-03-30 | 2012-04-03 | Rochester |
| 687 | 41.6.1.2 | A/B Kit Design for Manufacturing D-60 | milestone | 0d | 2012-07-18 | 2012-07-18 | 686 | -54d | 0d | start no earlier than 2012-04-30 | 2012-05-03 | Rochester |
| 688 | 41.6.1.3 | A/B Kit Design for Manufacturing D-30 | milestone | 0d | 2012-07-18 | 2012-07-18 | 687 | -33d | 0d | start no earlier than 2012-05-30 | 2012-06-02 | Rochester |
| 689 | 41.6.1.4 | A/B Kit Design for Manufacturing Final | milestone | 0d | 2012-07-18 | 2012-07-18 | 688 | -12d | 0d | start no earlier than 2012-06-29 | 2012-07-02 | Rochester |
| 690 | 41.6.2 | **TDP's (TRL 7 within 2 iterations)** |  | 66d | 2012-03-30 | 2012-06-29 |  | 2d |  |  |  | All |
| 691 | 41.6.2.1 | TDP's (TRL 7 within 2 iterations) D-90 | milestone | 0d | 2012-03-30 | 2012-03-30 |  | 3d |  | start no earlier than 2012-03-30 | 2012-04-03 | All |
| 692 | 41.6.2.2 | TDP's (TRL 7 within 2 iterations) D-60 | milestone | 0d | 2012-04-30 | 2012-04-30 | 691 | 4d |  | start no earlier than 2012-04-30 | 2012-05-03 | All |
| 693 | 41.6.2.3 | TDP's (TRL 7 within 2 iterations) D-30 | milestone | 0d | 2012-05-30 | 2012-05-30 | 692 | 3d |  | start no earlier than 2012-05-30 | 2012-06-02 | All |
| 694 | 41.6.2.4 | TDP's (TRL 7 within 2 iterations) Final | milestone | 0d | 2012-06-29 | 2012-06-29 | 693 | 2d |  | start no earlier than 2012-06-29 | 2012-07-02 | All |
| 695 | 41.6.3 | **System Engineering Plan** |  | 66d | 2012-03-30 | 2012-06-29 |  | -3d | 0d |  |  | Rochester |
| 696 | 41.6.3.1 | System Engineering Plan D-90 | milestone | 0d | 2012-03-30 | 2012-03-30 |  | -2d | 0d | start no earlier than 2012-03-30 | 2012-03-27 | Rochester |
| 697 | 41.6.3.2 | System Engineering Plan D-60 | milestone | 0d | 2012-04-30 | 2012-04-30 | 696 | -1d | 0d | start no earlier than 2012-04-30 | 2012-04-26 | Rochester |
| 698 | 41.6.3.3 | System Engineering Plan D-30 | milestone | 0d | 2012-05-30 | 2012-05-30 | 697 | -2d | 0d | start no earlier than 2012-05-30 | 2012-05-25 | Rochester |
| 699 | 41.6.3.4 | System Engineering Plan Final | milestone | 0d | 2012-06-29 | 2012-06-29 | 698 | -3d | 0d | start no earlier than 2012-06-29 | 2012-06-25 | Rochester |
| 700 | 41.6.4 | **Lesson Learned** |  | 0d | 2012-06-28 | 2012-06-29 |  | -63d | 0d |  |  | All |
| 701 | 41.6.4.1 | Lesson Learned D-90 | milestone | 0d | 2012-06-28 | 2012-06-28 | 535 | -63d | 0d | start no earlier than 2012-03-30 | 2012-04-03 | All |
| 702 | 41.6.4.2 | Lesson Learned D-60 | milestone | 0d | 2012-06-28 | 2012-06-28 | 701 | -40d | 0d | start no earlier than 2012-04-30 | 2012-05-03 | All |
| 703 | 41.6.4.3 | Lesson Learned D-30 | milestone | 0d | 2012-06-28 | 2012-06-28 | 702 | -19d | 0d | start no earlier than 2012-05-30 | 2012-06-02 | All |
| 704 | 41.6.4.4 | Lesson Learned Final | milestone | 0d | 2012-06-29 | 2012-06-29 | 703 | 2d |  | start no earlier than 2012-06-29 | 2012-07-02 | All |
| 705 | 41.6.5 | **After Action Review** |  | 0d | 2012-06-29 | 2012-06-29 |  | -67d | 0d |  |  | All |
| 706 | 41.6.5.1 | After Action Review D-90 | milestone | 0d | 2012-06-29 | 2012-06-29 | 519 | -67d | 0d | start no earlier than 2012-03-30 | 2012-03-29 | All |
| 707 | 41.6.5.2 | After Action Review D-60 | milestone | 0d | 2012-06-29 | 2012-06-29 | 706 | -45d | 0d | start no earlier than 2012-04-30 | 2012-04-28 | All |
| 708 | 41.6.5.3 | After Action Review D-30 | milestone | 0d | 2012-06-29 | 2012-06-29 | 707 | -24d | 0d | start no earlier than 2012-05-30 | 2012-05-28 | All |
| 709 | 41.6.5.4 | After Action Review Final | milestone | 0d | 2012-06-29 | 2012-06-29 | 708 | -2d | 0d | start no earlier than 2012-06-29 | 2012-06-27 | All |

| ID | WBS | Task | Type | Duration | Start | Finish | Predecessors | Total slack | Free slack | Constraint | Deadline | Location |
| --- | --- | --- | --- | --- | --- | --- | --- | --- | --- | --- | --- | --- |
| 710 | 41.6.6 | **Process Description Document** |  | 68d | 2012-03-30 | 2012-07-02 |  | -3d | 0d |  |  | All |
| 711 | 41.6.6.1 | Process Description Document D-90 | milestone | 0d | 2012-03-30 | 2012-03-30 |  | 0d |  | start no earlier than 2012-03-30 | 2012-03-29 | All |
| 712 | 41.6.6.2 | Process Description Document D-60 | milestone | 0d | 2012-04-30 | 2012-04-30 | 711 | 0d |  | start no earlier than 2012-04-30 | 2012-04-28 | All |
| 713 | 41.6.6.3 | Process Description Document D-30 | milestone | 0d | 2012-05-30 | 2012-05-30 | 712 | -1d | 0d | start no earlier than 2012-05-30 | 2012-05-28 | All |
| 714 | 41.6.6.4 | Process Description Document Final |  | 2d | 2012-06-29 | 2012-07-02 | 713 | -3d | 0d | start no earlier than 2012-06-29 | 2012-06-27 | All |
| 715 | 41.6.7 | **Risk Mitigation Plan** |  | 9d | 2011-08-23 | 2011-09-05 |  | 202d |  |  |  | APG |
| 716 | 41.6.7.1 | Risk Mitigation Plan Draft | milestone | 0d | 2011-08-23 | 2011-08-23 |  | 202d | 9d | start no earlier than 2011-08-23 | 2012-05-25 | APG |
| 717 | 41.6.7.2 | Risk Mitigation Plan Final | milestone | 0d | 2011-09-05 | 2011-09-05 | 716 | 214d |  | start no earlier than 2011-09-05 | 2012-06-25 | APG |
| 718 | 41.6.8 | **Strategic Communication Plan** |  | 44d | 2012-04-27 | 2012-06-29 |  | -24d | 0d |  |  | APG |
| 719 | 41.6.8.1 | Strategic Communication Plan D-90 | milestone | 0d | 2012-04-27 | 2012-04-27 | 545 | -24d | 0d | start no earlier than 2012-03-30 | 2012-03-27 | APG |
| 720 | 41.6.8.2 | Strategic Communication Plan D-60 | milestone | 0d | 2012-04-30 | 2012-04-30 | 719 | -1d | 0d | start no earlier than 2012-04-30 | 2012-04-26 | APG |
| 721 | 41.6.8.3 | Strategic Communication Plan D-30 | milestone | 0d | 2012-05-30 | 2012-05-30 | 720 | -2d | 0d | start no earlier than 2012-05-30 | 2012-05-25 | APG |
| 722 | 41.6.8.4 | Strategic Communication Plan Final | milestone | 0d | 2012-06-29 | 2012-06-29 | 721 | -3d | 0d | start no earlier than 2012-06-29 | 2012-06-25 | APG |
